# 07.09.26

Schedule from MS Project, 2023-03-10 to 2027-03-10, A marks actual dates.
DEXP

## Calendars

- Стандартный: Mon-Fri 09:00-13:00, 14:00-18:00; Sat-Sun off. Exceptions (off unless hours are given): 2026-09-05 09:00-13:00, 14:00-18:00, 2026-09-12 to 2026-09-13 09:00-13:00, 14:00-18:00, 2026-09-19 to 2026-09-20 09:00-13:00, 14:00-18:00, 2026-09-26 to 2026-09-27 09:00-13:00, 14:00-18:00, 2026-10-04 09:00-13:00, 14:00-18:00.

## Resources

| Resource |
| --- |
| Макаревич А |
| Дедов В |
| Бобренок В |
| Тимофеев В |
| Зорькин В |
| Бундин В |
| Труфанов А |
| Некрасов А |
| Шуранов Ю |
| Домоводов К |
| Амрулин Р |
| Карабанов |
| Олег |
| оплот |
| Коленкоров |
| Мультан |
| Малинина М |
| Лобанов И |
| Дворник |
| Подрядчик |
| Олег лукас |
| Черепанов И |
| оперторы2 |
| оператор2 |
| Тракресурс |
| Сапелин С |
| Технолог |
| Фрезер ЧПУ |
| Пинчук А |
| КИнжекул |
| ТО_2 |
| ТО_1 |
| ТО_М |
| ТО |
| Кладовщики |
| Некрасов |
| Логист |

## Schedule

| ID | WBS | Task | Type | Duration | Start | Finish | Predecessors | Complete | Remaining | Total slack | Free slack | Constraint | Resources | Work | Actual work |
| --- | --- | --- | --- | --- | --- | --- | --- | --- | --- | --- | --- | --- | --- | --- | --- |
| 1 | 1 | **1 цех** |  | 431.5d? | 2023-03-10 09:00 A | 2024-11-02 13:00 |  | 98% | 7.56d? |  |  |  |  | 22799.3h | 22558.1h |
| 2 | 1.1 | **Входная дверь 1 цех** |  | 0d | 2026-10-10 09:00 A | 2026-10-10 10:00 |  |  | 0d | 0d |  |  |  | 2h |  |
| 3 | 1.1.1 | Посмотреть входные двери в 1 цех, тяжело закрываются, устранить | manual | 1h | 2026-10-10 09:00 A | 2026-10-10 10:00 |  |  | 1h |  |  | start no earlier than 2026-10-10 09:00 | Бундин В | 1h |  |
| 4 | 1.1.2 | Замена петли или всей двери (сильный изность петли) | manual | 1h | 2026-10-10 09:00 | 2026-10-10 10:00 |  |  |  |  |  | start no earlier than 2026-10-10 09:00 | Бундин В | 1h |  |
| 5 | 1.2 | Увезти бетономешалку и лестницу с пандуса (бетономешалку прикрутить к паллету на перфоленту и сразу поставить на полку |  | 1d? | 2026-10-12 09:00 A | 2026-10-12 18:00 A |  | 100% |  |  |  | start no earlier than 2026-10-12 08:00 |  |  |  |
| 6 | 1.3 | Установить вентилятор на пробник (на столе в слесарке?) |  | 1h | 2026-10-09 09:00 A | 2026-10-09 10:00 A |  | 100% |  |  |  | start no earlier than 2026-10-09 09:00 | Дедов В | 1h | 1h |
| 7 | 1.4 | Убрать пневмотрубу из гидролизатной, видео скинул, муфту взять в кабинете у нас. Остановку согласовать, сделать все за 20 мин максимум |  | 20min | 2026-10-08 09:00 A | 2026-10-08 09:20 A |  | 100% |  |  |  | start no earlier than 2026-10-08 08:00 | Бобренок В | 0.33h | 0.33h |
| 8 | 1.5 | Устранение течи с вентиляции, предложить варианты, выслушать вариант домоводова |  | 3h | 2026-10-06 09:00 A | 2026-10-06 12:00 A |  | 100% |  |  |  | start no earlier than 2026-10-06 09:00 | Труфанов А; Некрасов | 6h | 6h |
| 9 | 1.6 | Изготовление и установка крышек на бачок гидролизата в 1 цеху |  | 3h | 2026-10-07 09:00 A | 2026-10-07 12:00 A |  | 100% |  |  |  | start no earlier than 2026-10-07 09:00 | Бундин В | 3h | 3h |
| 10 | 1.7 | **Вал прекондиционера 1 линия** |  | 1.88d | 2026-10-05 09:00 A | 2026-10-06 17:00 A |  | 100% |  |  |  |  |  | 18.67h | 18.67h |
| 11 | 1.7.1 | С 8 утра снимаем вал с прекондиционера 1 линия. |  | 3h | 2026-10-05 09:00 A | 2026-10-05 12:00 A |  | 100% |  |  |  | start no earlier than 2026-10-05 09:00 | Труфанов А; Некрасов | 6h | 6h |
| 12 | 1.7.2 | Образмеривание вала |  | 1h | 2026-10-05 12:00 A | 2026-10-05 13:00 A | 11 | 100% |  |  |  | start no earlier than 2026-10-02 08:00 | Труфанов А | 1h | 1h |
| 13 | 1.7.3 | Передача всей необходимой информации токарю |  | 30min | 2026-10-05 14:00 A | 2026-10-05 14:30 A | 12 | 100% |  |  |  | start no earlier than 2026-10-05 09:00 | Зорькин В | 0.5h | 0.5h |
| 14 | 1.7.4 | Контроль |  | 10min | 2026-10-05 14:30 A | 2026-10-05 14:40 A | 13 | 100% |  |  |  | start no earlier than 2026-10-05 09:00 | Зорькин В | 0.17h | 0.17h |
| 15 | 1.7.5 | Доставка |  | 3h | 2026-10-06 09:00 A | 2026-10-06 12:00 A | 14 | 100% |  |  |  | start no earlier than 2026-10-06 09:00 | Логист | 3h | 3h |
| 16 | 1.7.6 | Ставим новый вал сразу после прихода |  | 4h | 2026-10-06 12:00 A | 2026-10-06 17:00 A | 15 | 100% |  |  |  | start no earlier than 2026-10-06 09:00 | Труфанов А; Некрасов | 8h | 8h |
| 17 | 1.8 | **Квадропак** |  | 5d? | 2026-10-01 09:00 | 2026-10-06 18:00 |  |  |  | 110.59d |  |  |  |  |  |
| 18 | 1.8.1 | Составить заявку на шарнир подачи пакетов (зона 1) ВЭД партнер |  | 1d? | 2026-10-01 09:00 | 2026-10-01 18:00 |  |  |  | 110.59d | 0d | start no earlier than 2026-10-01 08:00 |  |  |  |
| 19 | 1.8.2 | Получить счет - оплата |  | 1d? | 2026-10-02 09:00 | 2026-10-02 18:00 | 18 |  |  | 110.59d | 0d | start no earlier than 2026-10-01 08:00 |  |  |  |
| 20 | 1.8.3 | Контроль доставки |  | 1d? | 2026-10-04 09:00 | 2026-10-04 18:00 | 19 |  |  | 110.59d | 0d | start no earlier than 2026-10-01 08:00 |  |  |  |
| 21 | 1.8.4 | Приемка |  | 1d? | 2026-10-05 09:00 | 2026-10-05 18:00 | 20 |  |  | 110.59d | 0d | start no earlier than 2026-10-01 08:00 |  |  |  |
| 22 | 1.8.5 | Установка |  | 1d? | 2026-10-06 09:00 | 2026-10-06 18:00 | 21 |  |  | 110.59d |  | start no earlier than 2026-10-01 08:00 |  |  |  |
| 23 | 1.9 | Установить газлифты на раму весов в плоскостях Х и У |  | 3h | 2026-10-02 09:00 A | 2026-10-02 12:00 A |  | 100% |  |  |  | start no earlier than 2026-10-02 09:00 | Тимофеев В; Бундин В | 6h | 6h |
| 24 | 1.10 | **сборка рама для труб приточной вентиляции** |  | 14.03d? | 2026-10-02 09:00 | 2026-10-21 09:15 |  |  |  | 100.56d |  |  |  | 32.25h |  |
| 25 | 1.10.1 | составить проект рамы |  | 4h | 2026-10-02 09:00 | 2026-10-02 13:00 |  |  |  | 100.56d | 0d | start no earlier than 2026-10-02 09:00 | Домоводов К | 4h |  |
| 26 | 1.10.2 | заявка металл |  | 4h | 2026-10-02 14:00 | 2026-10-02 18:00 | 25 |  |  | 100.56d | 0d | start no earlier than 2026-09-30 08:00 | Домоводов К | 4h |  |
| 27 | 1.10.3 | контроль доставка |  | 15min | 2026-10-16 09:00 | 2026-10-16 09:15 | 26FS+10d |  |  | 100.56d | 0d | start no earlier than 2026-09-30 08:00 | Зорькин В | 0.25h |  |
| 28 | 1.10.4 | сборка рама на земле |  | 2d | 2026-10-16 09:15 | 2026-10-20 09:15 | 27 |  |  | 100.56d | 0d | start no earlier than 2026-09-30 08:00 | Труфанов А | 16h |  |
| 29 | 1.10.5 | монтаж рама на цех краном |  | 1d? | 2026-10-20 09:15 | 2026-10-21 09:15 | 28 |  |  | 100.56d |  | start no earlier than 2026-09-30 08:00 | Некрасов А | 8h |  |
| 30 | 1.11 | герметизация неиспользуемых отверстий после модернизации вентиляции |  | 1d? | 2026-09-30 09:00 | 2026-09-30 18:00 |  |  |  | 115.59d |  | start no earlier than 2026-09-30 08:00 |  |  |  |

| ID | WBS | Task | Duration | Start | Finish | Predecessors | Complete | Remaining | Total slack | Free slack | Constraint | Resources | Work | Actual work |
| --- | --- | --- | --- | --- | --- | --- | --- | --- | --- | --- | --- | --- | --- | --- |
| 31 | 1.12 | **сборка системы дренажа для рекуператоров ввентиляции** | 2d? | 2026-09-30 09:00 A | 2026-10-01 18:00 A |  | 100% |  |  |  |  |  | 30h | 30h |
| 32 | 1.12.1 | Монтаж трассы слива в раковину с рекурператоров | 7h | 2026-09-30 09:00 A | 2026-09-30 17:00 A |  | 100% |  |  |  | start no earlier than 2026-09-30 09:00 | Труфанов А; Некрасов А | 14h | 14h |
| 33 | 1.12.2 | продолжить монтаж | 1d? | 2026-10-01 09:00 A | 2026-10-01 18:00 A |  | 100% |  |  |  | start no earlier than 2026-10-02 09:00 | Труфанов А; Некрасов А | 16h | 16h |
| 34 | 1.13 | Проверка весов на 2 линии красный смеситель, со слов валентина, после замены блока питания, работает, а потом выбивает весы, перестают работать | 1h | 2026-09-29 09:00 A | 2026-09-29 10:00 A |  | 100% |  |  |  | start no earlier than 2026-09-29 09:00 | Дедов В | 1h | 1h |
| 35 | 1.14 | Повторный замер параметров в 1 цеху, вентилляция (подробности по точкам у Домоводова) | 5h | 2026-09-25 09:00 A | 2026-09-25 15:00 A |  | 100% |  |  |  | start no earlier than 2026-09-25 09:00 | Труфанов А; Некрасов А | 10h | 10h |
| 36 | 1.15 | замеры в точках выброса вентиляции с проедставителем | 6h | 2026-09-29 09:00 A | 2026-09-29 16:00 A |  | 100% |  |  |  | start no earlier than 2026-09-29 09:00 | Труфанов А; Некрасов А | 12h | 12h |
| 37 | 1.16 | изготовить переход между прекондиционер и экструдер на 1 линию | 1d? | 2026-09-27 09:00 A | 2026-09-27 18:00 A |  | 100% |  |  |  | start no earlier than 2026-09-27 09:00 | Макаревич А | 8h | 8h |
| 38 | 1.17 | **замена ленты пролистывателя** | 22d | 2026-09-18 09:00 A | 2026-10-12 18:00 |  | 30% | 15.45d | 106.59d |  |  |  | 11.75h | 3.5h |
| 39 | 1.17.1 | Полная дефектовка пролистывателя, снятие лент/замена | 3h | 2026-09-18 09:00 A | 2026-09-18 12:00 A |  | 100% |  |  |  | start no earlier than 2026-09-18 09:00 | Тимофеев В | 3h | 3h |
| 40 | 1.17.2 | заявка на ремень клиновый для ленты + клей | 30min | 2026-09-18 12:00 A | 2026-09-18 12:30 A | 39 | 100% |  |  |  | start no earlier than 2026-09-18 08:00 | Зорькин В | 0.5h | 0.5h |
| 41 | 1.17.3 | контроль доставки | 15min | 2026-09-25 12:30 | 2026-09-25 12:45 | 40FS+7d |  |  | 118.12d | 11.53d | start no earlier than 2026-09-18 08:00 | Зорькин В | 0.25h |  |
| 42 | 1.17.4 | склеить ремень | 4h | 2026-10-09 09:00 | 2026-10-09 13:00 | 41FS+1d |  |  | 106.59d | 0d | start no earlier than 2026-10-09 09:00 | Тимофеев В | 4h |  |
| 43 | 1.17.5 | замена лент | 4h | 2026-10-12 14:00 | 2026-10-12 18:00 | 42FS+1d |  |  | 106.59d |  | start no earlier than 2026-09-18 08:00 | Тимофеев В | 4h |  |
| 44 | 1.18 | уборка остатков монтажа с рампы | 1h | 2026-09-14 09:00 A | 2026-09-14 10:00 A |  | 100% |  |  |  | start no earlier than 2026-09-14 09:00 | Некрасов А; Тимофеев В; Труфанов А | 3h | 3h |
| 45 | 1.19 | крепить табличку видеонаблюдение в офисе | 15min | 2026-09-14 09:00 A | 2026-09-14 09:15 A |  | 100% |  |  |  | start no earlier than 2026-09-14 09:00 | Тимофеев В | 0.25h | 0.25h |
| 46 | 1.20 | закрыть чердак у Лукаса | 15min | 2026-09-14 09:00 A | 2026-09-14 09:15 A |  | 100% |  |  |  | start no earlier than 2026-09-14 09:00 | Труфанов А; Некрасов А | 0.5h | 0.5h |
| 47 | 1.21 | **ремонт весов смеситель 1 линия** | 1.12d | 2026-09-24 09:00 A | 2026-09-25 10:00 A |  | 100% |  |  |  |  |  | 2h | 2h |
| 48 | 1.21.1 | Реанимировать весы, чтобы показывали. Смесители | 1h | 2026-09-24 09:00 A | 2026-09-24 10:00 A |  | 100% |  |  |  | start no earlier than 2026-09-24 09:00 | Дедов В | 1h | 1h |
| 49 | 1.21.2 | подключить блок питания найти на складе | 1h | 2026-09-25 09:00 A | 2026-09-25 10:00 A |  | 100% |  |  |  | start no earlier than 2026-09-25 08:00 | Бундин В | 1h | 1h |
| 50 | 1.22 | Закрыть каналыгу. На анкера | 2h | 2026-09-15 09:00 A | 2026-09-15 11:00 A |  | 100% |  |  |  | start no earlier than 2026-09-15 09:00 | Бундин В | 2h | 2h |
| 51 | 1.23 | **Дополнительное освещение на Рампе** | 15.14d | 2026-09-11 09:00 A | 2026-09-26 10:05 |  | 85% | 2.29d | 120.46d |  |  |  | 7.17h | 6.08h |
| 52 | 1.23.1 | Прокинуть кабель | 2h | 2026-09-11 09:00 A | 2026-09-11 11:00 A |  | 100% |  |  |  | start no earlier than 2026-09-11 09:00 | Бобренок В | 2h | 2h |
| 53 | 1.23.2 | установить доп светильник на погрузочной рампе | 4h | 2026-09-15 09:00 A | 2026-09-15 13:00 A | 52 | 100% |  |  |  | start no earlier than 2026-09-15 09:00 | Бобренок В | 4h | 4h |
| 54 | 1.23.3 | заявка выключатель | 5min | 2026-09-16 09:00 A | 2026-09-16 09:05 A | 53 | 100% |  |  |  | start no earlier than 2026-09-16 08:00 | Зорькин В | 0.08h | 0.08h |
| 55 | 1.23.4 | контроль | 5min | 2026-09-25 09:00 | 2026-09-25 09:05 | 54FS+7d |  |  | 120.46d | 0d | start no earlier than 2026-09-25 09:00 | Зорькин В | 0.08h |  |
| 56 | 1.23.5 | пожключение выключателя | 1h | 2026-09-26 09:05 | 2026-09-26 10:05 | 55FS+1d |  |  | 120.46d |  | start no earlier than 2026-09-26 09:00 | Бобренок В | 1h |  |
| 57 | 1.24 | востановить светильник отсек выгрузки ГП + установить доп светильник | 4h | 2026-09-09 09:00 A | 2026-09-09 13:00 A |  | 100% |  |  |  | start no earlier than 2026-09-09 09:00 | Бундин В | 4h | 4h |

| ID | WBS | Task | Duration | Start | Finish | Predecessors | Complete | Remaining | Total slack | Free slack | Constraint | Resources | Work | Actual work |
| --- | --- | --- | --- | --- | --- | --- | --- | --- | --- | --- | --- | --- | --- | --- |
| 58 | 1.25 | **реконструкция хранения гидролизатов и маршрут подачи навесок** | 31.25d? | 2026-09-08 09:00 A | 2026-10-12 11:00 |  | 32% | 21.38d? | 107.34d |  |  |  | 58.33h | 23h |
| 59 | 1.25.1 | **перенос системы отопления** | 0.12d | 2026-09-11 09:00 A | 2026-09-11 10:00 A |  | 100% |  |  |  |  |  | 1h | 1h |
| 60 | 1.25.1.1 | посик сварщиков | 1h | 2026-09-11 09:00 A | 2026-09-11 10:00 A |  | 100% |  |  |  | start no earlier than 2026-09-11 09:00 | Домоводов К | 1h | 1h |
| 61 | 1.25.2 | **монтаж доп плащадки** | 9.19d | 2026-09-28 09:00 | 2026-10-08 10:30 |  |  |  | 109.41d |  |  |  | 17.5h |  |
| 62 | 1.25.2.1 | составить чертеж площадки | 1h | 2026-09-28 09:00 | 2026-09-28 10:00 |  |  |  | 109.41d | 0d | start no earlier than 2026-09-28 09:00 | Домоводов К | 1h |  |
| 63 | 1.25.2.2 | заявка | 15min | 2026-09-29 10:00 | 2026-09-29 10:15 | 62FS+1d |  |  | 109.41d | 0d | start no earlier than 2026-09-10 09:00 | Зорькин В | 0.25h |  |
| 64 | 1.25.2.3 | контроль доставки | 15min | 2026-10-05 10:15 | 2026-10-05 10:30 | 63FS+5d |  |  | 109.41d | 0d | start no earlier than 2026-09-08 08:00 | Зорькин В | 0.25h |  |
| 65 | 1.25.2.4 | монтаж | 2d | 2026-10-06 10:30 | 2026-10-08 10:30 | 64FS+1d |  |  | 109.41d |  | start no earlier than 2026-09-28 09:00 | Тимофеев В | 16h |  |
| 66 | 1.25.3 | **монтаж перегородка корридор** | 8.19d | 2026-09-25 09:00 | 2026-10-04 10:30 |  |  |  | 113.41d |  |  |  | 17.5h |  |
| 67 | 1.25.3.1 | составить чертеж площадки | 1h | 2026-09-25 09:00 | 2026-09-25 10:00 |  |  |  | 113.41d | 0d | start no earlier than 2026-09-25 09:00 | Домоводов К | 1h |  |
| 68 | 1.25.3.2 | заявка | 15min | 2026-09-25 10:00 | 2026-09-25 10:15 | 67 |  |  | 113.41d | 0d | start no earlier than 2026-09-10 09:00 | Зорькин В | 0.25h |  |
| 69 | 1.25.3.3 | контроль доставки | 15min | 2026-09-30 10:15 | 2026-09-30 10:30 | 68FS+5d |  |  | 113.41d | 0d | start no earlier than 2026-09-08 08:00 | Зорькин В | 0.25h |  |
| 70 | 1.25.3.4 | монтаж | 2d | 2026-10-01 10:30 | 2026-10-04 10:30 | 69FS+1d |  |  | 113.41d |  | start no earlier than 2026-09-28 09:00 | Тимофеев В | 16h |  |
| 71 | 1.25.4 | **врезка двери в проем на упаковку** | 0.04d | 2026-09-09 09:00 | 2026-09-09 09:20 |  |  |  | 137.55d |  |  |  | 0.33h |  |
| 72 | 1.25.4.1 | планирование с Олегом, как сделана стена | 20min | 2026-09-09 09:00 | 2026-09-09 09:20 |  |  |  | 137.55d |  | start no earlier than 2026-09-09 09:00 | Домоводов К | 0.33h |  |
| 73 | 1.25.5 | замена двери в гидролизатную - | 1d? | 2026-09-08 09:00 | 2026-09-08 18:00 |  |  |  | 137.59d |  | start no earlier than 2026-09-08 08:00 |  |  |  |
| 74 | 1.25.6 | перенос батареи отопления в гидролизатной | 2h | 2026-10-12 09:00 A | 2026-10-12 11:00 A |  | 100% |  |  |  | start no earlier than 2026-10-12 09:00 | Труфанов А; Бобренок В | 4h | 4h |
| 75 | 1.25.7 | демонтаж бетонного отлива/отмостка | 2d | 2026-09-08 09:00 A | 2026-09-09 18:00 A |  | 100% |  |  |  | start no earlier than 2026-09-08 08:00 | Олег | 16h | 16h |
| 76 | 1.25.8 | Помощь Олегу пока ставит шпильки | 1h | 2026-10-12 09:00 A | 2026-10-12 10:00 A |  | 100% |  |  |  | start no earlier than 2026-10-12 08:00 | Труфанов А; Бобренок В | 2h | 2h |
| 77 | 1.26 | **ревизия парогенератор КАРЧЕР** | 3.03d? | 2026-09-21 09:00 A | 2026-09-24 09:15 A |  | 100% |  |  |  |  |  | 8.5h | 8.5h |
| 78 | 1.26.1 | орг отправить курьера на пнд | 15min | 2026-09-23 09:00 A | 2026-09-23 09:15 A |  | 100% |  |  |  | start no earlier than 2026-09-23 09:00 | Зорькин В | 0.25h | 0.25h |
| 79 | 1.26.2 | контроль доставки | 15min | 2026-09-24 09:00 A | 2026-09-24 09:15 A | 78 | 100% |  |  |  | start no earlier than 2026-09-24 09:00 | Зорькин В | 0.25h | 0.25h |
| 80 | 1.26.3 | монтаж | 1d? | 2026-09-21 09:00 A | 2026-09-21 18:00 A | 79 | 100% |  |  |  | start no earlier than 2026-09-25 09:00 | Тимофеев В | 8h | 8h |
| 81 | 1.27 | **подключить циклоны 1 и 2 линия** | 1.12d | 2026-09-09 09:00 A | 2026-09-10 10:00 A |  | 100% |  |  |  |  |  | 1.17h | 1.17h |
| 82 | 1.27.1 | контроль поставка кабель | 10min | 2026-09-09 09:00 A | 2026-09-09 09:10 A |  | 100% |  |  |  | start no earlier than 2026-09-09 09:00 | Зорькин В | 0.17h | 0.17h |
| 83 | 1.27.2 | монтаж кабеля (временно удлинить от сущестующих концов) | 1h | 2026-09-10 09:00 A | 2026-09-10 10:00 A |  | 100% |  |  |  | start no earlier than 2026-09-10 09:00 | Бундин В | 1h | 1h |

| ID | WBS | Task | Type | Duration | Start | Finish | Predecessors | Complete | Remaining | Total slack | Free slack | Constraint | Resources | Work | Actual work |
| --- | --- | --- | --- | --- | --- | --- | --- | --- | --- | --- | --- | --- | --- | --- | --- |
| 84 | 1.28 | **бактерицидные лампы** |  | 7.12d | 2026-09-09 09:00 A | 2026-09-16 10:00 A |  | 100% |  |  |  |  |  | 3h | 3h |
| 85 | 1.28.1 | замена бактерицидных ламп в коридоре и посмотреть, где не горят |  | 1h | 2026-09-09 09:00 A | 2026-09-09 10:00 A |  | 100% |  |  |  | start no earlier than 2026-09-09 09:00 | Бундин В | 1h | 1h |
| 86 | 1.28.2 | ремонт лампы снятой бундиным с мойки экструдера |  | 1h | 2026-09-16 09:00 A | 2026-09-16 10:00 A |  | 100% |  |  |  | start no earlier than 2026-09-16 09:00 | Бундин В | 1h | 1h |
| 87 | 1.28.3 | ремонт лампы в тамбуре вывоз ГП |  | 1h | 2026-09-16 09:00 A | 2026-09-16 10:00 A |  | 100% |  |  |  | start no earlier than 2026-09-16 09:00 | Бундин В | 1h | 1h |
| 88 | 1.29 | исправить "не возможность открыть" краны фильтр жир 2л |  | 30min | 2026-09-10 09:00 A | 2026-09-10 09:30 A |  | 100% |  |  |  | start no earlier than 2026-09-10 09:00 | Тимофеев В | 0.5h | 0.5h |
| 89 | 1.30 | ремонт силиконовых уплотнений печи на сетке 1 и 2 л |  | 3h? | 2026-09-10 09:00 A | 2026-09-10 12:00 A |  | 100% |  |  |  | start no earlier than 2026-09-10 09:00 | Бундин В | 3h | 3h |
| 90 | 1.31 | **сместить квадропак в сторону охладителя 2л** |  | 20.5d | 2026-09-10 09:00 A | 2026-09-30 13:00 A |  | 100% |  |  |  |  |  | 20h | 20h |
| 91 | 1.31.1 | отключение / перенгос мехнизмов |  | 3h | 2026-09-10 09:00 A | 2026-09-10 12:00 A |  | 100% |  |  |  | start no earlier than 2026-09-10 09:00 | Некрасов А; Труфанов А | 6h | 6h |
| 92 | 1.31.2 | подключение |  | 3h | 2026-09-11 09:00 A | 2026-09-11 12:00 A |  | 100% |  |  |  | start no earlier than 2026-09-11 09:00 | Некрасов А; Труфанов А | 6h | 6h |
| 93 | 1.31.3 | доработка перил |  | 4h | 2026-09-30 09:00 A | 2026-09-30 13:00 A |  | 100% |  |  |  | start no earlier than 2026-09-30 09:00 | Труфанов А; Некрасов А | 8h | 8h |
| 94 | 1.32 | **квадропак - сделать силиконовый успокоитель между нория и весы 800*250 шаг шторок 60** |  | 19.25d | 2026-09-25 09:00 A | 2026-10-19 11:00 |  | 7% | 17.88d | 102.34d |  |  |  | 2.33h | 0.17h |
| 95 | 1.32.1 | заявка прозрачный силикон |  | 10min | 2026-09-25 09:00 A | 2026-09-25 09:10 A |  | 100% |  |  |  | start no earlier than 2026-09-25 09:00 | Зорькин В | 0.17h | 0.17h |
| 96 | 1.32.2 | доставка контроль |  | 10min | 2026-10-09 09:00 | 2026-10-09 09:10 | 95FS+7d |  |  | 108.32d | 5.98d | start no earlier than 2026-10-09 09:00 | Зорькин В | 0.17h |  |
| 97 | 1.32.3 | сборка |  | 2h | 2026-10-19 09:00 | 2026-10-19 11:00 | 96 |  |  | 102.34d |  | start no earlier than 2026-10-19 09:00 | Тимофеев В | 2h |  |
| 98 | 1.33 | квадропак - ремонт люфта штанги нажима роликов открытия захватов на станции №1 |  | 4h | 2026-09-30 09:00 A | 2026-09-30 13:00 A |  | 100% |  |  |  | start no earlier than 2026-09-30 09:00 | Тимофеев В | 4h | 4h |
| 99 | 1.34 | квадропак - кронштейн пневовстряхивателя - востановить резтбу сквозную |  | 1h | 2026-09-30 09:00 A | 2026-09-30 10:00 A |  | 100% |  |  |  | start no earlier than 2026-09-30 09:00 | Тимофеев В | 1h | 1h |
| 100 | 1.35 | Ревизия утечек воздуха на квадропаке (важно проверить пневмораспределителях) и вакуумную систему (если работают, отменяем задание) | manual | 2h | 2026-09-23 09:00 A | 2026-09-23 11:00 A |  | 100% |  |  |  | start no earlier than 2026-09-23 09:00 | Тимофеев В | 2h | 2h |
| 101 | 1.36 | Комплексное ТО квадропака, проверка всех соединений, протяжка болтов на всех узлах | manual | 2h | 2026-09-23 09:00 A | 2026-09-23 11:00 A |  | 100% |  |  |  | start no earlier than 2026-09-23 09:00 | Тимофеев В | 2h | 2h |
| 102 | 1.37 | Сделать основную кнопку на НОТИСЕ, чтоб срабатывало от нее, а не от блока управления (схему взять у нас в кабинете) | manual | 1h | 2026-09-22 09:00 A | 2026-09-22 10:00 A |  | 100% |  |  |  | start no earlier than 2026-09-22 09:00 | Дедов В | 1h | 1h |
| 103 | 1.38 | Убрать все кабеля на полу в зоне фасовки, теко-нотис (кабельный менеджмент) |  | 2h | 2026-09-10 09:00 A | 2026-09-10 11:00 A |  | 100% |  |  |  | start no earlier than 2026-09-10 09:00 | Бундин В | 2h | 2h |
| 104 | 1.39 | Клемная коробка на жирах сделать, сейчас вся висит на хомутах 2 линия |  | 1h | 2026-09-07 09:00 A | 2026-09-07 10:00 A |  | 100% |  |  |  | start no earlier than 2026-09-05 09:00 | Дедов В | 1h | 1h |
| 105 | 1.40 | Ошибка на баке жиротопки 2 линия Err.4 /разобраться и устранить причину |  | 1h | 2026-09-04 09:00 A | 2026-09-04 10:00 A |  | 100% |  |  |  | start no earlier than 2026-09-04 09:00 | Бобренок В | 1h | 1h |
| 106 | 1.41 | Установить новые газлифты, которые получил Бобренок на жиротопку 2 этаж |  | 2h | 2026-09-07 09:00 A | 2026-09-07 11:00 A |  | 100% |  |  |  | start no earlier than 2026-09-07 09:00 | Тимофеев В | 2h | 2h |
| 107 | 1.42 | **Не работают роль ставни на жирах, не стопоряться сделать/устранить неисправность** |  | 20.02d | 2026-09-09 09:00 A | 2026-09-29 09:10 A |  | 100% |  |  |  |  |  | 8.33h | 8.33h |
| 108 | 1.42.1 | Вызвать подрядчика/контроль |  | 10min | 2026-09-09 09:00 A | 2026-09-09 09:10 A |  | 100% |  |  |  | start no earlier than 2026-09-09 09:00 | Зорькин В | 0.17h | 0.17h |
| 109 | 1.42.2 | получить счет на ремонт |  | 1d | 2026-09-09 09:10 A | 2026-09-10 09:10 A | 108 | 100% |  |  |  | start no earlier than 2026-09-08 09:00 | Зорькин В | 8h | 8h |
| 110 | 1.42.3 | согласовать с подрядчиком дату ремонта |  | 10min | 2026-09-29 09:00 A | 2026-09-29 09:10 A | 109 | 100% |  |  |  | start no earlier than 2026-09-29 09:00 | Зорькин В | 0.17h | 0.17h |
| 111 | 1.43 | закреить отбойник корридор навесок (заанкерить) |  | 1h | 2026-09-03 09:00 A | 2026-09-03 10:00 A |  | 100% |  |  |  | start no earlier than 2026-09-03 08:00 | Бобренок В | 1h | 1h |
| 112 | 1.44 | Переподключение кондиционера срежима кондиционера на автоматический |  | 15min | 2026-09-02 09:00 A | 2026-09-02 09:15 A |  | 100% |  |  |  | start no earlier than 2026-09-02 09:00 | Бобренок В | 0.25h | 0.25h |
| 113 | 1.45 | Замена редуктора поворотного стола |  | 1h | 2026-09-02 09:00 A | 2026-09-02 10:00 A |  | 100% |  |  |  | start no earlier than 2026-09-02 09:00 | Бобренок В | 1h | 1h |
| 114 | 1.46 | Программирование частотника теко 0,4 привод смещения ленты |  | 2h | 2026-09-02 09:00 A | 2026-09-02 11:00 A |  | 100% |  |  |  | start no earlier than 2026-09-02 09:00 | Тимофеев В | 2h | 2h |
| 115 | 1.47 | Прозвонить кабель паллетных весов ошибка Error 10 |  | 1h | 2026-09-07 09:00 A | 2026-09-07 10:00 A |  | 100% |  |  |  | start no earlier than 2026-09-05 09:00 | Дедов В | 1h | 1h |
| 116 | 1.48 | Замена подшипников на ножевом узле |  | 2h | 2026-09-01 09:00 A | 2026-09-01 11:00 A |  | 100% |  |  |  | start no earlier than 2026-09-01 09:00 | Бундин В | 2h | 2h |
| 117 | 1.49 | Замена насоса на водяной рубашке жиротопке 2 этаж |  | 2h | 2026-09-01 09:00 A | 2026-09-01 11:00 A |  | 100% |  |  |  | start no earlier than 2026-09-01 09:00 | Бундин В | 2h | 2h |
| 118 | 1.50 | Замена контактора 1 линия 2 зона экструдера |  | 1h | 2026-09-01 09:00 A | 2026-09-01 10:00 A |  | 100% |  |  |  | start no earlier than 2026-09-01 09:00 | Бундин В | 1h | 1h |
| 119 | 1.51 | Редуктор смесителя 1 линия, собрать информацию, что не так, что нужно сделать |  | 30min | 2026-09-02 09:00 A | 2026-09-02 09:30 A |  | 100% |  |  |  | start no earlier than 2026-09-02 09:00 | Тимофеев В | 0.5h | 0.5h |
| 120 | 1.52 | Ремонт мухобойки 1 цех в корридоре завоза навесок |  | 1h | 2026-09-01 09:00 A | 2026-09-01 10:00 A |  | 100% |  |  |  | start no earlier than 2026-09-01 09:00 | Труфанов А | 1h | 1h |
| 121 | 1.53 | капает с кондиционера ближе к жировику (устранить) |  | 2h | 2026-08-31 09:00 A | 2026-08-31 11:00 A |  | 100% |  |  |  | start no earlier than 2026-08-31 09:00 | Бундин В; Тимофеев В | 4h | 4h |
| 122 | 1.54 | отвезти внутренний блок с 1 цеха на синий склад | manual | 1h | 2026-08-30 09:00 A | 2026-08-30 10:00 A |  | 100% |  |  |  | start no earlier than 2026-08-30 09:00 | Бундин В | 1h | 1h |
| 123 | 1.55 | чистка фильтра кондиционера между печками | manual | 1h | 2026-08-31 09:00 A | 2026-08-31 10:00 A |  | 100% |  |  |  | start no earlier than 2026-08-31 09:00 | Бундин В | 1h | 1h |
| 124 | 1.56 | ревизия приточной вентиляции (протяжка контактов и т.д.) | manual | 3h | 2026-08-31 09:00 A | 2026-08-31 12:00 A |  | 100% |  |  |  | start no earlier than 2026-08-31 09:00 | Дедов В | 3h | 3h |
| 125 | 1.57 | прикрутить лоток между барабанами, чтобы не бил о лопасти 1 линия | manual | 1h | 2026-08-30 09:00 A | 2026-08-30 10:00 A |  | 100% |  |  |  | start no earlier than 2026-08-30 09:00 | Бундин В | 1h | 1h |
| 126 | 1.58 | улитка на подиуме за цехом, прикрутить отвод в бок (отвод под подиумом) | manual | 1h | 2026-08-31 09:00 A | 2026-08-31 10:00 A |  | 100% |  |  |  | start no earlier than 2026-08-31 09:00 | Бундин В | 1h | 1h |
| 127 | 1.59 | течет вода с поломоечной машинки - разобраться | manual | 2h | 2026-08-31 09:00 A | 2026-08-31 11:00 A |  | 100% |  |  |  | start no earlier than 2026-08-31 09:00 | Дедов В | 2h | 2h |

| ID | WBS | Task | Duration | Start | Finish | Predecessors | Complete | Remaining | Total slack | Free slack | Constraint | Resources | Work | Actual work |
| --- | --- | --- | --- | --- | --- | --- | --- | --- | --- | --- | --- | --- | --- | --- |
| 128 | 1.60 | **почистить шнек сухого гидрализата (1 линия)** | 0.12d | 2026-08-28 08:00 A | 2026-08-28 10:00 A |  | 100% |  |  |  |  | Бобренок В | 3h | 3h |
| 129 | 1.60.1 | замена пошипников | 1h | 2026-08-28 08:00 A | 2026-08-28 10:00 A |  | 100% |  |  |  | start no earlier than 2026-08-28 08:00 | Тимофеев В; Некрасов А | 2h | 2h |
| 130 | 1.61 | замена фильтров на приточке | 1h | 2026-08-27 09:00 A | 2026-08-27 10:00 A |  | 100% |  |  |  | start no earlier than 2026-08-27 09:00 | Дедов В | 1h | 1h |
| 131 | 1.62 | **продумать как сделать герметичную крышку на смесителе сухого гидрализата** | 36.25d | 2026-08-27 09:00 A | 2026-10-06 11:00 |  | 57% | 15.54d | 111.34d |  |  |  | 20h | 12h |
| 132 | 1.62.1 | печать уплотненителей крышек | 4h | 2026-09-28 09:00 | 2026-09-28 13:00 |  |  |  | 117.84d | 6.5d | start no earlier than 2026-09-28 09:00 | Домоводов К | 4h |  |
| 133 | 1.62.2 | изготовить крышку (расскажу по телефону) | 4h | 2026-08-27 09:00 A | 2026-08-27 13:00 A |  | 100% |  |  |  | start no earlier than 2026-08-27 09:00 | Бобренок В; Шуранов Ю | 8h | 8h |
| 134 | 1.62.3 | изготовить крышку для 2 линии (как сделал Слава) | 4h | 2026-09-01 09:00 A | 2026-09-01 13:00 A |  | 100% |  |  |  | start no earlier than 2026-09-01 09:00 | Макаревич А | 4h | 4h |
| 135 | 1.62.4 | установка на струбцинах с уплотнителями | 2h | 2026-10-06 09:00 | 2026-10-06 11:00 | 132 |  |  | 111.34d |  | start no earlier than 2026-10-06 09:00 | Тимофеев В; Домоводов К | 4h |  |
| 136 | 1.63 | **метал от тенов печи, устранить причину** | 15.38d? | 2026-08-24 09:00 A | 2026-09-11 12:00 A |  | 100% |  |  |  |  |  | 5.42h | 5.42h |
| 137 | 1.63.1 | выяснить сгорел тен русский или китайский (будет ночью остановка) | 15min | 2026-08-27 09:00 A | 2026-08-27 09:15 A |  | 100% |  |  |  | start no earlier than 2026-08-27 09:00 | Бобренок В | 0.25h | 0.25h |
| 138 | 1.63.2 | вскрыть 2 зону и посмотреть какой тен (мойка) | 1h | 2026-08-31 09:00 A | 2026-08-31 10:00 A |  | 100% |  |  |  | start no earlier than 2026-09-02 09:00 | Некрасов А | 1h | 1h |
| 139 | 1.63.3 | осмотр состояния тенов/ планирование замены | 10min | 2026-08-27 09:00 A | 2026-08-27 09:10 A |  | 100% |  |  |  | start no earlier than 2026-08-27 09:00 | Бобренок В | 0.17h | 0.17h |
| 140 | 1.63.4 | выяснить статус поставки тенов из китая | 1h | 2026-08-24 09:00 A | 2026-08-24 10:00 A |  | 100% |  |  |  | start no earlier than 2026-08-24 09:00 | Шуранов Ю | 1h | 1h |
| 141 | 1.63.5 | замена заброкованных осмотром тенов | 3h? | 2026-09-11 09:00 A | 2026-09-11 12:00 A |  | 100% |  |  |  | start no earlier than 2026-09-11 09:00 | Тимофеев В | 3h | 3h |
| 142 | 1.64 | замена плата 485 в контроллере 2 линия | 1h | 2026-08-21 09:00 A | 2026-08-21 10:00 A |  | 100% |  |  |  | start no earlier than 2026-08-21 09:00 | Дедов В | 1h | 1h |
| 143 | 1.65 | перемонтаж частотный привод сух гидролизат | 2h | 2026-09-02 09:00 A | 2026-09-02 11:00 A |  | 100% |  |  |  | start no earlier than 2026-09-04 09:00 | Некрасов А; Дедов В | 4h | 4h |
| 144 | 1.66 | поменять светильник где вывозят готовую продукцию (с люлки) | 2h | 2026-08-31 09:00 A | 2026-08-31 11:00 A |  | 100% |  |  |  | start no earlier than 2026-08-31 09:00 | Тимофеев В; Бундин В | 4h | 4h |
| 145 | 1.67 | на нотис настроить кнопку, чтобы работала в цикле | 1h | 2026-08-20 09:00 A | 2026-08-20 10:00 A |  | 100% |  |  |  | start no earlier than 2026-08-20 09:00 | Дедов В | 1h | 1h |
| 146 | 1.68 | изготовление герметичной крышки под мойкой экструдера (объясню по телефону) занкрепить на анкера | 2h | 2026-08-19 08:00 A | 2026-08-19 11:00 A |  | 100% |  |  |  | start no earlier than 2026-08-19 08:00 | Бобренок В | 2h | 2h |
| 147 | 1.69 | **проверка пылесоса, почему не стартует (в слесарке)** | 1d? | 2026-08-25 09:00 A | 2026-08-25 18:00 A |  | 100% |  |  |  |  | Бобренок В | 16h | 16h |
| 148 | 1.69.1 | заказать двигатель и выяснить на гарантии он или нет | 1d? | 2026-08-25 09:00 A | 2026-08-25 18:00 A |  | 100% |  |  |  | start no earlier than 2026-08-25 08:00 | Шуранов Ю | 8h | 8h |
| 149 | 1.70 | ремонт свет в раздевалке | 30min | 2026-08-14 09:00 A | 2026-08-14 09:30 A |  | 100% |  |  |  | start no earlier than 2026-08-14 09:00 | Бундин В | 0.5h | 0.5h |
| 150 | 1.71 | стиральная машинка проверка насоса слива, разборка, фото шильдик. Не качает. | 2h | 2026-08-15 09:00 A | 2026-08-17 11:00 A |  | 100% |  |  |  | start no earlier than 2026-08-15 09:00 | Бундин В | 2h | 2h |
| 151 | 1.72 | **настройка пробники на толстую цветную пленку** | 9.38d? | 2026-08-14 09:00 A | 2026-08-27 12:00 A |  | 100% |  |  |  |  |  | 25.25h | 25.25h |
| 152 | 1.72.1 | тест пленки на пробнике с Луговских В в 11 00 | 1h | 2026-08-14 09:00 A | 2026-08-14 10:00 A |  | 100% |  |  |  | start no earlier than 2026-08-14 09:00 | Тимофеев В | 1h | 1h |
| 153 | 1.72.2 | установить протяжной ролик к турбе от ТЕКО 1.5 с синего,снять с синего примерка | 2h | 2026-08-17 09:00 A | 2026-08-17 11:00 A |  | 100% |  |  |  | start no earlier than 2026-08-17 09:00 | Тимофеев В | 2h | 2h |
| 154 | 1.72.3 | настройка пробника с режимом фотометки | 1h | 2026-08-27 09:00 A | 2026-08-27 10:00 A |  | 100% |  |  |  | start no earlier than 2026-08-27 09:00 | Дедов В | 1h | 1h |
| 155 | 1.72.4 | получить пневмоцилиндр | 15min | 2026-08-20 09:00 A | 2026-08-20 09:15 A |  | 100% |  |  |  | start no earlier than 2026-08-20 09:00 | Тимофеев В | 0.25h | 0.25h |
| 156 | 1.72.5 | изготовление крепления вспомогательной протяжки | 6h | 2026-08-21 09:00 A | 2026-08-21 16:00 A |  | 100% |  |  |  | start no earlier than 2026-08-21 09:00 | Тимофеев В | 6h | 6h |
| 157 | 1.72.6 | подключение частотника через реле от двигателя протяжки (спросить Константина) | 1d? | 2026-08-25 09:00 A | 2026-08-25 18:00 A |  | 100% |  |  |  | start no earlier than 2026-08-25 08:00 | Бундин В | 8h | 8h |
| 158 | 1.72.7 | настройка частотника для работы пробника | 3h | 2026-08-27 09:00 A | 2026-08-27 12:00 A |  | 100% |  |  |  | start no earlier than 2026-08-27 09:00 | Тимофеев В; Шуранов Ю | 6h | 6h |
| 159 | 1.72.8 | жалобы, что пробники бьют периодически током- проверить соединения, контакты и т.д. | 1h | 2026-08-26 08:00 A | 2026-08-26 10:00 A |  | 100% |  |  |  | start no earlier than 2026-08-26 08:00 | Бобренок В | 1h | 1h |
| 160 | 1.73 | настройка параметров ЧП сухой ГДЗ сбиты, переставлен с линии 2. Снял Слава, найти. Настройка в птц | 15min | 2026-08-20 09:00 A | 2026-08-20 09:15 A |  | 100% |  |  |  | start no earlier than 2026-08-20 09:00 | Дедов В | 0.25h | 0.25h |

| ID | WBS | Task | Type | Duration | Start | Finish | Predecessors | Complete | Remaining | Total slack | Free slack | Constraint | Resources | Work | Actual work |
| --- | --- | --- | --- | --- | --- | --- | --- | --- | --- | --- | --- | --- | --- | --- | --- |
| 161 | 1.74 | **ТЕКО ремонт кнопки, которую снял Бобренок В , вернуть то что снял с 3ц** |  | 19.12d | 2026-08-13 09:00 A | 2026-09-08 10:00 A |  | 100% |  |  |  |  |  | 2.75h | 2.75h |
| 162 | 1.74.1 | осмотр |  | 30min | 2026-08-13 09:00 A | 2026-08-13 09:30 A |  | 100% |  |  |  | start no earlier than 2026-08-13 09:00 | Домоводов К | 0.5h | 0.5h |
| 163 | 1.74.2 | заявка в ТЕКО платы |  | 30min | 2026-08-18 09:00 A | 2026-08-18 09:30 A | 162 | 100% |  |  |  | start no earlier than 2026-08-18 09:00 | Зорькин В | 0.5h | 0.5h |
| 164 | 1.74.3 | контроль поставки |  | 15min | 2026-09-04 09:00 A | 2026-09-04 09:15 A | 163FS+10d | 100% |  |  |  | start no earlier than 2026-09-04 09:00 | Зорькин В | 0.25h | 0.25h |
| 165 | 1.74.4 | монтаж платы на место |  | 1h | 2026-09-08 09:00 A | 2026-09-08 10:00 A | 164FS+1d | 100% |  |  |  | start no earlier than 2026-09-09 09:00 | Тимофеев В | 1h | 1h |
| 166 | 1.74.5 | Вернуть голову с восстановленной клавиатурой на НОТИС в 3 цех |  | 30min | 2026-09-08 09:00 A | 2026-09-08 09:30 A |  | 100% |  |  |  | start no earlier than 2026-09-09 09:00 | Тимофеев В | 0.5h | 0.5h |
| 167 | 1.75 | установить вент решетки на трассу кондиционера |  | 30min | 2026-08-12 09:00 A | 2026-08-12 09:30 A |  | 100% |  |  |  | start no earlier than 2026-08-12 09:00 | Труфанов А; Некрасов А | 1h | 1h |
| 168 | 1.76 | течь сливной трубы кондиционара править трассу |  | 2h | 2026-08-12 09:00 A | 2026-08-12 11:00 A |  | 100% |  |  |  | start no earlier than 2026-08-12 09:00 | Труфанов А; Некрасов А | 4h | 4h |
| 169 | 1.77 | слить конденсат и чистка фильтров, продуть радиаторы компрессора | manual | 2h | 2026-08-09 09:00 A | 2026-08-09 11:00 A |  | 100% |  |  |  | start no earlier than 2026-08-09 09:00 | Бундин В | 2h | 2h |
| 170 | 1.78 | заменить камеру над квадропаком (слева) -камера у нас в слесарке, взять в помощь оператора | manual | 1h | 2026-08-09 09:00 A | 2026-08-09 10:00 A |  | 100% |  |  |  | start no earlier than 2026-08-09 09:00 | Бундин В | 1h | 1h |
| 171 | 1.79 | дверь тяжело открывается в гидрализаторную (попробовать поправить, задевает металл-металл) |  | 1h | 2026-08-06 09:00 A | 2026-08-06 10:00 A |  | 100% |  |  |  | start no earlier than 2026-08-06 08:00 | Труфанов А | 1h | 1h |
| 172 | 1.80 | заменить плафон в душе | manual | 1h | 2026-08-06 09:00 A | 2026-08-06 10:00 A |  | 100% |  |  |  | start no earlier than 2026-08-06 09:00 | Бундин В | 1h | 1h |
| 173 | 1.81 | ТО пробники и Теко 0,4 (чистка тен, ножей, смазка) |  | 4h | 2026-08-05 08:00 A | 2026-08-05 13:00 A |  | 100% |  |  |  | start no earlier than 2026-08-05 08:00 | Макаревич А | 4h | 4h |
| 174 | 1.82 | **палетообмостчик монтаж в 1ц** |  | 55.38d | 2026-08-12 09:00 A | 2026-10-16 12:00 |  | 29% | 39.09d | 103.22d |  |  |  | 7.25h | 1.25h |
| 175 | 1.82.1 | получить договор + счет |  | 1h | 2026-08-12 09:00 A | 2026-08-12 10:00 A |  | 100% |  |  |  | start no earlier than 2026-08-12 09:00 | Зорькин В | 1h | 1h |
| 176 | 1.82.2 | **согласвоание договор** |  | 2.89d | 2026-08-12 10:00 A | 2026-08-17 09:05 A | 175 | 100% |  |  |  |  |  | 0.17h | 0.17h |
| 177 | 1.82.2.1 | передать Маше |  | 5min | 2026-08-12 10:00 A | 2026-08-12 10:05 A |  | 100% |  |  |  | start no earlier than 2026-08-12 09:00 | Домоводов К | 0.08h | 0.08h |
| 178 | 1.82.2.2 | контроль |  | 5min | 2026-08-17 09:00 A | 2026-08-17 09:05 A | 177FS+3d | 100% |  |  |  | start no earlier than 2026-08-17 09:00 | Домоводов К | 0.08h | 0.08h |
| 179 | 1.82.3 | оплата подать счет | milestone | 0d | 2026-08-12 09:00 A | 2026-08-12 09:00 A |  | 100% |  |  |  | start no earlier than 2026-08-12 09:00 | Домоводов К |  |  |
| 180 | 1.82.4 | доставка конетроль |  | 5min | 2026-09-01 09:00 A | 2026-09-01 09:05 A |  | 100% |  |  |  | start no earlier than 2026-09-01 09:00 | Зорькин В | 0.08h | 0.08h |
| 181 | 1.82.5 | монтаж |  | 3h | 2026-10-16 09:00 | 2026-10-16 12:00 |  |  |  | 103.22d |  | start no earlier than 2026-10-16 09:00 | Некрасов А; Труфанов А | 6h |  |
| 182 | 1.83 | **замена сетка печи линия 1** |  | 44.09d? | 2026-08-12 09:00 A | 2026-10-02 09:45 |  | 8% | 40.52d? | 114.5d |  |  |  | 9.5h | 1h |
| 183 | 1.83.1 | замерить параметры сетки |  | 15min | 2026-08-12 09:00 A | 2026-08-12 09:15 A |  | 100% |  |  |  | start no earlier than 2026-08-12 09:00 | Домоводов К; Тимофеев В | 0.5h | 0.5h |
| 184 | 1.83.2 | получить счет на сетку КИТАЙ |  | 15min | 2026-08-17 09:00 A | 2026-08-17 09:15 A | 183 | 100% |  |  |  | start no earlier than 2026-08-17 09:00 | Зорькин В | 0.25h | 0.25h |
| 185 | 1.83.3 | контроль оплата | milestone | 0d | 2026-08-21 09:00 A | 2026-08-21 09:00 A | 184FS+2d | 100% |  |  |  | start no earlier than 2026-08-21 09:00 | Зорькин В |  |  |
| 186 | 1.83.4 | контроль доставки |  | 15min | 2026-09-30 09:00 A | 2026-09-30 09:15 A | 185FS+30d | 100% |  |  |  | start no earlier than 2026-09-30 09:00 | Зорькин В | 0.25h | 0.25h |
| 187 | 1.83.5 | приемка |  | 30min | 2026-09-30 09:15 | 2026-09-30 09:45 | 186 |  |  | 114.5d | 0d | start no earlier than 2026-08-10 08:00 | Зорькин В | 0.5h |  |
| 188 | 1.83.6 | замена |  | 1d? | 2026-10-01 09:45 | 2026-10-02 09:45 | 187FS+1d |  |  | 114.5d |  | start no earlier than 2026-09-26 09:00 | Тимофеев В | 8h |  |

| ID | WBS | Task | Type | Duration | Start | Finish | Predecessors | Complete | Remaining | Actual finish | Total slack | Constraint | Resources | Work | Actual work |
| --- | --- | --- | --- | --- | --- | --- | --- | --- | --- | --- | --- | --- | --- | --- | --- |
| 189 | 1.84 | **зависает диспелей на расходомере 2л** |  | 58.06d | 2026-08-11 09:00 A | 2026-10-20 09:30 |  | 82% | 10.56d |  | 101.53d |  |  | 2.75h | 2.25h |
| 190 | 1.84.1 | контроль поставки |  | 15min | 2026-08-11 09:00 A | 2026-08-11 09:15 A |  | 100% |  |  |  | start no earlier than 2026-08-11 09:00 | Домоводов К | 0.25h | 0.25h |
| 191 | 1.84.2 | замена кабель к монитору |  | 30min | 2026-08-19 09:00 A | 2026-08-19 09:30 A | 190 | 100% |  |  |  | start no earlier than 2026-08-19 09:00 | Домоводов К | 0.5h | 0.5h |
| 192 | 1.84.3 | объеденить минус шину контроллера с нулевым проводом оборудования ч/з резистор 10 Ом |  | 30min | 2026-10-20 09:00 | 2026-10-20 09:30 |  |  |  |  | 101.53d | start no earlier than 2026-10-20 09:00 | Дедов В | 0.5h |  |
| 193 | 1.84.4 | замена кабель от ЧП к контроллеру на экранированный |  | 30min | 2026-08-24 09:00 A | 2026-08-24 09:30 A |  | 100% |  |  |  | start no earlier than 2026-08-24 09:00 | Домоводов К | 0.5h | 0.5h |
| 194 | 1.84.5 | замена блок питания 5в |  | 1h | 2026-08-13 09:00 A | 2026-08-13 10:00 A |  | 100% |  |  |  | start no earlier than 2026-08-13 09:00 | Труфанов А | 1h | 1h |
| 195 | 1.85 | подключить розетку на правой ноге квадропака (отключить квадропак на 5 минут) |  | 2h | 2026-08-11 09:00 A | 2026-08-11 11:00 A |  | 100% |  |  |  | start no earlier than 2026-08-11 09:00 | Бобренок В | 2h | 2h |
| 196 | 1.86 | **перенос вентилятор охладителя линия2 в реверс, убрать шкаф** |  | 24.12d | 2026-08-18 09:00 A | 2026-09-16 10:00 A |  | 100% |  |  |  |  |  | 38.25h | 38.25h |
| 197 | 1.86.1 | проектирование рамы |  | 2d | 2026-08-19 09:00 A | 2026-08-20 18:00 A |  | 100% |  |  |  | start no earlier than 2026-08-19 09:00 | Зорькин В | 16h | 16h |
| 198 | 1.86.2 | чертеж рамы под вентилятор |  | 2h | 2026-08-18 09:00 A | 2026-08-18 11:00 A |  | 100% |  |  |  | start no earlier than 2026-08-18 09:00 | Зорькин В; Домоводов К | 4h | 4h |
| 199 | 1.86.3 | заявка вент фитинги |  | 1h | 2026-08-21 09:00 A | 2026-08-21 10:00 A | 198 | 100% |  |  |  | start no earlier than 2026-08-21 09:00 | Зорькин В | 1h | 1h |
| 200 | 1.86.4 | конроль поставки |  | 15min | 2026-09-09 09:00 A | 2026-09-09 09:15 A | 199FS+10d | 100% |  |  |  | start no earlier than 2026-09-09 09:00 | Зорькин В | 0.25h | 0.25h |
| 201 | 1.86.5 | сборка рама |  | 4h | 2026-09-07 09:00 A | 2026-09-07 13:00 A |  | 100% |  |  |  | start no earlier than 2026-09-07 09:00 | Некрасов А; Труфанов А | 8h | 8h |
| 202 | 1.86.6 | модернизация венттилятора/монтаж вентилляции |  | 4h | 2026-09-11 09:00 A | 2026-09-11 13:00 A | 201 | 100% |  |  |  | start no earlier than 2026-09-11 09:00 | Некрасов А; Труфанов А | 8h | 8h |
| 203 | 1.86.7 | Подключение улитки, монтаж щитка к стене |  | 1h | 2026-09-16 09:00 A | 2026-09-16 10:00 A |  | 100% |  |  |  | start no earlier than 2026-09-16 09:00 | Макаревич А | 1h | 1h |
| 204 | 1.87 | **ревизия красного смесителя 2 линия (просыпается мука)** |  | 34.03d | 2026-08-17 09:00 A | 2026-09-25 09:15 |  | 92% | 2.62d |  | 121.56d |  |  | 3.25h | 3h |
| 205 | 1.87.1 | подтянуть торцевое уплотнение смесителя |  | 30min | 2026-08-17 09:00 A | 2026-08-17 09:30 A |  | 100% |  |  |  | start no earlier than 2026-08-17 09:00 | Бундин В | 0.5h | 0.5h |
| 206 | 1.87.2 | запрос штатное уплотнеие у производителя / заявка |  | 30min | 2026-08-19 09:00 A | 2026-08-19 09:30 A |  | 100% |  |  |  | start no earlier than 2026-08-19 09:00 | Шуранов Ю | 0.5h | 0.5h |
| 207 | 1.87.3 | контроль поставки уплотнение торцевое вала |  | 15min | 2026-09-25 09:00 | 2026-09-25 09:15 | 206FS+5d |  |  |  | 121.56d | start no earlier than 2026-09-25 09:00 | Зорькин В | 0.25h |  |
| 208 | 1.87.4 | замена |  | 2h | 2026-09-01 09:00 A | 2026-09-01 11:00 A | 207FS+1d | 100% |  |  |  | start no earlier than 2026-09-04 09:00 | Тимофеев В | 2h | 2h |
| 209 | 1.88 | шум зл двигателя 2 линия / смазка |  | 1h | 2026-08-10 08:00 A | 2026-08-10 10:00 A |  | 100% |  |  |  | start no earlier than 2026-08-10 08:00 | Тимофеев В | 1h | 1h |
| 210 | 1.89 | натяжка транспортер №2 линия 2 |  | 2h | 2026-08-12 09:00 A | 2026-08-12 11:00 A |  | 100% |  |  |  | start no earlier than 2026-08-12 09:00 | Тимофеев В | 2h | 2h |
| 211 | 1.90 | монтаж- подключение внутреннего блока кондиционера |  | 2h | 2026-08-05 09:00 A | 2026-08-05 11:00 A |  | 100% |  |  |  | start no earlier than 2026-08-05 09:00 | Труфанов А; Тимофеев В | 4h | 4h |
| 212 | 1.91 | **теко 0,4 -восстановить или заменить блок для тепловухи** |  | 1.12d? | 2026-08-04 09:00 A | 2026-08-05 10:00 |  | 100% |  | 2026-08-05 18:00 |  |  | Макаревич А | 17h | 17h |
| 213 | 1.91.1 | проверить подключение транспортера и тепловуху |  | 1d? | 2026-08-05 09:00 A | 2026-08-05 18:00 A |  | 100% |  |  |  | start no earlier than 2026-08-05 09:00 | Шуранов Ю | 8h | 8h |
| 214 | 1.92 | замена перегоревших светильников, монтаж доп. Светильников (Шуранов- покажу) |  | 4h | 2026-08-05 09:00 A | 2026-08-05 13:00 A |  | 100% |  |  |  | start no earlier than 2026-08-12 09:00 | Труфанов А; Тимофеев В | 8h | 8h |
| 215 | 1.93 | включить мухоловку 1 линия экструдер | manual | 0.5h | 2026-08-02 09:00 A | 2026-08-02 09:30 A |  | 100% |  |  |  | start no earlier than 2026-08-02 09:00 | Бобренок В | 0.5h | 0.5h |
| 216 | 1.94 | пропадает питание на весах смесителя 2 линия- проверить | manual | 1h | 2026-08-01 09:00 A | 2026-08-01 10:00 A |  | 100% |  |  |  | start no earlier than 2026-08-01 09:00 | Бундин В | 1h | 1h |
| 217 | 1.95 | эксперимент с лейкой жиры |  | 2h | 2026-08-06 09:00 A | 2026-08-06 11:00 A |  | 100% |  |  |  | start no earlier than 2026-08-07 09:00 | Тимофеев В | 2h | 2h |
| 218 | 1.96 | камера над компрессором снять и поменять (камеры у нас в кабинете) |  | 1h | 2026-08-03 09:00 A | 2026-08-03 10:00 A |  | 100% |  |  |  | start no earlier than 2026-08-03 09:00 | Макаревич А; Тимофеев В | 2h | 2h |
| 219 | 1.97 | на мезонине смотрит на квадропак, поменять и сделать чуть ниже обзор |  | 1h | 2026-08-03 09:00 A | 2026-08-03 10:00 A |  | 100% |  |  |  | start no earlier than 2026-08-03 09:00 | Макаревич А; Тимофеев В | 2h | 2h |
| 220 | 1.98 | камера 1 линия повернуть чуть правее и приподнять |  | 1h | 2026-08-03 09:00 A | 2026-08-03 10:00 A |  | 100% |  |  |  | start no earlier than 2026-08-03 09:00 | Макаревич А; Тимофеев В | 2h | 2h |
| 221 | 1.99 | камера на углу, где вывозят готовую продукцию с люльки поменять (камеры у нас в кабинете) |  | 2h | 2026-08-03 09:00 A | 2026-08-03 11:00 A |  | 100% |  |  |  | start no earlier than 2026-08-03 09:00 | Макаревич А; Тимофеев В | 4h | 4h |
| 222 | 1.100 | повесить камеру над входом в фасовку, чтобы смотрела на коридор и как обрабатывают руки, монтаж кабеля |  | 3h | 2026-08-03 09:00 A | 2026-08-03 12:00 A |  | 100% |  |  |  | start no earlier than 2026-08-03 09:00 | Макаревич А; Тимофеев В | 6h | 6h |

| ID | WBS | Task | Type | Duration | Start | Finish | Predecessors | Complete | Remaining | Total slack | Free slack | Constraint | Resources | Work | Actual work |
| --- | --- | --- | --- | --- | --- | --- | --- | --- | --- | --- | --- | --- | --- | --- | --- |
| 223 | 1.101 | **снять камеру зона экструдера и повесить на жирах со стороны экструдера, монтаж кабель** |  | 0.12d | 2026-09-09 09:00 A | 2026-09-09 10:00 A |  | 100% |  |  |  |  |  | 2h | 2h |
| 224 | 1.101.1 | на мойке попробовать снять камеру |  | 1h | 2026-09-09 09:00 A | 2026-09-09 10:00 A |  | 100% |  |  |  | start no earlier than 2026-09-09 09:00 | Труфанов А; Некрасов А | 2h | 2h |
| 225 | 1.102 | открутить полочку на столе на жирах, сделать ребра жесткости |  | 1h | 2026-07-31 09:00 A | 2026-07-31 10:00 A |  | 100% |  |  |  | start no earlier than 2026-07-31 08:00 | Бундин В | 1h | 1h |
| 226 | 1.103 | слив конденсата с компрессора и продуть радиаторы и фильтры |  | 1h | 2026-07-31 08:00 A | 2026-07-31 10:00 A |  | 100% |  |  |  | start no earlier than 2026-07-31 08:00 | Тимофеев В | 1h | 1h |
| 227 | 1.104 | Ревизия головы от Нотис/заключение |  | 1h | 2026-07-27 08:00 A | 2026-07-27 10:00 A |  | 100% |  |  |  | start no earlier than 2026-07-27 08:00 | Дедов В | 1h | 1h |
| 228 | 1.105 | Снять клавиатуру с головы нотис, подготовить ее к замене лежит на верстаке |  | 30min | 2026-07-29 08:00 A | 2026-07-29 09:30 A |  | 100% |  |  |  | start no earlier than 2026-07-29 08:00 | Дедов В | 0.5h | 0.5h |
| 229 | 1.106 | Ремонт клавиатуры от головы нотис, клаву получить на складе, голову взять у нас в кабинете |  | 1h | 2026-09-01 09:00 A | 2026-09-01 10:00 A |  | 100% |  |  |  | start no earlier than 2026-09-01 08:00 | Бундин В | 1h | 1h |
| 230 | 1.107 | **ремонт кондиционер зона фасовки** |  | 0.5d | 2026-07-16 09:00 A | 2026-07-16 13:00 A |  | 100% |  |  |  |  |  | 6h | 6h |
| 231 | 1.107.1 | демонтаж внутреннего блока |  | 2h | 2026-07-16 09:00 A | 2026-07-16 11:00 A |  | 100% |  |  |  | start no earlier than 2026-07-16 09:00 | Некрасов А; Труфанов А | 4h | 4h |
| 232 | 1.107.2 | разборка, отделить испаритель от рамы |  | 1h | 2026-07-16 11:00 A | 2026-07-16 12:00 A | 231 | 100% |  |  |  | start no earlier than 2026-07-15 09:00 | Бундин В | 1h | 1h |
| 233 | 1.107.3 | опресовка в воде |  | 1h | 2026-07-16 12:00 A | 2026-07-16 13:00 A | 232 | 100% |  |  |  | start no earlier than 2026-07-15 09:00 | Бундин В | 1h | 1h |
| 234 | 1.108 | редуктор конвейера выгрузки пакетов квадропак -> обеспечить гибкое соединеине к раме, жесткое будет ломать либо вал либо редутор |  | 2h | 2026-07-16 09:00 A | 2026-07-16 11:00 A |  | 100% |  |  |  | start no earlier than 2026-07-16 09:00 | Некрасов А | 2h | 2h |
| 235 | 1.109 | **выполнить смотровые люки состояния цепи средниий и верхние этажи. На торцевой крышке с стороны экструдера.** |  | 37d | 2026-07-14 09:00 A | 2026-09-02 18:00 |  | 13% | 32.29d | 142.59d |  |  |  | 9.17h | 1.17h |
| 236 | 1.109.1 | заявка шарниры нерж + бугельный зажим |  | 1h | 2026-07-14 09:00 A | 2026-07-14 10:00 A |  | 100% |  |  |  | start no earlier than 2026-07-14 08:00 | Домоводов К | 1h | 1h |
| 237 | 1.109.2 | контроль доставка |  | 10min | 2026-08-17 09:00 A | 2026-08-17 09:10 A | 236FS+7d | 100% |  |  |  | start no earlier than 2026-08-17 09:00 | Шуранов Ю | 0.17h | 0.17h |
| 238 | 1.109.3 | монтаж 1 линия |  | 4h | 2026-09-02 09:00 | 2026-09-02 13:00 | 237FS+1d |  |  | 142.59d | 0d | start no earlier than 2026-09-02 09:00 | Макаревич А | 4h |  |
| 239 | 1.109.4 | монтаж 2 линия |  | 4h | 2026-09-02 14:00 | 2026-09-02 18:00 | 238 |  |  | 142.59d |  | start no earlier than 2026-07-14 08:00 | Макаревич А | 4h |  |
| 240 | 1.110 | монтаж светильник под площадку дозатора квадропака |  | 4h | 2026-07-10 09:00 A | 2026-07-10 13:00 A |  | 100% |  |  |  | start no earlier than 2026-07-10 09:00 | Бобренок В | 4h | 4h |
| 241 | 1.111 | **замена вентилятор вытяжка с экструдеров** |  | 2.25d | 2026-07-13 09:00 A | 2026-07-15 11:00 A |  | 100% |  |  |  |  |  | 13h | 13h |
| 242 | 1.111.1 | подключение воздуховоды |  | 4h | 2026-07-13 09:00 A | 2026-07-13 13:00 A |  | 100% |  |  |  | start no earlier than 2026-07-13 09:00 | Некрасов А; Бундин В | 8h | 8h |
| 243 | 1.111.2 | установить крыльчатку на мотор |  | 1h | 2026-07-14 09:00 A | 2026-07-14 10:00 A |  | 100% |  |  |  | start no earlier than 2026-07-14 08:00 | Труфанов А | 1h | 1h |
| 244 | 1.111.3 | устарнить причину вибрации мотора |  | 2h | 2026-07-15 09:00 A | 2026-07-15 11:00 A |  | 100% |  |  |  | start no earlier than 2026-07-15 09:00 | Некрасов А; Труфанов А | 4h | 4h |
| 245 | 1.112 | **сборка дозатор на квадропак** |  | 72.25d | 2026-07-09 08:00 A | 2026-10-07 11:00 |  | 96% | 3.15d | 110.34d |  |  |  | 58.83h | 56.83h |
| 246 | 1.112.1 | установить переключатель блокировки сброса дозатором |  | 30min | 2026-08-15 09:00 A | 2026-08-17 09:30 A |  | 100% |  |  |  | start no earlier than 2026-08-15 09:00 | Труфанов А | 0.5h | 0.5h |
| 247 | 1.112.2 | упорядочить схему |  | 30min | 2026-08-15 09:00 A | 2026-08-17 09:30 A |  | 100% |  |  |  | start no earlier than 2026-08-15 09:00 | Труфанов А | 0.5h | 0.5h |
| 248 | 1.112.3 | транспортировка дозатора в слесарку |  | 1h | 2026-08-04 08:00 A | 2026-08-04 10:00 A |  | 100% |  |  |  | start no earlier than 2026-08-04 08:00 | Труфанов А; Тимофеев В | 2h | 2h |
| 249 | 1.112.4 | установить розетку для дозатора. Вывод кабель сверлить платформу, что бы он был не под ногами и удобен при уборке |  | 2h | 2026-07-09 08:00 A | 2026-07-09 11:00 A |  | 100% |  |  |  | start no earlier than 2026-07-09 08:00 | Бобренок В | 2h | 2h |
| 250 | 1.112.5 | закрепить монитор фото Зорькин |  | 2h | 2026-07-09 08:00 A | 2026-07-09 11:00 A |  | 100% |  |  |  | start no earlier than 2026-07-09 08:00 | Бобренок В | 2h | 2h |
| 251 | 1.112.6 | подключение дозатора к машине / поиск кабеля в 3 цехе / изучение документации |  | 4h | 2026-07-14 09:00 A | 2026-07-14 13:00 A |  | 100% |  |  |  | start no earlier than 2026-07-14 09:00 | Труфанов А | 4h | 4h |
| 252 | 1.112.7 | подключить реле аварии дозатора паралельно датчику отсутствия пакета квадропака (схема прилагается) |  | 1h | 2026-08-12 09:00 A | 2026-08-12 10:00 A | 251 | 100% |  |  |  | start no earlier than 2026-08-12 09:00 | Труфанов А | 1h | 1h |
| 253 | 1.112.8 | калибровка весов и разгон наполнения, тестирование работы |  | 4h | 2026-08-12 09:00 A | 2026-08-12 13:00 A |  | 100% |  |  |  | start no earlier than 2026-08-12 09:00 | Труфанов А | 4h | 4h |
| 254 | 1.112.9 | монтаж кабель выравнивания потенциалов площадка дозатора и площадка квадропака |  | 30min | 2026-08-15 09:00 A | 2026-08-17 09:30 A |  | 100% |  |  |  | start no earlier than 2026-08-15 09:00 | Труфанов А | 0.5h | 0.5h |
| 255 | 1.112.10 | контроль поставки маткериал | milestone | 0d | 2026-08-27 09:00 A | 2026-08-27 09:00 A |  | 100% |  |  |  | start no earlier than 2026-08-27 09:00 | Зорькин В |  |  |
| 256 | 1.112.11 | тестирование весов / разгон |  | 2h | 2026-09-14 09:00 A | 2026-09-14 11:00 A | 255 | 100% |  |  |  | start no earlier than 2026-09-14 09:00 | Зорькин В | 2h | 2h |
| 257 | 1.112.12 | подключить синхронизацию пуска дозатора паралельно катушки открытия заслонки квадропака |  | 4h | 2026-08-04 11:00 A | 2026-08-04 16:00 A | 252 | 100% |  |  |  | start no earlier than 2026-07-16 09:00 | Труфанов А | 4h | 4h |
| 258 | 1.112.13 | монтаж перила на площадку - подготовка |  | 2h | 2026-08-14 09:00 A | 2026-08-14 11:00 A |  | 100% |  |  |  | start no earlier than 2026-08-14 09:00 | Тимофеев В | 2h | 2h |
| 259 | 1.112.14 | монтаж перила на площадку |  | 2h | 2026-08-17 09:00 A | 2026-08-17 11:00 A |  | 100% |  |  |  | start no earlier than 2026-08-17 09:00 | Тимофеев В; Бобренок В | 4h | 4h |
| 260 | 1.112.15 | сверлить для крепления перил |  | 2h | 2026-09-04 09:00 A | 2026-09-04 11:00 A | 256 | 100% |  |  |  | start no earlier than 2026-09-04 09:00 | Макаревич А | 2h | 2h |
| 261 | 1.112.16 | закрыть зад крышку |  | 20min | 2026-09-13 09:00 A | 2026-09-13 09:20 A |  | 100% |  |  |  | start no earlier than 2026-09-13 09:00 | Дедов В | 0.33h | 0.33h |
| 262 | 1.112.17 | сборка дозатор |  | 2h | 2026-09-25 09:00 A | 2026-09-25 11:00 A |  | 100% |  |  |  | start no earlier than 2026-09-28 09:00 | Труфанов А; Некрасов А | 4h | 4h |
| 263 | 1.112.18 | тест компонентов |  | 1h | 2026-09-23 09:00 A | 2026-09-23 10:00 A |  | 100% |  |  |  | start no earlier than 2026-09-23 09:00 | Зорькин В | 1h | 1h |
| 264 | 1.112.19 | установить на пружины раму дозатора + квеличить её массу |  | 4h | 2026-09-25 09:00 A | 2026-09-25 13:00 A |  | 100% |  |  |  | start no earlier than 2026-09-25 08:00 | Некрасов А; Труфанов А | 8h | 8h |
| 265 | 1.112.20 | покупка за нал / найти доп пружины |  | 1h | 2026-09-28 09:00 A | 2026-09-28 10:00 A |  | 100% |  |  |  | start no earlier than 2026-09-28 09:00 | Зорькин В | 1h | 1h |
| 266 | 1.112.21 | увеличить доп пружины, сжались ноль |  | 4h | 2026-10-01 09:00 A | 2026-10-01 13:00 A |  | 100% |  |  |  | start no earlier than 2026-10-02 09:00 | Некрасов А; Труфанов А | 8h | 8h |
| 267 | 1.112.22 | монтаж кнопка дозатор ОН/ОФФ |  | 1h | 2026-09-30 09:00 A | 2026-09-30 10:00 A | 261 | 100% |  |  |  | start no earlier than 2026-09-30 09:00 | Труфанов А | 1h | 1h |
| 268 | 1.112.23 | закрыть металлом пустые места между площадками квадропак и дозатор |  | 2h | 2026-10-07 09:00 | 2026-10-07 11:00 | 260 |  |  | 110.34d |  | start no earlier than 2026-10-07 09:00 | Тимофеев В | 2h |  |
| 269 | 1.112.24 | Сделать перегородки в бункер дозатора для увеличения объема секций |  | 3h | 2026-09-02 09:00 A | 2026-09-02 12:00 A |  | 100% |  |  |  | start no earlier than 2026-09-04 09:00 | Тимофеев В | 3h | 3h |
| 270 | 1.113 | навести сортиировка / порядок пандус 1ц |  | 4h | 2026-07-10 09:00 A | 2026-07-10 13:00 A |  | 100% |  |  |  | start no earlier than 2026-07-10 09:00 | Тимофеев В; Амрулин Р | 7h | 7h |

| ID | WBS | Task | Type | Duration | Start | Finish | Predecessors | Complete | Remaining | Actual start | Actual finish | Total slack | Free slack | Constraint | Resources | Work | Actual work |
| --- | --- | --- | --- | --- | --- | --- | --- | --- | --- | --- | --- | --- | --- | --- | --- | --- | --- |
| 271 | 1.114 | **Кондиционер зоны экструдера** |  | 0.5d | 2026-07-07 09:00 A | 2026-07-07 13:00 A |  | 100% |  |  |  |  |  |  |  | 4h | 4h |
| 272 | 1.114.1 | Чистка сливной магистрали |  | 4h | 2026-07-07 09:00 A | 2026-07-07 13:00 A |  | 100% |  |  |  |  |  | start no earlier than 2026-07-07 09:00 | Бундин В | 4h | 4h |
| 273 | 1.115 | **установить датчик давления на экструдер** |  | 49.53d | 2026-07-06 08:00 A | 2026-09-10 14:15 |  | 68% | 15.89d |  |  | 136.06d |  |  |  | 15.25h | 11h |
| 274 | 1.115.1 | контроль поставка фитинги |  | 15min | 2026-09-10 09:00 | 2026-09-10 09:15 |  |  |  |  |  | 136.06d | 0d | start no earlier than 2026-09-10 09:00 | Зорькин В | 0.25h |  |
| 275 | 1.115.2 | монтаж кронштейны для фиксации датчикоа давления 1+2 линия |  | 2h | 2026-07-10 09:00 A | 2026-07-10 11:00 A |  | 100% |  |  |  |  |  | start no earlier than 2026-07-10 09:00 | Макаревич А; Некрасов А | 4h | 4h |
| 276 | 1.115.3 | установить датчики давления через гидравлические шланги |  | 2h | 2026-07-06 08:00 A | 2026-07-06 11:00 A |  | 100% |  |  |  |  |  | start no earlier than 2026-07-06 08:00 | Дедов В | 2h | 2h |
| 277 | 1.115.4 | доработка кожух нож узла для закрытия |  | 2h | 2026-07-07 09:00 A | 2026-07-07 11:00 A |  | 100% |  |  |  |  |  | start no earlier than 2026-07-07 09:00 | Бобренок В | 2h | 2h |
| 278 | 1.115.5 | Прокинуть кабель ШВВП 2х0,75 от датчиков давления до регистраторов, сделать по красоте. |  | 3h | 2026-07-10 09:00 A | 2026-07-10 12:00 A |  | 100% |  |  |  |  |  | start no earlier than 2026-07-10 09:00 | Бобренок В | 3h | 3h |
| 279 | 1.115.6 | подключение датчиков давления к регистратору |  | 4h | 2026-09-10 09:15 | 2026-09-10 14:15 | 274 |  |  |  |  | 136.06d |  | start no earlier than 2026-09-02 09:00 | Домоводов К | 4h |  |
| 280 | 1.116 | печь №1 ревизия/замена перемычек |  | 4h | 2026-07-04 09:00 A | 2026-07-06 13:00 A |  | 100% |  |  |  |  |  | start no earlier than 2026-07-04 09:00 | Макаревич А | 4h | 4h |
| 281 | 1.117 | печь №2 ревизия/замена перемычек |  | 2h | 2026-07-16 09:00 A | 2026-07-16 11:00 A |  | 100% |  |  |  |  |  | start no earlier than 2026-07-16 09:00 | Бобренок В | 2h | 2h |
| 282 | 1.118 | **заменить амперметры неиспрвные на ШУ 1 и 2 линия (они на складе приехали сегодня новые посмотреть фото в выдаче)** |  | 1h? | 2026-09-04 09:00 | 2026-09-04 10:00 |  | 100% |  | 2026-09-05 09:00 | 2026-09-11 13:00 |  |  |  |  | 6h | 6h |
| 283 | 1.118.1 | монтаж - оказалить не те |  | 2h | 2026-09-05 09:00 A | 2026-09-05 11:00 A |  | 100% |  |  |  |  |  | start no earlier than 2026-09-05 09:00 | Дедов В | 2h | 2h |
| 284 | 1.118.2 | контроль датч тока | milestone | 0d | 2026-09-09 09:00 A | 2026-09-09 09:00 A |  | 100% |  |  |  |  |  | start no earlier than 2026-09-09 09:00 | Зорькин В |  |  |
| 285 | 1.118.3 | монтаж датчиковтока на 2л |  | 4h | 2026-09-11 09:00 A | 2026-09-11 13:00 A |  | 100% |  |  |  |  |  | start no earlier than 2026-09-11 09:00 | Макаревич А | 4h | 4h |
| 286 | 1.119 | **ставим 2 частотника на вентиляторы вытяжки с печек №1 и 2** |  | 0.5d | 2026-07-02 09:00 A | 2026-07-02 13:00 A |  | 100% |  |  |  |  |  |  |  | 4h | 4h |
| 287 | 1.119.1 | подключение к улиткам вытяжки 1 и 2 линия (помошника дадим) |  | 4h | 2026-07-02 09:00 A | 2026-07-02 13:00 A |  | 100% |  |  |  |  |  | start no earlier than 2026-07-02 09:00 | Тимофеев В | 4h | 4h |
| 288 | 1.120 | подключить частотный привод вентилятор на площадке жиротопки |  | 4h | 2026-07-14 09:00 A | 2026-07-14 13:00 A |  | 100% |  |  |  |  |  | start no earlier than 2026-07-14 09:00 | Дедов В | 4h | 4h |
| 289 | 1.121 | установка частотника для улитку в жиротопке (по телефону расскажу) |  | 4h | 2026-07-02 09:00 A | 2026-07-02 13:00 A |  | 100% |  |  |  |  |  | start no earlier than 2026-07-02 09:00 | Дедов В | 4h | 4h |
| 290 | 1.122 | заменить шнеки и гильзы на 2 линии (ставим усиленные, 2 гильзы) по уровню (операторы помогут) | manual | 10h | 2026-07-05 09:00 A | 2026-07-06 11:00 A |  | 100% |  |  |  |  |  | start no earlier than 2026-07-05 09:00 | Бундин В | 10h | 10h |
| 291 | 1.123 | **поменять фильтрующую ткань на фильтрах кондиционеров 1 цех** |  | 0.25d | 2026-07-01 09:00 A | 2026-07-01 11:00 A |  | 100% |  |  |  |  |  |  |  | 4h | 4h |
| 292 | 1.123.1 | установка фильтров закрываем внутренние блоки |  | 2h | 2026-07-01 09:00 A | 2026-07-01 11:00 A |  | 100% |  |  |  |  |  | start no earlier than 2026-07-01 09:00 | Макаревич А; Некрасов А | 4h | 4h |
| 293 | 1.124 | изготовление кронштейна для установки вентилятора крепим на место в зоне экструдера |  | 2h | 2026-06-30 09:00 A | 2026-06-30 11:00 A |  | 100% |  |  |  |  |  | start no earlier than 2026-06-30 09:00 | Некрасов А; Тимофеев В | 4h | 4h |
| 294 | 1.125 | снять на всех валах барабанов колеса, будем покрывать полиуретаном |  | 3h | 2026-06-29 09:00 A | 2026-06-29 12:00 A |  | 100% |  |  |  |  |  | start no earlier than 2026-06-29 09:00 | Бундин В | 3h | 3h |

| ID | WBS | Task | Type | Duration | Start | Finish | Predecessors | Complete | Actual start | Actual finish | Total slack | Free slack | Constraint | Resources | Work | Actual work |
| --- | --- | --- | --- | --- | --- | --- | --- | --- | --- | --- | --- | --- | --- | --- | --- | --- |
| 295 | 1.126 | **сборка раковина нерж для мойки конвейер** |  | 7.25d? | 2026-10-12 09:00 | 2026-10-21 11:00 |  |  |  |  | 100.34d |  |  |  | 34h |  |
| 296 | 1.126.1 | подготовить данные, оформить как проект / инициировать совещание |  | 2h | 2026-10-12 09:00 | 2026-10-12 11:00 |  |  |  |  | 100.34d | 0d | start no earlier than 2026-10-12 09:00 | Зорькин В | 2h |  |
| 297 | 1.126.2 | совещание с руководителями / фиксация решения |  | 1d? | 2026-10-13 11:00 | 2026-10-14 11:00 | 296FS+1d |  |  |  | 100.34d | 0d | start no earlier than 2026-08-31 09:00 | Зорькин В | 8h |  |
| 298 | 1.126.3 | подготовить чертеж раковины, проверить материал |  | 1d? | 2026-10-15 11:00 | 2026-10-16 11:00 | 297FS+1d |  |  |  | 100.34d | 0d | start no earlier than 2026-09-08 09:00 | Зорькин В | 8h |  |
| 299 | 1.126.4 | сборка |  | 2d | 2026-10-19 11:00 | 2026-10-21 11:00 | 298FS+1d |  |  |  | 100.34d |  | start no earlier than 2026-07-14 08:00 | Бундин В | 16h |  |
| 300 | 1.127 | ревизия шестеренок питателя 2 линия, если нужно замена с зип- питатель синий склад |  | 3h | 2026-06-29 09:00 A | 2026-06-29 12:00 A |  | 100% |  |  |  |  | start no earlier than 2026-06-29 09:00 | Бундин В | 3h | 3h |
| 301 | 1.128 | повесить полочки у ОТК в кабинете- крепеж по гипсокортону у меня на столе |  | 1h | 2026-06-26 09:00 A | 2026-06-26 10:00 A |  | 100% |  |  |  |  | start no earlier than 2026-06-26 09:00 | Тимофеев В; Дедов В | 2h | 2h |
| 302 | 1.129 | нормально прикрутить светильник на стойке со сканером QR- кодов на фасовке, если нужно заменить на другой | manual | 2h | 2026-07-03 09:00 A | 2026-07-03 11:00 A |  | 100% |  |  |  |  | start no earlier than 2026-07-03 09:00 | Макаревич А | 2h | 2h |
| 303 | 1.130 | прикрутить розетку возле ШУ приточки |  | 1h | 2026-07-04 09:00 A | 2026-07-06 10:00 A |  | 100% |  |  |  |  | start no earlier than 2026-07-04 09:00 | Дедов В | 1h | 1h |
| 304 | 1.131 | заменить светильник 50Вт на жиротопке | manual | 2h | 2026-06-27 09:00 A | 2026-06-27 11:00 A |  | 100% |  |  |  |  | start no earlier than 2026-06-27 09:00 | Дедов В | 2h | 2h |
| 305 | 1.132 | мойка внутрених и внешних блоков керхером |  | 4h | 2026-06-24 09:00 A | 2026-06-24 13:00 A |  | 100% |  |  |  |  | start no earlier than 2026-06-24 09:00 | Тимофеев В; Дедов В | 8h | 8h |
| 306 | 1.133 | 1 линия средняя зона печи 115А |  | 2h | 2026-07-01 09:00 A | 2026-07-01 11:00 A |  | 100% |  |  |  |  | start no earlier than 2026-07-01 09:00 | Некрасов А | 2h | 2h |
| 307 | 1.134 | продуть внешний блок кондиционера (посередине) |  | 2h | 2026-06-24 09:00 A | 2026-06-24 11:00 A |  | 100% |  |  |  |  | start no earlier than 2026-06-24 09:00 | Тимофеев В | 2h | 2h |
| 308 | 1.135 | слить конденсат и продуть радиаторы на компрессоре |  | 1h | 2026-06-22 09:00 A | 2026-06-22 10:00 A |  | 100% |  |  |  |  | start no earlier than 2026-06-22 08:00 | Бундин В | 1h | 1h |
| 309 | 1.136 | взять ключи на складе и повесить возле каждого щитка | manual | 1h | 2026-07-05 09:00 A | 2026-07-05 10:00 A |  | 100% |  |  |  |  | start no earlier than 2026-07-05 09:00 | Бундин В | 1h | 1h |
| 310 | 1.137 | заменить монтажную коробку- пускатели улиток, зона экструдера | manual | 1h | 2026-06-30 09:00 A | 2026-06-30 10:00 A |  | 100% |  |  |  |  | start no earlier than 2026-06-30 09:00 | Бундин В | 1h | 1h |
| 311 | 1.138 | герметизация стыков в душевой женской, потечка воды | manual | 1h | 2026-06-21 09:00 A | 2026-06-21 10:00 A |  | 100% |  |  |  |  | start no earlier than 2026-06-21 09:00 | Бундин В | 1h | 1h |
| 312 | 1.139 | **вернуть колбу уровня подачи воды на 2 линию** |  | 1h? | 2026-06-26 09:00 | 2026-06-26 10:00 |  | 100% | 2026-06-29 09:00 | 2026-06-29 18:00 |  |  |  |  | 8h | 8h |
| 313 | 1.139.1 | найти колбу |  | 1d? | 2026-06-29 09:00 A | 2026-06-29 18:00 A |  | 100% |  |  |  |  | start no earlier than 2026-06-29 09:00 | Шуранов Ю | 8h | 8h |
| 314 | 1.140 | **изготовить шило для экструдерщиков, они подскажут** |  | 1h? | 2026-06-26 09:00 | 2026-06-26 10:00 |  |  |  |  |  |  |  |  | 0.25h |  |
| 315 | 1.140.1 | заказать спицы не пустые |  | 15min | 2026-09-01 09:00 | 2026-09-01 09:15 |  |  |  |  | 144.56d |  | start no earlier than 2026-09-01 09:00 | Шуранов Ю | 0.25h |  |
| 316 | 1.141 | отключить кондеры и продуть внешние блоки кондиционеров 1 ц. |  | 2h | 2026-06-20 09:00 A | 2026-06-22 11:00 A |  | 100% |  |  |  |  | start no earlier than 2026-06-20 09:00 | Бундин В | 2h | 2h |
| 317 | 1.142 | **померить верхний воздуховод и трассу для подключения новой улитки** |  | 1d? | 2026-06-22 09:00 A | 2026-06-22 18:00 A |  | 100% |  |  |  |  |  | Тимофеев В; Зорькин В | 24h | 24h |
| 318 | 1.142.1 | заказать переходник |  | 1d? | 2026-06-22 09:00 A | 2026-06-22 18:00 A |  | 100% |  |  |  |  | start no earlier than 2026-06-22 08:00 | Зорькин В | 8h | 8h |
| 319 | 1.143 | слив конденсата с компрессора и продуть радиаторы и фильтры |  | 1h | 2026-06-14 09:00 A | 2026-06-15 10:00 A |  | 100% |  |  |  |  | start no earlier than 2026-06-14 09:00 | Бобренок В | 1h | 1h |

| ID | WBS | Task | Duration | Start | Finish | Predecessors | Complete | Total slack | Constraint | Resources | Work | Actual work |
| --- | --- | --- | --- | --- | --- | --- | --- | --- | --- | --- | --- | --- |
| 320 | 1.144 | **закрепить редуктор к отводящему транспортеру** | 1d? | 2026-06-17 09:00 A | 2026-06-17 18:00 A |  | 100% |  |  | Некрасов А | 16h | 16h |
| 321 | 1.144.1 | сделать надежное крепление на мойке | 1d? | 2026-06-17 09:00 A | 2026-06-17 18:00 A |  | 100% |  | start no earlier than 2026-06-17 09:00 | Бундин В | 8h | 8h |
| 322 | 1.145 | заменить сальник на вакууматоре (редуктор) | 1h | 2026-06-11 09:00 A | 2026-06-11 10:00 A |  | 100% |  | start no earlier than 2026-06-11 09:00 | Тимофеев В | 1h | 1h |
| 323 | 1.146 | законтрогаить шпильки-ножки запайщиков | 1h | 2026-06-12 09:00 A | 2026-06-12 10:00 A |  | 100% |  | start no earlier than 2026-06-12 09:00 | Бундин В | 1h | 1h |
| 324 | 1.147 | настроить подачу масла на квадропаке по пневмо системе (спросить у Дедова) | 1h | 2026-06-10 09:00 A | 2026-06-10 10:00 A |  | 100% |  | start no earlier than 2026-06-10 09:00 | Труфанов А | 1h | 1h |
| 325 | 1.148 | **проверить давление в гидроаккумуляторе водоподготовки** | 0.25d | 2026-06-10 09:00 A | 2026-06-10 11:00 A |  | 100% |  |  | Дедов В | 4h | 4h |
| 326 | 1.148.1 | замена мембраны | 2h | 2026-06-10 09:00 A | 2026-06-10 11:00 A |  | 100% |  | start no earlier than 2026-06-10 09:00 | Дедов В | 2h | 2h |
| 327 | 1.149 | модернизация опроры пневмоцилиндра встряживателя №1 квадропак | 4h | 2026-10-19 09:00 | 2026-10-19 13:00 |  |  | 102.09d | start no earlier than 2026-10-19 09:00 | Некрасов А | 4h |  |
| 328 | 1.150 | **готовить в зип сетку оборотную для печей (нижняя)** | 0.5d | 2026-06-09 09:00 A | 2026-06-09 13:00 A |  | 100% |  |  |  | 4.5h | 4.5h |
| 329 | 1.150.1 | проверка материал | 30min | 2026-06-09 09:00 A | 2026-06-09 09:30 A |  | 100% |  | start no earlier than 2026-06-09 09:00 | Тимофеев В | 0.5h | 0.5h |
| 330 | 1.150.2 | сборка | 4h | 2026-06-09 09:00 A | 2026-06-09 13:00 A |  | 100% |  | start no earlier than 2026-06-09 09:00 | Тимофеев В | 4h | 4h |
| 331 | 1.151 | подключить частотный привод насос жир 2 линия/ при остановке | 2h | 2026-06-07 09:00 A | 2026-06-08 11:00 A |  | 100% |  | start no earlier than 2026-06-07 09:00 | Дедов В | 2h | 2h |
| 332 | 1.152 | **жиротопка текет сальник насоса** | 36.03d? | 2026-06-28 09:00 A | 2026-08-18 09:15 A |  | 100% |  |  |  | 18.5h | 18.5h |
| 333 | 1.152.1 | замена насос из зип | 1h | 2026-06-28 09:00 A | 2026-06-29 10:00 A |  | 100% |  | start no earlier than 2026-06-28 09:00 | Дедов В | 1h | 1h |
| 334 | 1.152.2 | замена сальник на снятом насосе | 1h | 2026-06-28 10:00 A | 2026-06-29 10:00 A | 333 | 100% |  | start no earlier than 2026-06-17 09:00 | Дедов В | 1h | 1h |
| 335 | 1.152.3 | заказать | 1d? | 2026-06-29 09:00 A | 2026-06-29 18:00 A |  | 100% |  | start no earlier than 2026-06-29 09:00 | Шуранов Ю | 8h | 8h |
| 336 | 1.152.4 | ревизия прогресса утечки | 15min | 2026-08-05 09:00 A | 2026-08-05 09:15 A |  | 100% |  | start no earlier than 2026-08-05 09:00 | Дедов В | 0.25h | 0.25h |
| 337 | 1.152.5 | контроль наличия сальника | 15min | 2026-08-18 09:00 A | 2026-08-18 09:15 A |  | 100% |  | start no earlier than 2026-08-18 09:00 | Шуранов Ю | 0.25h | 0.25h |
| 338 | 1.152.6 | замена сальника | 1d? | 2026-08-05 09:00 A | 2026-08-05 18:00 A |  | 100% |  | start no earlier than 2026-08-05 09:00 | Дедов В | 8h | 8h |
| 339 | 1.153 | ремонт весов напольный (палетные) проверить кабель на обрыв | 3h | 2026-06-11 09:00 A | 2026-06-11 12:00 A |  | 100% |  | start no earlier than 2026-06-11 09:00 | Дедов В | 3h | 3h |
| 340 | 1.154 | печь №2 проверка токов, тен, замена | 2h | 2026-06-04 09:00 A | 2026-06-04 11:00 A |  | 100% |  | start no earlier than 2026-06-04 09:00 | Некрасов А; Бундин В | 4h | 4h |
| 341 | 1.155 | изготовление шторки после приемного лотка циклона | 2h | 2026-06-04 09:00 A | 2026-06-04 11:00 A |  | 100% |  | start no earlier than 2026-06-04 09:00 | Бундин В | 2h | 2h |
| 342 | 1.156 | **на аппликаторе настроить печать QR-кода на пакет, чтобы не размазывало (по тел. Объясню)** | 3.12d | 2026-06-04 09:00 A | 2026-06-09 10:00 A |  | 100% |  |  |  | 2h | 2h |
| 343 | 1.156.1 | тест (подключить доп. Датчик -настроить печать без размытия, картридж находиться у Луговских подписанный) | 1h | 2026-06-04 09:00 A | 2026-06-04 10:00 A |  | 100% |  | start no earlier than 2026-06-04 09:00 | Дедов В | 1h | 1h |
| 344 | 1.156.2 | тест | 1h | 2026-06-09 09:00 A | 2026-06-09 10:00 A |  | 100% |  | start no earlier than 2026-06-09 09:00 | Тимофеев В | 1h | 1h |
| 345 | 1.157 | целкает аппликатор -разобраться, устранить | 1h | 2026-06-03 08:00 A | 2026-06-03 10:00 A |  | 100% |  | start no earlier than 2026-06-03 08:00 | Дедов В | 1h | 1h |

| ID | WBS | Task | Type | Duration | Start | Finish | Predecessors | Complete | Remaining | Total slack | Free slack | Constraint | Resources | Work | Actual work |
| --- | --- | --- | --- | --- | --- | --- | --- | --- | --- | --- | --- | --- | --- | --- | --- |
| 346 | 1.158 | **установить резервную трубку/штангу с форсункой на подачу жира** |  | 31d | 2026-09-08 09:00 A | 2026-10-09 18:00 |  | 10% | 27.9d | 107.59d |  |  |  | 10h | 1h |
| 347 | 1.158.1 | проект-схема разработать |  | 1h | 2026-09-08 09:00 A | 2026-09-08 10:00 A |  | 100% |  |  |  | start no earlier than 2026-09-08 09:00 | Домоводов К | 1h | 1h |
| 348 | 1.158.2 | разработать спецкронштейн крепления 4х трубок |  | 1h | 2026-09-10 09:00 | 2026-09-10 10:00 |  |  |  | 127.47d | 19.88d | start no earlier than 2026-09-10 09:00 | Домоводов К | 1h |  |
| 349 | 1.158.3 | монтаж спец кронштенна |  | 1h | 2026-10-01 09:00 | 2026-10-01 10:00 | 348FS+1d |  |  | 107.59d | 0d | start no earlier than 2026-10-01 09:00 | Тимофеев В | 1h |  |
| 350 | 1.158.4 | заявка фитинги / тройники / краны / трубка |  | 1h | 2026-10-01 10:00 | 2026-10-01 11:00 | 347FS+1d, 349 |  |  | 107.59d | 0d | start no earlier than 2026-06-03 08:00 | Зорькин В | 1h |  |
| 351 | 1.158.5 | доставка контроль | milestone | 0d | 2026-10-07 11:00 | 2026-10-07 11:00 | 350FS+5d |  |  | 107.59d | 0d | start no earlier than 2026-06-03 08:00 | Зорькин В |  |  |
| 352 | 1.158.6 | сборка в мастерской |  | 4h | 2026-10-08 11:00 | 2026-10-08 16:00 | 351FS+1d |  |  | 107.59d | 0d | start no earlier than 2026-06-15 09:00 | Тимофеев В | 4h |  |
| 353 | 1.158.7 | монтаж на линию |  | 2h | 2026-10-09 16:00 | 2026-10-09 18:00 | 352FS+1d |  |  | 107.59d |  | start no earlier than 2026-06-03 08:00 | Тимофеев В | 2h |  |
| 354 | 1.159 | **установить автоматику запуска шнека + смеситель по датчику уровня сырья в бункере экструдера** |  | 10.4d? | 2026-10-19 09:00 | 2026-11-02 12:10 |  |  |  | 92.2d |  |  |  | 19.17h |  |
| 355 | 1.159.1 | разработка схема / компановка |  | 1h | 2026-10-19 09:00 | 2026-10-19 10:00 |  |  |  | 92.2d | 0d | start no earlier than 2026-10-19 09:00 | Домоводов К | 1h |  |
| 356 | 1.159.2 | заявка датчики / пускатели / эл щит |  | 2h | 2026-10-19 10:00 | 2026-10-19 12:00 | 355 |  |  | 92.2d | 0d | start no earlier than 2026-06-04 09:00 | Домоводов К | 2h |  |
| 357 | 1.159.3 | доставка контроль |  | 5min | 2026-10-28 12:00 | 2026-10-28 12:05 | 356FS+7d |  |  | 92.2d | 0d | start no earlier than 2026-06-03 08:00 | Зорькин В | 0.08h |  |
| 358 | 1.159.4 | контроль поставки |  | 5min | 2026-10-29 12:05 | 2026-10-29 12:10 | 357FS+1d |  |  | 92.2d | 0d | start no earlier than 2026-06-03 08:00 | Зорькин В | 0.08h |  |
| 359 | 1.159.5 | сборка ШУ |  | 1d? | 2026-10-29 12:10 | 2026-10-30 12:10 | 358 |  |  | 92.2d | 0d | start no earlier than 2026-06-24 09:00 | Дедов В | 8h |  |
| 360 | 1.159.6 | монтаж в линию |  | 1d? | 2026-10-30 12:10 | 2026-11-02 12:10 | 359 |  |  | 92.2d |  | start no earlier than 2026-06-03 08:00 | Дедов В | 8h |  |
| 361 | 1.160 | поставить на двигатели накопительных столов тепловые реле |  | 2h | 2026-06-15 09:00 | 2026-06-15 11:00 |  |  |  | 200.34d |  | start no earlier than 2026-06-15 09:00 | Дедов В | 2h |  |
| 362 | 1.161 | влагоотделитель крышки загрузки квадропак треснул- замена |  | 1h | 2026-06-10 09:00 | 2026-06-10 10:00 |  |  |  | 203.47d |  | start no earlier than 2026-06-10 09:00 | Дедов В | 1h |  |
| 363 | 1.162 | установка ПЧ на насос жира 2 линия |  | 2h | 2026-06-02 09:00 A | 2026-06-02 11:00 A |  | 100% |  |  |  | start no earlier than 2026-06-02 09:00 | Дедов В | 2h | 2h |
| 364 | 1.163 | установка ПЧ на барабаны жиров 1 и 2 линия |  | 2h | 2026-06-02 09:00 A | 2026-06-02 11:00 A |  | 100% |  |  |  | start no earlier than 2026-06-02 09:00 | Дедов В | 2h | 2h |
| 365 | 1.164 | **рассекатели после шлюзовика 1 и 2 линия сделать, чтобы корм равномерно ложился по поверхности сетки** |  | 5.25d | 2026-06-03 09:00 A | 2026-06-10 11:00 A |  | 100% |  |  |  |  |  | 11h | 11h |
| 366 | 1.164.1 | после обеда будет остановка 2 линия- модернизация рассекателя |  | 1h | 2026-06-03 09:00 A | 2026-06-03 10:00 A |  | 100% |  |  |  | start no earlier than 2026-06-03 09:00 | Бундин В | 1h | 1h |
| 367 | 1.164.2 | **установить зубчатую пластину для выравнивания слоя на входе в печь** |  | 5.25d | 2026-06-03 09:00 A | 2026-06-10 11:00 A |  | 100% |  |  |  |  |  | 10h | 10h |
| 368 | 1.164.2.1 | подготовиьт чертеж |  | 2h | 2026-06-03 09:00 A | 2026-06-03 11:00 A |  | 100% |  |  |  | start no earlier than 2026-06-03 08:00 | Домоводов К | 2h | 2h |
| 369 | 1.164.2.2 | изготовить |  | 6h | 2026-06-05 09:00 A | 2026-06-05 16:00 A | 368 | 100% |  |  |  | start no earlier than 2026-06-05 09:00 | Бундин В | 6h | 6h |
| 370 | 1.164.2.3 | монтаж |  | 2h | 2026-06-10 09:00 A | 2026-06-10 11:00 A | 369 | 100% |  |  |  | start no earlier than 2026-06-10 09:00 | Некрасов А | 2h | 2h |

| ID | WBS | Task | Type | Duration | Start | Finish | Predecessors | Complete | Remaining | Total slack | Constraint | Resources | Work | Actual work |
| --- | --- | --- | --- | --- | --- | --- | --- | --- | --- | --- | --- | --- | --- | --- |
| 371 | 1.165 | **монтаж 2х прожекторов на барабаны жиров** |  | 0.25d | 2026-06-02 09:00 A | 2026-06-02 11:00 A |  | 100% |  |  |  |  | 2h | 2h |
| 372 | 1.165.1 | подключить в ШУ самого транспортера на автомат |  | 2h | 2026-06-02 09:00 A | 2026-06-02 11:00 A |  | 100% |  |  | start no earlier than 2026-06-02 09:00 | Макаревич А | 2h | 2h |
| 373 | 1.166 | **проверка вентилятор упавший в зимний период. Тест на месте** |  | 6.25d | 2026-06-05 09:00 A | 2026-06-15 11:00 A |  | 100% |  |  |  |  | 10h | 10h |
| 374 | 1.166.1 | изготовить подиум под улитку |  | 6h | 2026-06-05 09:00 A | 2026-06-05 16:00 A |  | 100% |  |  | start no earlier than 2026-06-05 09:00 | Тимофеев В | 6h | 6h |
| 375 | 1.166.2 | перенос вентилятора |  | 2h | 2026-06-15 09:00 A | 2026-06-15 11:00 A |  | 100% |  |  | start no earlier than 2026-06-15 09:00 | Тимофеев В; Некрасов А | 4h | 4h |
| 376 | 1.167 | прачка 1ц замена светильник |  | 1h | 2026-05-29 09:00 A | 2026-05-29 10:00 A |  | 100% |  |  | start no earlier than 2026-05-29 08:00 | Бундин В | 1h | 1h |
| 377 | 1.168 | запайщик замена нихром |  | 1h | 2026-05-29 09:00 A | 2026-05-29 10:00 A |  | 100% |  |  | start no earlier than 2026-05-29 08:00 | Бундин В | 1h | 1h |
| 378 | 1.169 | устранить провисание патрубка подачи ГДЗ линия 2 |  | 1h | 2026-08-31 09:00 A | 2026-08-31 10:00 A |  | 100% |  |  | start no earlier than 2026-08-31 09:00 | Тимофеев В | 1h | 1h |
| 379 | 1.170 | крепеление РР магистраль ф20 воздух в склад гдз |  | 15min | 2026-05-27 09:00 A | 2026-05-27 09:15 A |  | 100% |  |  | start no earlier than 2026-05-27 09:00 | Бундин В | 0.25h | 0.25h |
| 380 | 1.171 | **перевод насосов ГДЗ на канистры с трассой на насос > 1/2** |  | 3.25d | 2026-05-28 09:00 A | 2026-06-02 11:00 |  | 50% | 1.62d | 209.34d |  |  | 4h | 2h |
| 381 | 1.171.1 | подготовка канистры установить штуцер, подготовить шланг + фитинги на насос |  | 2h | 2026-05-28 09:00 A | 2026-05-28 11:00 A |  | 100% |  |  | start no earlier than 2026-05-28 09:00 | Бундин В | 2h | 2h |
| 382 | 1.171.2 | монаж на линию 1 |  | 2h | 2026-06-02 09:00 | 2026-06-02 11:00 | 381 |  |  | 209.34d | start no earlier than 2026-06-02 09:00 | Бундин В | 2h |  |
| 383 | 1.172 | **с тена печей осыпается оребрение, попадая в продукт** |  | 10.5d | 2026-05-27 09:00 A | 2026-06-10 13:00 A |  | 100% |  |  |  |  | 11h | 11h |
| 384 | 1.172.1 | осмотр тенов печей линия 1 и линия 2 на предмет отслоения оребрения. Очистка / замена |  | 3h | 2026-05-27 09:00 A | 2026-05-27 12:00 A |  | 100% |  |  | start no earlier than 2026-05-27 09:00 | Некрасов А | 3h | 3h |
| 385 | 1.172.2 | замена неисправных тенов линия 2, по диагностике Некрасова 27.05 (токи) 2 линия |  | 4h | 2026-06-02 09:00 A | 2026-06-02 13:00 A |  | 100% |  |  | start no earlier than 2026-06-02 09:00 | Некрасов А | 4h | 4h |
| 386 | 1.172.3 | замена прогнувшихся тен |  | 4h | 2026-06-10 09:00 A | 2026-06-10 13:00 A |  | 100% |  |  | start no earlier than 2026-06-10 09:00 | Некрасов А | 4h | 4h |
| 387 | 1.173 | перенести частотный привод ШУ печи 1л для доступа обслуживания |  | 2h | 2026-06-02 09:00 A | 2026-06-02 11:00 A |  | 100% |  |  | start no earlier than 2026-06-02 09:00 | Дедов В | 2h | 2h |
| 388 | 1.174 | нет фазы линия 2 печь оперативно |  | 1h | 2026-05-26 09:00 A | 2026-05-26 10:00 A |  | 100% |  |  | start no earlier than 2026-05-26 09:00 | Тимофеев В; Бундин В | 2h | 2h |
| 389 | 1.175 | замена твердотельное реле фаза В 2шт (найти пробитый) |  | 30min | 2026-05-27 09:00 A | 2026-05-27 09:30 A |  | 100% |  |  | start no earlier than 2026-05-27 09:00 | Бундин В | 0.5h | 0.5h |
| 390 | 1.176 | выравнивание потенциалов ШУ тв реле печей 1 и 2 |  | 1h | 2026-05-27 09:00 A | 2026-05-27 10:00 A |  | 100% |  |  | start no earlier than 2026-05-27 09:00 | Бундин В | 1h | 1h |
| 391 | 1.177 | **заменить фитинги с гайками (они на складе) на жирах 1 + 2 линия** |  | 28d | 2026-05-27 09:00 A | 2026-07-04 11:00 A |  | 100% |  |  |  |  | 6.08h | 6.08h |
| 392 | 1.177.1 | доставка шланг 8х12мм. Контроль |  | 5min | 2026-05-27 09:00 A | 2026-05-27 09:05 A |  | 100% |  |  | start no earlier than 2026-05-27 09:00 | Шуранов Ю | 0.08h | 0.08h |
| 393 | 1.177.2 | замена 2 линия |  | 2h | 2026-05-27 09:00 A | 2026-05-27 11:00 A |  | 100% |  |  | start no earlier than 2026-05-27 09:00 | Тимофеев В | 2h | 2h |
| 394 | 1.177.3 | замена 1 линия |  | 2h | 2026-06-15 09:00 A | 2026-06-15 11:00 A |  | 100% |  |  | start no earlier than 2026-06-15 09:00 | Тимофеев В | 2h | 2h |
| 395 | 1.177.4 | проверить где не поставлены фитинги с гайками- поменять | manual | 2h | 2026-07-04 09:00 A | 2026-07-04 11:00 A |  | 100% |  |  | start no earlier than 2026-07-04 09:00 | Тимофеев В | 2h | 2h |
| 396 | 1.178 | подключить Sаvema на теко 0,4 через ИБП (ибп на складе) |  | 1h | 2026-05-26 09:00 A | 2026-05-26 10:00 A |  | 100% |  |  | start no earlier than 2026-05-26 09:00 | Дедов В | 1h | 1h |
| 397 | 1.179 | найти и закрутить мотор-редукторы на транспортерах и отписаться на каких были не прикручены и не законтрогаек. |  | 1h | 2026-05-25 09:00 A | 2026-05-25 10:00 A |  | 100% |  |  | start no earlier than 2026-05-25 09:00 | Макаревич А | 1h | 1h |
| 398 | 1.180 | транспортер с жиров на виброохладитель- поменять кнопку стоп 2 линия | manual | 1h | 2026-05-27 09:00 A | 2026-05-27 10:00 A |  | 100% |  |  | start no earlier than 2026-05-27 09:00 | Дедов В | 1h | 1h |
| 399 | 1.181 | демонтировать на накопительном столе квадропака силиконовую резинку по диаметру | manual | 1h | 2026-05-24 09:00 A | 2026-05-24 10:00 A |  | 100% |  |  | start no earlier than 2026-05-24 09:00 | Макаревич А | 1h | 1h |

| ID | WBS | Task | Type | Duration | Start | Finish | Predecessors | Complete | Remaining | Total slack | Constraint | Resources | Work | Actual work |
| --- | --- | --- | --- | --- | --- | --- | --- | --- | --- | --- | --- | --- | --- | --- |
| 400 | 1.182 | **установка фосунок - подача жира 1 линия** |  | 22.12d? | 2026-06-05 09:00 A | 2026-07-07 10:00 |  | 17% | 18.44d? | 184.47d |  |  | 4h | 2h |
| 401 | 1.182.1 | сборка кронштейн для фильтров + счетчик/ покраска |  | 1h | 2026-06-05 09:00 A | 2026-06-05 10:00 A |  | 100% |  |  | start no earlier than 2026-06-05 09:00 | Тимофеев В | 1h | 1h |
| 402 | 1.182.2 | установка |  | 1d? | 2026-07-06 09:00 | 2026-07-06 18:00 |  |  |  | 184.59d | start no earlier than 2026-07-06 09:00 |  |  |  |
| 403 | 1.182.3 | монтаж в линию |  | 2h | 2026-07-06 09:00 | 2026-07-06 11:00 |  |  |  | 185.34d | start no earlier than 2026-07-06 09:00 | Тимофеев В | 2h |  |
| 404 | 1.182.4 | монтаж розетка для блок питания 5в для регистратора |  | 1h | 2026-07-07 09:00 A | 2026-07-07 10:00 A |  | 100% |  |  | start no earlier than 2026-07-07 09:00 | Тимофеев В | 1h | 1h |
| 405 | 1.183 | **конв №2 линия 2 нижний вал нет защиты подшипников (был фетр)** |  | 9.16d | 2026-08-19 09:00 A | 2026-09-01 10:15 A |  | 100% |  |  |  |  | 5.25h | 5.25h |
| 406 | 1.183.1 | разборка, ревизия, подбор / чертеж уплотнеия |  | 2h | 2026-08-26 09:00 A | 2026-08-26 11:00 A |  | 100% |  |  | start no earlier than 2026-08-26 09:00 | Тимофеев В | 2h | 2h |
| 407 | 1.183.2 | заявка уплотнение |  | 1h | 2026-08-19 09:00 A | 2026-08-19 10:00 A |  | 100% |  |  | start no earlier than 2026-08-19 09:00 | Шуранов Ю | 1h | 1h |
| 408 | 1.183.3 | контроль поставки |  | 15min | 2026-09-01 10:00 A | 2026-09-01 10:15 A | 407FS+10d | 100% |  |  | start no earlier than 2026-08-12 09:00 | Шуранов Ю | 0.25h | 0.25h |
| 409 | 1.183.4 | монтаж уплотнения |  | 2h | 2026-08-31 09:00 A | 2026-08-31 11:00 A | 408FS+1d | 100% |  |  | start no earlier than 2026-08-12 09:00 | Тимофеев В | 2h | 2h |
| 410 | 1.184 | вентилятор на охладителе верхний краний слишком большой - переделать крепление |  | 1h | 2026-08-26 09:00 A | 2026-08-26 10:00 A |  | 100% |  |  | start no earlier than 2026-08-26 09:00 | Тимофеев В | 1h | 1h |
| 411 | 1.185 | устанить утечку на мойке зона экструдера |  | 1h | 2023-03-10 09:00 A | 2023-03-10 10:00 A |  | 100% |  |  |  | Бобренок В | 1h | 1h |
| 412 | 1.186 | выдать шестигранные болты и шайбы на ножевой узел экструдерщикам (штук 20) |  | 1h | 2026-05-21 09:00 A | 2026-05-21 10:00 A |  | 100% |  |  | start no earlier than 2026-05-21 08:00 | Бундин В | 1h | 1h |
| 413 | 1.187 | приварить болты к заслонке подачи гранулы на квадропаке (остановить, с мастером согласовать) |  | 1h | 2026-05-26 09:00 A | 2026-05-26 10:00 A |  | 100% |  |  | start no earlier than 2026-05-26 09:00 | Бобренок В | 1h | 1h |
| 414 | 1.188 | увеличить диаметр отверстия, чтобы горловина подачи сух. Гидрализата проходила (жиротопка) |  | 1h | 2026-05-20 09:00 A | 2026-05-20 10:00 A |  | 100% |  |  | start no earlier than 2026-05-20 09:00 | Некрасов А | 1h | 1h |
| 415 | 1.189 | посмотреть приточку, выпадает часто в аварию по насосу |  | 2h | 2026-05-18 08:00 A | 2026-05-18 11:00 A |  | 100% |  |  | start no earlier than 2026-05-18 08:00 | Дедов В | 2h | 2h |
| 416 | 1.190 | замена светильника в зоне завоза навесок (работа на высоте) |  | 2h | 2026-05-15 09:00 A | 2026-05-15 11:00 A |  | 100% |  |  | start no earlier than 2026-05-15 09:00 | Некрасов А; Труфанов А | 4h | 4h |
| 417 | 1.191 | закрепить встиряхиватель полного пакета №1 квадропак |  | 1h | 2026-05-14 08:00 A | 2026-05-14 10:00 A |  | 100% |  |  | start no earlier than 2026-05-14 08:00 | Бобренок В | 1h | 1h |
| 418 | 1.192 | замена лампа светильник гардероб М = на короткий. |  | 1h | 2026-05-13 09:00 A | 2026-05-13 10:00 A |  | 100% |  |  | start no earlier than 2026-05-13 09:00 | Бундин В | 1h | 1h |
| 419 | 1.193 | устранить потерю мощности печи в 2х фазах |  | 2h | 2026-05-12 08:00 A | 2026-05-12 11:00 A |  | 100% |  |  | start no earlier than 2026-05-12 08:00 | Тимофеев В; Бобренок В | 4h | 4h |
| 420 | 1.194 | квадропак изготовить и заменить текстолит на термоноже |  | 2h | 2026-05-12 09:00 A | 2026-05-12 11:00 A |  | 100% |  |  | start no earlier than 2026-05-12 08:00 | Некрасов А | 2h | 2h |
| 421 | 1.195 | **бак стабилизации воды-утечка** |  | 0.25d | 2026-05-22 09:00 A | 2026-05-22 11:00 A |  | 100% |  |  |  | Тимофеев В | 4h | 4h |
| 422 | 1.195.1 | монтаж подачи воды 2 линия в прекондиционер |  | 2h | 2026-05-22 09:00 A | 2026-05-22 11:00 A |  | 100% |  |  | start no earlier than 2026-05-22 09:00 | Тимофеев В | 2h | 2h |
| 423 | 1.196 | **парогенератор 1ц ремонт по гарантии** |  | 30d? | 2026-04-27 09:00 A | 2026-06-05 18:00 A |  | 100% |  |  |  |  | 11.33h | 11.33h |
| 424 | 1.196.1 | отправить ПГ на ремонт орг курьера |  | 10min | 2026-04-27 09:00 A | 2026-04-27 09:10 A |  | 100% |  |  | start no earlier than 2026-04-27 08:00 | Шуранов Ю | 0.17h | 0.17h |
| 425 | 1.196.2 | контроль ремонт |  | 10min | 2026-05-04 09:10 A | 2026-05-04 09:20 A | 424FS+5d | 100% |  |  | start no earlier than 2026-04-27 08:00 | Шуранов Ю | 0.17h | 0.17h |
| 426 | 1.196.3 | нужно посмотреть парогенератор там релюха не щелкает- может разберешься, он находиться на складе у Веры |  | 2h | 2026-05-11 09:00 A | 2026-05-11 11:00 A |  | 100% |  |  | start no earlier than 2026-05-11 09:00 | Дедов В | 2h | 2h |
| 427 | 1.196.4 | орг ремонт по гарантии |  | 1h | 2026-05-13 09:00 A | 2026-05-13 10:00 A |  | 100% |  |  | start no earlier than 2026-05-13 09:00 | Шуранов Ю | 1h | 1h |
| 428 | 1.196.5 | контроль возврата |  | 1d? | 2026-06-05 09:00 A | 2026-06-05 18:00 A |  | 100% |  |  | start no earlier than 2026-06-05 09:00 | Шуранов Ю | 8h | 8h |
| 429 | 1.197 | проверить мотор-редуктор на накопительном столе фасовка и | manual | 4h | 2026-05-11 09:00 A | 2026-05-11 13:00 A |  | 100% |  |  | start no earlier than 2026-05-11 09:00 | Бундин В | 4h | 4h |
| 430 | 1.198 | прикрутить ножку на 2 столе (ножка у Луговских в кабинете) |  | 1h | 2026-05-12 09:00 A | 2026-05-12 10:00 A |  | 100% |  |  | start no earlier than 2026-05-12 08:00 | Бундин В | 1h | 1h |

| ID | WBS | Task | Duration | Start | Finish | Predecessors | Complete | Constraint | Resources | Work | Actual work |
| --- | --- | --- | --- | --- | --- | --- | --- | --- | --- | --- | --- |
| 431 | 1.199 | **отодвинуть миксер подачи сухого гидрализата, чтобы сыпал не на ребра барабана, а на обод выхода** | 0.38d | 2026-05-08 08:00 A | 2026-05-08 12:00 A |  | 100% |  |  | 3h | 3h |
| 432 | 1.199.1 | перекрутить платформу миксера подачи сухого гидрализата снизу, чтобы дуло не задевало барабан | 3h | 2026-05-08 08:00 A | 2026-05-08 12:00 A |  | 100% | start no earlier than 2026-05-08 08:00 | Макаревич А | 3h | 3h |
| 433 | 1.200 | монтаж светильник в районе ВРУ сверху (зона экструдера) | 2h | 2026-05-16 09:00 A | 2026-05-18 11:00 A |  | 100% | start no earlier than 2026-05-16 09:00 | Макаревич А | 2h | 2h |
| 434 | 1.201 | закрепить трубу п/п на фасовке в углу, где стеллаж на клипсы к стене | 1h | 2026-05-07 08:00 A | 2026-05-07 10:00 A |  | 100% | start no earlier than 2026-05-07 08:00 | Бобренок В | 1h | 1h |
| 435 | 1.202 | прикрутить пускатели запуска вытяжки перед лестницей на 2 этаж зона экструдера и розетки | 2h | 2026-05-06 08:00 A | 2026-05-06 11:00 A |  | 100% | start no earlier than 2026-05-06 08:00 | Бобренок В | 2h | 2h |
| 436 | 1.203 | нет напряжения в розетке для инсектицидного светильника, корридор где вывозят готовую продукцию | 1h | 2026-05-07 09:00 A | 2026-05-07 10:00 A |  | 100% | start no earlier than 2026-05-07 09:00 | Бобренок В | 1h | 1h |
| 437 | 1.204 | подключить через счетчик подачу жира | 2h | 2026-05-05 08:00 A | 2026-05-05 11:00 A |  | 100% | start no earlier than 2026-05-05 08:00 | Тимофеев В | 2h | 2h |
| 438 | 1.205 | **повесить на места светильники инсектицидные (замена ламп)** | 0.38d | 2026-05-05 09:00 A | 2026-05-05 12:00 A |  | 100% |  |  | 3h | 3h |
| 439 | 1.205.1 | заменить инсектицидные лампы в светильниках (количество, которое поменял -записать) | 3h | 2026-05-05 09:00 A | 2026-05-05 12:00 A |  | 100% | start no earlier than 2026-05-05 08:00 | Бундин В | 3h | 3h |
| 440 | 1.206 | на жиротопке установить газ лифты (они на складе) | 1h | 2026-05-05 08:00 A | 2026-05-05 10:00 A |  | 100% | start no earlier than 2026-05-05 08:00 | Бобренок В | 1h | 1h |
| 441 | 1.207 | **дверь вход в столовую вкрыть заглушки и установить личинку с ключами (взять на складе)** | 14.12d | 2026-05-13 09:00 A | 2026-06-02 10:00 A |  | 100% |  |  | 42.5h | 42.5h |
| 442 | 1.207.1 | заказать ручку / ответ | 30min | 2026-05-13 09:00 A | 2026-05-13 09:30 A |  | 100% | start no earlier than 2026-05-13 09:00 | Шуранов Ю | 0.5h | 0.5h |
| 443 | 1.207.2 | конроль | 5d | 2026-05-18 09:00 A | 2026-05-22 18:00 A | 442 | 100% | start no earlier than 2026-05-18 09:00 | Карабанов | 40h | 40h |
| 444 | 1.207.3 | замена | 1h | 2026-05-30 09:00 A | 2026-06-01 10:00 A | 443 | 100% | start no earlier than 2026-05-30 09:00 | Тимофеев В | 1h | 1h |
| 445 | 1.207.4 | перевернуть замок ручкой вверх, личика переворачивается в любую сторону | 1h | 2026-06-02 09:00 A | 2026-06-02 10:00 A |  | 100% | start no earlier than 2026-06-02 09:00 | Макаревич А | 1h | 1h |
| 446 | 1.208 | поставить шпонки на питатель в слесарке | 1h | 2026-05-04 09:00 A | 2026-05-04 10:00 A |  | 100% | start no earlier than 2026-05-04 08:00 | Тимофеев В | 1h | 1h |
| 447 | 1.209 | установить транспортер на 1 линии | 1h | 2026-05-04 08:00 A | 2026-05-04 10:00 A |  | 100% | start no earlier than 2026-05-04 08:00 | Дедов В | 1h | 1h |
| 448 | 1.210 | собрать транспортер ковшевой (валы приехали, фетр на складе) | 4h | 2026-04-30 08:00 A | 2026-04-30 13:00 A |  | 100% | start no earlier than 2026-04-30 08:00 | Дедов В | 4h | 4h |
| 449 | 1.211 | **со старой ленты снять ковши в слесарке** | 0.5d | 2026-05-05 09:00 A | 2026-05-05 13:00 A |  | 100% |  |  | 4h | 4h |
| 450 | 1.211.1 | подготовить ленту с ковшами (150 мм между ковшами) лента на складе 5120мм в кольце и унести на желтый склад | 4h | 2026-05-05 09:00 A | 2026-05-05 13:00 A |  | 100% | start no earlier than 2026-05-05 09:00 | Бундин В | 4h | 4h |
| 451 | 1.212 | **разбираем улитки циклон и печи, замена подшипников** | 1d? | 2026-06-03 09:00 A | 2026-06-03 18:00 A |  | 100% |  | Тимофеев В; Бундин В | 16h | 16h |
| 452 | 1.212.1 | проверка подшипников на улитках печей | 1d? | 2026-06-03 09:00 A | 2026-06-03 18:00 A |  | 100% | start no earlier than 2026-06-03 09:00 |  |  |  |
| 453 | 1.213 | ТО Теко 1,5 (чистка тен, смазка штоков пневмоцилиндров, подшипников) | 3h | 2026-04-28 09:00 A | 2026-04-28 12:00 A |  | 100% | start no earlier than 2026-04-28 09:00 | Дедов В | 3h | 3h |
| 454 | 1.214 | ТО Теко 0,4 (чистка тен, смазка штоков пневмоцилиндров, подшипников) | 3h | 2026-04-28 09:00 A | 2026-04-28 12:00 A |  | 100% | start no earlier than 2026-04-28 09:00 | Дедов В | 3h | 3h |
| 455 | 1.215 | полное ТО квадропака (чистка тен, смазка штоков пневмоцилиндров, шприцевание подшипников, протяжка болтовых соединений) | 3h | 2026-04-28 09:00 A | 2026-04-28 12:00 A |  | 100% | start no earlier than 2026-04-28 09:00 | Дедов В | 3h | 3h |

| ID | WBS | Task | Type | Duration | Start | Finish | Predecessors | Complete | Constraint | Resources | Work | Actual work |
| --- | --- | --- | --- | --- | --- | --- | --- | --- | --- | --- | --- | --- |
| 456 | 1.216 | **модернизация трассы слива зона мойки экструдеров** |  | 20d? | 2026-04-27 09:00 A | 2026-05-23 10:00 A |  | 100% |  |  | 15.5h | 15.5h |
| 457 | 1.216.1 | заявка соединения и гидрозатвор |  | 15min | 2026-04-27 09:00 A | 2026-04-27 09:15 A |  | 100% | start no earlier than 2026-04-27 08:00 | Шуранов Ю | 0.25h | 0.25h |
| 458 | 1.216.2 | контроль доставки |  | 15min | 2026-05-04 09:15 A | 2026-05-04 09:30 A | 457FS+5d | 100% | start no earlier than 2026-04-27 08:00 | Шуранов Ю | 0.25h | 0.25h |
| 459 | 1.216.3 | монтаж |  | 1d? | 2026-05-06 09:30 A | 2026-05-07 09:30 A | 458FS+2d | 100% | start no earlier than 2026-04-27 08:00 | Тимофеев В | 8h | 8h |
| 460 | 1.216.4 | заявка на бурить стену / получить счет |  | 1h | 2026-04-28 09:00 A | 2026-04-28 10:00 A |  | 100% | start no earlier than 2026-04-28 09:00 | Зорькин В | 1h | 1h |
| 461 | 1.216.5 | расчет угла бурения. Замер + зхарисовать схему |  | 4h | 2026-05-13 09:00 A | 2026-05-13 13:00 A | 460 | 100% | start no earlier than 2026-05-13 09:00 | Зорькин В | 4h | 4h |
| 462 | 1.216.6 | орг работу подрядчика по бурению |  | 1h | 2026-05-20 09:00 A | 2026-05-20 10:00 A | 461 | 100% | start no earlier than 2026-05-20 09:00 | Зорькин В | 1h | 1h |
| 463 | 1.216.7 | запенить стыки в месте бурения | manual | 1h | 2026-05-23 09:00 A | 2026-05-23 10:00 A |  | 100% | start no earlier than 2026-05-23 09:00 | Бобренок В | 1h | 1h |
| 464 | 1.217 | взять на складе 2 гофросифона и заменить на мойке экструдер |  | 1h | 2026-04-24 09:00 A | 2026-04-24 10:00 A |  | 100% | start no earlier than 2026-04-24 08:00 | Бундин В | 1h | 1h |
| 465 | 1.218 | заменить монтажную коробку на 150х200мм -она у них на стяжках. Коробка новая на складе | manual | 1h | 2026-04-26 09:00 A | 2026-04-26 10:00 A |  | 100% | start no earlier than 2026-04-26 09:00 | Бобренок В | 1h | 1h |
| 466 | 1.219 | под мойкой в зоне экструдера на слив 3 греющего кабеля, нужно разобраться |  | 1h | 2026-04-24 09:00 A | 2026-04-24 10:00 A |  | 100% | start no earlier than 2026-04-24 08:00 | Шуранов Ю | 1h | 1h |
| 467 | 1.220 | жиротопка течет сальник, проверить и устранить течи везде. Чистка фильтров. |  | 2h | 2026-04-28 09:00 A | 2026-04-28 11:00 A |  | 100% | start no earlier than 2026-04-28 09:00 | Тимофеев В | 2h | 2h |
| 468 | 1.221 | ТО печи линия 1 ( вскрыть, ревизия- замена перемычек и т.д.) |  | 4h | 2026-04-23 09:00 A | 2026-04-23 13:00 A |  | 100% | start no earlier than 2026-04-23 08:00 | Бундин В | 4h | 4h |
| 469 | 1.222 | протянуть кабель UTP от столя Луговских до шкафа серверного (расскажу как протянуть по звонку) |  | 4h | 2026-04-23 09:00 A | 2026-04-23 13:00 A |  | 100% | start no earlier than 2026-04-23 08:00 | Бундин В | 4h | 4h |
| 470 | 1.223 | **подключить приточку как было** |  | 0.25d | 2026-04-29 09:00 A | 2026-04-29 11:00 A |  | 100% |  | Дедов В | 4h | 4h |
| 471 | 1.223.1 | подключить сервопривод на шибер и подключить |  | 2h | 2026-04-29 09:00 A | 2026-04-29 11:00 A |  | 100% | start no earlier than 2026-04-29 09:00 | Дедов В | 2h | 2h |
| 472 | 1.224 | **замена ленты на транспортере тип 2 2 линия (дособрать)** |  | 1.5d | 2026-04-24 09:00 A | 2026-04-27 13:00 A |  | 100% |  |  | 6h | 6h |
| 473 | 1.224.1 | со снятой ленты транспортера тип 2 снять все ковши (готовим для замены на 1 линии) |  | 2h | 2026-04-24 09:00 A | 2026-04-24 11:00 A |  | 100% | start no earlier than 2026-04-24 09:00 | Бундин В | 2h | 2h |
| 474 | 1.224.2 | установка ковшей со старой ленты на новую со склада 400х 5120мм |  | 4h | 2026-04-25 09:00 A | 2026-04-27 13:00 A |  | 100% | start no earlier than 2026-04-25 09:00 | Макаревич А | 4h | 4h |
| 475 | 1.225 | **система угольной фильтрации вытяжных газов с печей и пневотранспорта** |  | 0.25d | 2026-04-21 09:00 A | 2026-04-21 11:00 A |  | 100% |  |  | 3h | 3h |
| 476 | 1.225.1 | подготовить пластины 200*200 5мм для анкерения колон к полу ф12 6шт |  | 2h | 2026-04-21 09:00 A | 2026-04-21 11:00 A |  | 100% | start no earlier than 2026-04-21 09:00 | Бундин В | 2h | 2h |
| 477 | 1.225.2 | подготовить пластины 100*100 5мм для анкерения колон к стене 8шт |  | 1h | 2026-04-21 09:00 A | 2026-04-21 10:00 A |  | 100% | start no earlier than 2026-04-21 09:00 | Бундин В | 1h | 1h |
| 478 | 1.226 | проверка фильтров воды с редуктором в прекондиционер на ТО |  | 1h | 2026-04-22 09:00 A | 2026-04-22 10:00 A |  | 100% | start no earlier than 2026-04-22 09:00 | Бундин В | 1h | 1h |
| 479 | 1.227 | **заменить фильтры на жиротопка** |  | 17.12d | 2026-09-14 09:00 A | 2026-10-01 10:00 A |  | 100% |  |  | 2.25h | 2.25h |
| 480 | 1.227.1 | выяснить тип фильтров, заказ катриджи |  | 1h | 2026-09-14 09:00 A | 2026-09-14 10:00 A |  | 100% | start no earlier than 2026-09-14 09:00 | Зорькин В | 1h | 1h |
| 481 | 1.227.2 | контроль |  | 15min | 2026-09-24 10:00 A | 2026-09-24 10:15 A | 480FS+10d | 100% | start no earlier than 2026-04-22 09:00 | Зорькин В | 0.25h | 0.25h |
| 482 | 1.227.3 | замена |  | 1h | 2026-10-01 09:00 A | 2026-10-01 10:00 A | 481 | 100% | start no earlier than 2026-10-01 09:00 | Бобренок В | 1h | 1h |
| 483 | 1.228 | проверить напряжение в розетке конатушка вывоза готовой продукции |  | 1h | 2026-04-19 09:00 A | 2026-04-20 10:00 A |  | 100% | start no earlier than 2026-04-19 09:00 | Дедов В | 1h | 1h |

| ID | WBS | Task | Duration | Start | Finish | Predecessors | Complete | Remaining | Total slack | Free slack | Constraint | Resources | Work | Actual work |
| --- | --- | --- | --- | --- | --- | --- | --- | --- | --- | --- | --- | --- | --- | --- |
| 484 | 1.229 | **обслуживание инсекьюеров, утлизация отработанных ламп** | 127.12d | 2026-04-21 08:00 A | 2026-10-05 10:00 |  | 98% | 2.84d | 112.47d |  |  |  | 89.5h | 87.5h |
| 485 | 1.229.1 | Составить список ламп по цехам и передать Зорькину | 2h | 2026-04-21 08:00 A | 2026-04-21 11:00 A |  | 100% |  |  |  | start no earlier than 2026-04-21 08:00 | Тимофеев В | 2h | 2h |
| 486 | 1.229.2 | Заказать новые лампы | 30min | 2026-04-21 10:00 A | 2026-04-21 10:30 A | 485 | 100% |  |  |  | start no earlier than 2026-04-21 08:00 | Зорькин В | 0.5h | 0.5h |
| 487 | 1.229.3 | доставка | 10d | 2026-04-21 10:30 A | 2026-05-05 10:30 A | 486 | 100% |  |  |  | start no earlier than 2026-04-21 08:00 | Карабанов | 80h | 80h |
| 488 | 1.229.4 | снять все светильники мухоловки, извлечь лампы, уложить аккуратно в коробку (оставить в слесарке отработанные) светильники снятые передать мастеру смены для мытья | 2h | 2026-05-05 10:30 A | 2026-05-05 12:30 A | 487 | 100% |  |  |  | start no earlier than 2026-05-01 09:00 | Бобренок В | 2h | 2h |
| 489 | 1.229.5 | после чистки установить лампы в светильники, тусклые замнеить | 2h | 2026-05-12 09:00 A | 2026-05-12 11:00 A | 488 | 100% |  |  |  | start no earlier than 2026-05-12 09:00 | Бундин В | 2h | 2h |
| 490 | 1.229.6 | сообщить кол-во замененных ламп нач цехов | 1h | 2026-05-12 11:00 A | 2026-05-12 12:00 A | 489 | 100% |  |  |  | start no earlier than 2026-05-01 09:00 | Шуранов Ю | 1h | 1h |
| 491 | 1.229.7 | запрос договор на утилизацию ламп | 1h | 2026-09-14 09:00 | 2026-09-14 10:00 |  |  |  | 132.34d | 19.88d | start no earlier than 2026-09-14 09:00 | Домоводов К | 1h |  |
| 492 | 1.229.8 | подготовить лампы к утилизации | 1h | 2026-10-05 09:00 | 2026-10-05 10:00 | 490, 491 |  |  | 112.47d |  | start no earlier than 2026-10-05 09:00 | Тимофеев В | 1h |  |
| 493 | 1.230 | **на 1 линии подготовить из оргстекла обратные крышки транспортера тип 2 (ковшевой), согласовать остановка с мастером и установить** | 0.12d | 2026-04-24 09:00 A | 2026-04-24 10:00 A |  | 100% |  |  |  |  | Бобренок В | 2h | 2h |
| 494 | 1.230.1 | перекрутить оргстекло (операторы подскажут в чем проблема) | 1h | 2026-04-24 09:00 A | 2026-04-24 10:00 A |  | 100% |  |  |  | start no earlier than 2026-04-24 09:00 | Бобренок В | 1h | 1h |
| 495 | 1.231 | проверить гидроаккумуляторы парогенераторов 1 и 2 линия и 100литровый в комнате стабилизации воды, если нужно качаем 2 очка. | 2h | 2026-04-19 09:00 A | 2026-04-20 11:00 A |  | 100% |  |  |  | start no earlier than 2026-04-19 09:00 | Макаревич А | 2h | 2h |
| 496 | 1.232 | проверка фильтров на редукторы экструдеров | 1h | 2026-04-24 09:00 A | 2026-04-24 10:00 A |  | 100% |  |  |  | start no earlier than 2026-04-24 09:00 | Тимофеев В | 1h | 1h |
| 497 | 1.233 | проверка токов, всех перемычек, шприцевание всех подшипников печи №2 | 3h | 2026-04-23 09:00 A | 2026-04-23 12:00 A |  | 100% |  |  |  | start no earlier than 2026-04-24 09:00 | Бобренок В | 3h | 3h |
| 498 | 1.234 | на питателе заменить втулки линия 1 и 2 | 2h | 2026-04-15 08:00 A | 2026-04-15 11:00 A |  | 100% |  |  |  | start no earlier than 2026-04-15 08:00 | Бобренок В | 2h | 2h |
| 499 | 1.235 | проверить радиатор приточки (протечки, есть ли подача горячей воды), если нет - выключить приточку, чтобы не разморозить! | 1h | 2026-04-14 09:00 A | 2026-04-14 10:00 A |  | 100% |  |  |  | start no earlier than 2026-04-14 08:00 | Труфанов А | 1h | 1h |
| 500 | 1.236 | приварить левую ногу мезонина на фасовке (штабелером сместили) | 1h | 2026-04-15 09:00 A | 2026-04-15 10:00 A |  | 100% |  |  |  | start no earlier than 2026-04-15 09:00 | Бобренок В | 1h | 1h |
| 501 | 1.237 | на печи №1 прошприцевать подшипники, проверить токи, если нужно вскрываем на ревизию перемычек | 3h | 2026-04-14 09:00 A | 2026-04-14 12:00 A |  | 100% |  |  |  | start no earlier than 2026-04-14 08:00 | Труфанов А | 3h | 3h |
| 502 | 1.238 | замена электродной группы на парогенераторе линия №1 (электроды подготовили в слесарке) | 4h | 2026-04-14 09:00 A | 2026-04-14 13:00 A |  | 100% |  |  |  | start no earlier than 2026-04-14 08:00 | Труфанов А | 4h | 4h |
| 503 | 1.239 | на квадропаке тена выставить в параллель | 1h | 2026-04-13 09:00 A | 2026-04-13 10:00 A |  | 100% |  |  |  | start no earlier than 2026-04-13 08:00 | Труфанов А | 1h | 1h |
| 504 | 1.240 | покрасить подиум под циклонами линия 1 и 2 | 2h | 2026-04-22 09:00 A | 2026-04-22 11:00 A |  | 100% |  |  |  | start no earlier than 2026-04-22 09:00 | Бундин В | 2h | 2h |
| 505 | 1.241 | подготовить лекало на приемный лоток транспортера тип 2 (у них в работе картонка, можно по ней и сделать), если будет остановка приварить | 1h | 2026-04-27 09:00 A | 2026-04-27 10:00 A |  | 100% |  |  |  | start no earlier than 2026-04-27 09:00 | Тимофеев В | 1h | 1h |
| 506 | 1.242 | на пнемоулитку поставить пистолет (зона экструдера) | 1h | 2026-04-11 09:00 A | 2026-04-13 10:00 A |  | 100% |  |  |  | start no earlier than 2026-04-11 09:00 | Макаревич А | 1h | 1h |
| 507 | 1.243 | установить фильтр на кондиционер между печками (фильтр у Луговских) | 1h | 2026-04-22 09:00 A | 2026-04-22 10:00 A |  | 100% |  |  |  | start no earlier than 2026-04-22 09:00 | Труфанов А | 1h | 1h |

| ID | WBS | Task | Type | Duration | Start | Finish | Predecessors | Complete | Actual start | Actual finish | Total slack | Constraint | Resources | Work | Actual work |
| --- | --- | --- | --- | --- | --- | --- | --- | --- | --- | --- | --- | --- | --- | --- | --- |
| 508 | 1.244 | **зафиксировать ручку в туалет (закрутить)** |  | 856.12d | 2023-03-22 09:00 A | 2026-04-22 10:00 |  | 100% |  | 2026-05-05 10:00 |  |  |  | 2h | 2h |
| 509 | 1.244.1 | заказать ручки |  | 1h | 2023-03-22 09:00 A | 2023-03-22 10:00 A |  | 100% |  |  |  |  | Шуранов Ю | 1h | 1h |
| 510 | 1.244.2 | установка (заменить ручку, взять на складе) |  | 1h | 2026-05-05 09:00 A | 2026-05-05 10:00 A |  | 100% |  |  |  | start no earlier than 2026-05-05 09:00 | Бобренок В | 1h | 1h |
| 511 | 1.245 | ТО теко 1,5 (чистка тен, смазка штоков пневмоцилиндров, подшипников) | manual | 3h | 2026-04-25 09:00 A | 2026-04-25 12:00 A |  | 100% |  |  |  | start no earlier than 2026-04-25 09:00 | Труфанов А | 3h | 3h |
| 512 | 1.246 | слить конденсат с компрессора, чистка фильтров и радиаторов | manual | 2h | 2026-04-12 09:00 A | 2026-04-12 11:00 A |  | 100% |  |  |  | start no earlier than 2026-04-12 09:00 | Макаревич А | 2h | 2h |
| 513 | 1.247 | **заказать газлифт жиротопка** |  | 11.12d? | 2026-04-22 09:00 A | 2026-05-06 10:00 |  | 100% |  | 2026-08-18 09:20 |  |  |  | 84.08h | 84.08h |
| 514 | 1.247.1 | доставка |  | 10d | 2026-04-22 09:00 A | 2026-05-05 18:00 A |  | 100% |  |  |  | start no earlier than 2026-04-22 09:00 | Карабанов | 80h | 80h |
| 515 | 1.247.2 | **установка газ лифт** |  | 69.04d | 2026-05-13 09:00 A | 2026-08-18 09:20 A |  | 100% |  |  |  |  |  | 4.08h | 4.08h |
| 516 | 1.247.2.1 | контроль поставки / размер |  | 20min | 2026-08-18 09:00 A | 2026-08-18 09:20 A |  | 100% |  |  |  | start no earlier than 2026-08-18 09:00 | Шуранов Ю | 0.33h | 0.33h |
| 517 | 1.247.2.2 | наварить уголок для площадки упора газлифта |  | 1h | 2026-05-13 09:00 A | 2026-05-13 10:00 A |  | 100% |  |  |  | start no earlier than 2026-05-13 09:00 | Труфанов А; Некрасов А | 2h | 2h |
| 518 | 1.247.2.3 | заявка газлифт с меньшей усилием/ выяснить координата |  | 30min | 2026-05-27 09:00 A | 2026-05-27 09:30 A |  | 100% |  |  |  | start no earlier than 2026-05-27 09:00 | Зорькин В | 0.5h | 0.5h |
| 519 | 1.247.2.4 | доставка контроль |  | 15min | 2026-08-12 09:00 A | 2026-08-12 09:15 A | 518FS+10d | 100% |  |  |  | start no earlier than 2026-05-13 09:00 | Зорькин В | 0.25h | 0.25h |
| 520 | 1.247.2.5 | замена |  | 1h | 2026-08-12 09:00 A | 2026-08-12 10:00 A |  | 100% |  |  |  | start no earlier than 2026-08-12 09:00 | Бобренок В | 1h | 1h |
| 521 | 1.248 | убрать диммер за еврокубом, где завозят навески (провода заизолировать и спрятать в кабель-канал) |  | 1h | 2026-04-10 08:00 A | 2026-04-10 10:00 A |  | 100% |  |  |  | start no earlier than 2026-04-10 08:00 | Бобренок В | 1h | 1h |
| 522 | 1.249 | закрыть монтажную коробку над дверью зона жиров выход |  | 1h | 2026-04-09 08:00 A | 2026-04-09 10:00 A |  | 100% |  |  |  | start no earlier than 2026-04-09 08:00 | Бобренок В | 1h | 1h |
| 523 | 1.250 | **на аппликаторе установить принтер (взять на складе)** |  | 3h? | 2026-04-10 09:00 | 2026-04-10 12:00 |  | 100% | 2026-04-09 08:00 | 2026-05-14 10:00 |  |  |  | 5h | 5h |
| 524 | 1.250.1 | монтаж витой пары от аппликатора до шкафа где вывозят ГП справа |  | 4h | 2026-04-09 08:00 A | 2026-04-09 13:00 A |  | 100% |  |  |  | start no earlier than 2026-04-09 08:00 | Бобренок В | 4h | 4h |
| 525 | 1.250.2 | тест принтера |  | 1h | 2026-05-14 09:00 A | 2026-05-14 10:00 A |  | 100% |  |  |  | start no earlier than 2026-05-14 09:00 | Зорькин В | 1h | 1h |
| 526 | 1.251 | замена шнек+гильзы (б/у) на 2 линии |  | 4h | 2026-04-09 08:00 A | 2026-04-09 13:00 A |  | 100% |  |  |  | start no earlier than 2026-04-09 08:00 | Тимофеев В | 4h | 4h |
| 527 | 1.252 | закрепить светильник в комнатке перед выходом, где вывозят готовую продукцию справа, оторвался | manual | 1h | 2026-04-08 09:00 A | 2026-04-08 10:00 A |  | 100% |  |  |  | start no earlier than 2026-04-08 08:00 | Бундин В | 1h | 1h |
| 528 | 1.253 | **замена лент на аппликаторе, подумать какой сделать отражатель для фотометки, чтобы не цепляло пакеты в работе** |  | 0.5d | 2026-05-27 09:00 | 2026-05-27 13:00 |  |  |  |  |  |  |  | 4h |  |
| 529 | 1.253.1 | замена ленеты |  | 4h | 2026-10-12 09:00 | 2026-10-12 13:00 |  |  |  |  | 107.09d | start no earlier than 2026-10-12 09:00 | Тимофеев В | 4h |  |
| 530 | 1.254 | подготовить электродную группу для парогенератора (собрать) |  | 2h | 2026-04-08 09:00 A | 2026-04-08 11:00 A |  | 100% |  |  |  | start no earlier than 2026-04-08 08:00 | Бундин В | 2h | 2h |
| 531 | 1.255 | **просыпается гранула на пересыпке с барабана в конвейер** |  | 0.5d | 2026-04-08 09:00 A | 2026-04-08 13:00 A |  | 100% |  |  |  |  |  | 6h | 6h |
| 532 | 1.255.1 | пододвинуть ближе к барабану конвейер + охладитель + вентилятор |  | 2h | 2026-04-08 09:00 A | 2026-04-08 11:00 A |  | 100% |  |  |  | start no earlier than 2026-04-08 09:00 | Бобренок В | 2h | 2h |
| 533 | 1.255.2 | доработка приемного лотка конвейера |  | 4h | 2026-04-08 09:00 A | 2026-04-08 13:00 A |  | 100% |  |  |  | start no earlier than 2026-04-08 09:00 | Некрасов А | 4h | 4h |
| 534 | 1.256 | забрать 2 рохли с пандуса, снять колеса в зип (зад- перед), а сами рохли в контейнер |  | 3h | 2026-04-04 09:00 A | 2026-04-06 12:00 A |  | 100% |  |  |  | start no earlier than 2026-04-04 09:00 | Труфанов А | 3h | 3h |

| ID | WBS | Task | Type | Duration | Start | Finish | Predecessors | Complete | Constraint | Resources | Work | Actual work |
| --- | --- | --- | --- | --- | --- | --- | --- | --- | --- | --- | --- | --- |
| 535 | 1.257 | **квадропак модернизация регулировки пластины нажима роликов для захвата пакета** |  | 2.12d | 2026-04-15 09:00 A | 2026-04-17 10:00 A |  | 100% |  |  | 3h | 3h |
| 536 | 1.257.1 | регулировочной тягой отвезти нажимную площадку на 5мм (остановить работу на 10 минут, согласовать с мастером) |  | 1h | 2026-04-17 09:00 A | 2026-04-17 10:00 A |  | 100% | start no earlier than 2026-04-17 09:00 | Бобренок В | 1h | 1h |
| 537 | 1.257.2 | изготовление пластины на ногу по аналогии как на первой ноге |  | 1h | 2026-04-15 09:00 A | 2026-04-15 10:00 A | 536 | 100% | start no earlier than 2026-04-15 09:00 | Бобренок В | 1h | 1h |
| 538 | 1.257.3 | монтаж |  | 1h | 2026-04-15 10:00 A | 2026-04-15 11:00 A | 537 | 100% | start no earlier than 2026-04-10 09:00 | Бобренок В | 1h | 1h |
| 539 | 1.258 | изготовить крышку на приямок слива канализации под раковинами зона экструдер. Из нерж, с ручкой. |  | 4h | 2026-04-02 08:00 A | 2026-04-02 13:00 A |  | 100% | start no earlier than 2026-04-02 08:00 | Бобренок В | 4h | 4h |
| 540 | 1.259 | выпрямить погнутые роль-ворота на рампе - в сторону слесарки (нужно откутить левую направляшку и вставить воротину на место) |  | 1h | 2026-04-02 08:00 A | 2026-04-02 10:00 A |  | 100% | start no earlier than 2026-04-02 08:00 | Бобренок В | 1h | 1h |
| 541 | 1.260 | **выключатель света на входе в гидролизатную закрепить сам рычаг переключения, проскальзывает** |  | 15.12d | 2026-04-06 09:00 A | 2026-04-27 10:00 A |  | 100% |  | Макаревич А | 123h | 123h |
| 542 | 1.260.1 | заказать выключатель |  | 1h | 2026-04-06 09:00 A | 2026-04-06 10:00 A |  | 100% | start no earlier than 2026-04-06 08:00 | Шуранов Ю | 1h | 1h |
| 543 | 1.260.2 | замена выключателя (выключатель в слесарке тебе показывал) |  | 1h | 2026-04-25 09:00 A | 2026-04-27 10:00 A |  | 100% | start no earlier than 2026-04-25 09:00 | Бобренок В | 1h | 1h |
| 544 | 1.261 | на пандусе 1 цеха справа - пометить шнеки и гильзы что они рабочие и вывести в контейнер |  | 2h | 2026-04-01 08:00 A | 2026-04-01 11:00 A |  | 100% | start no earlier than 2026-04-01 08:00 | Бобренок В | 2h | 2h |
| 545 | 1.262 | взять с контейнера пысос- проверить рабочий или нет (если работает выдать в 1 цех) |  | 2h | 2026-04-01 08:00 A | 2026-04-01 11:00 A |  | 100% | start no earlier than 2026-04-01 08:00 | Бобренок В | 2h | 2h |
| 546 | 1.263 | заменить плату интерфейса RS485 |  | 1h | 2026-04-04 09:00 A | 2026-04-06 10:00 A |  | 100% | start no earlier than 2026-04-04 09:00 | Труфанов А | 1h | 1h |
| 547 | 1.264 | замена шнеки 1 линия |  | 4h | 2026-03-31 08:00 A | 2026-03-31 13:00 A |  | 100% | start no earlier than 2026-03-31 08:00 | Тимофеев В; Бобренок В | 8h | 8h |
| 548 | 1.265 | замер износ шнеков |  | 1h | 2026-03-31 08:00 A | 2026-03-31 10:00 A |  | 100% | start no earlier than 2026-03-31 08:00 | Тимофеев В; Бобренок В; Зорькин В | 3h | 3h |
| 549 | 1.266 | почистить канальные вентиляторы вытяжки в курилке |  | 2h | 2026-03-28 09:00 A | 2026-03-30 11:00 A |  | 100% | start no earlier than 2026-03-28 09:00 | Бундин В | 2h | 2h |
| 550 | 1.267 | монтаж розетки на ногу нотис справа для подключения весов |  | 2h | 2026-03-27 09:00 A | 2026-03-27 11:00 A |  | 100% | start no earlier than 2026-03-27 09:00 | Труфанов А | 2h | 2h |
| 551 | 1.268 | добавить вибрации на виброохладителе линия 2 (согласовать с мастером, если будет остановка) |  | 2h | 2026-04-30 09:00 A | 2026-04-30 11:00 A | 560 | 100% |  | Бундин В | 2h | 2h |
| 552 | 1.269 | **замена ленты конвейер 2 линия 2** |  | 12.38d | 2026-04-07 09:00 A | 2026-04-23 12:00 A |  | 100% |  |  | 15h | 15h |
| 553 | 1.269.1 | взять ленту 400мм и начать крепить ковши для транспортера тип 2 (посчитать количество на транспортере) | manual | 9h | 2026-04-07 09:00 A | 2026-04-08 10:00 A |  | 100% | start no earlier than 2026-04-07 09:00 | Тимофеев В | 9h | 9h |
| 554 | 1.269.2 | замена ленты |  | 3h | 2026-04-23 09:00 A | 2026-04-23 12:00 A |  | 100% | start no earlier than 2026-04-23 09:00 | Тимофеев В; Бундин В | 6h | 6h |
| 555 | 1.270 | заменить на штабелере второй АКБ в зоне экструдера |  | 1h | 2026-03-28 09:00 A | 2026-03-30 10:00 A |  | 100% | start no earlier than 2026-03-28 09:00 | Дедов В | 1h | 1h |
| 556 | 1.271 | на кпп №1 опустить на 10см кабель в гофре для камер видеонаблюдения | manual | 2h | 2026-03-28 09:00 A | 2026-03-28 11:00 A |  | 100% | start no earlier than 2026-03-28 09:00 | Бундин В | 2h | 2h |
| 557 | 1.272 | вход охладителя 1 линии - нужно на среднем лотке между уровнями сделать сбоков шторки (фото скину) |  | 2h | 2026-03-28 09:00 A | 2026-03-30 11:00 A |  | 100% | start no earlier than 2026-03-28 09:00 | Бундин В | 2h | 2h |
| 558 | 1.273 | на первой линии под выходом из печи прикрутить на стенку оргстекло (Слава готовил по размерам оргстекло) |  | 1h | 2026-03-28 09:00 A | 2026-03-30 10:00 A |  | 100% | start no earlier than 2026-03-28 09:00 | Труфанов А | 1h | 1h |
| 559 | 1.274 | На пробниках оторвали разъем питания, нужно припаять |  | 2h | 2026-03-27 09:00 A | 2026-03-27 11:00 A |  | 100% | start no earlier than 2026-03-27 09:00 | Дедов В | 2h | 2h |
| 560 | 1.275 | подготовить 1 ленты с ковшами для транспортера тип 2 (зип) |  | 1d? | 2026-04-29 09:00 A | 2026-04-29 18:00 A |  | 100% | start no earlier than 2026-04-29 09:00 | Шуранов Ю | 8h | 8h |
| 561 | 1.276 | замена на старые капролонновые втулки в питателе линия 1 |  | 1h | 2026-03-26 09:00 A | 2026-03-26 10:00 A |  | 100% | start no earlier than 2026-03-26 09:00 | Тимофеев В | 1h | 1h |
| 562 | 1.277 | сделать на 2 линии вставыш на ленту транспортера тип 2 и установить на транспортер |  | 4h | 2026-03-25 09:00 A | 2026-03-25 13:00 A |  | 100% | start no earlier than 2026-03-25 09:00 | Некрасов А; Бобренок В | 8h | 8h |
| 563 | 1.278 | герметизация мезонина подачи навесок по шву |  | 1h | 2026-04-15 09:00 A | 2026-04-15 10:00 A |  | 100% | start no earlier than 2026-04-15 09:00 | Бобренок В | 1h | 1h |

| ID | WBS | Task | Type | Duration | Start | Finish | Complete | Remaining | Actual start | Actual finish | Constraint | Resources | Work | Actual work |
| --- | --- | --- | --- | --- | --- | --- | --- | --- | --- | --- | --- | --- | --- | --- |
| 564 | 1.279 | **на 2 линии на хомуты закрепить горловину к бункеру подачи сухого гидрализата (все расскажу)** |  | 0.25d | 2026-04-27 09:00 A | 2026-04-27 11:00 A | 100% |  |  |  |  | Некрасов А | 4h | 4h |
| 565 | 1.279.1 | на горловине подачи сухого гидрализата приварить выход под углом 45 градусов (углы из нерж есть в 3 цехе) |  | 2h | 2026-04-27 09:00 A | 2026-04-27 11:00 A | 100% |  |  |  | start no earlier than 2026-04-27 09:00 | Макаревич А | 2h | 2h |
| 566 | 1.280 | **разобрать с двух сторон питатель 2 линия - ревизия шестеренок и втулок спереди (оставить все разобранное)** |  | 2h | 2026-03-24 09:00 | 2026-03-24 11:00 | 100% |  | 2026-03-26 09:00 | 2026-03-26 11:00 |  |  | 2h | 2h |
| 567 | 1.280.1 | собрать питатель, ревизия втулок, подшипников, шнеков, шестеренок. Подогнать капролонновые втулки |  | 2h | 2026-03-26 09:00 A | 2026-03-26 11:00 A | 100% |  |  |  | start no earlier than 2026-03-26 09:00 | Тимофеев В | 2h | 2h |
| 568 | 1.281 | пульт управления кондиционером в зоне экструдера- закрепить гофру и заизолировать разрыв гофры, закрепить к стенке |  | 1h | 2026-03-24 08:00 A | 2026-03-24 10:00 A | 100% |  |  |  | start no earlier than 2026-03-24 08:00 | Бобренок В | 1h | 1h |
| 569 | 1.282 | блок питания для весов на жирах развалился, стянуть изолентой |  | 1h | 2026-03-24 08:00 A | 2026-03-24 10:00 A | 100% |  |  |  | start no earlier than 2026-03-24 08:00 | Бобренок В | 1h | 1h |
| 570 | 1.283 | **ремонт /отключить 2 вентилятора охладитель 1 линия** |  | 801d | 2023-06-21 09:00 A | 2026-07-15 18:00 A | 100% |  |  |  |  | Тимофеев В | 12801h | 12801h |
| 571 | 1.283.1 | заказать в зип |  | 6392h | 2023-06-21 09:00 A | 2026-07-15 18:00 A | 100% |  |  |  |  | Шуранов Ю | 6392h | 6392h |
| 572 | 1.283.2 | заменить 2 вентилятора |  | 1h | 2026-04-04 09:00 A | 2026-04-06 10:00 A | 100% |  |  |  |  | Макаревич А | 1h | 1h |
| 573 | 1.284 | демонтаж крышка лотка в проеме между краем площадки вентиляции приточной и проемом ворот вход в кооридор завода навесок |  | 383520min | 2023-06-21 09:00 A | 2026-07-15 18:00 A | 100% |  |  |  |  | Труфанов А | 6392h | 6392h |
| 574 | 1.285 | стук шнек 2 линия - проверить, при необходимости разобрать |  | 3h | 2026-04-27 09:00 A | 2026-04-27 12:00 A | 100% |  |  |  | start no earlier than 2026-04-27 09:00 | Тимофеев В; Бобренок В | 6h | 6h |
| 575 | 1.286 | слить конденсат и продуть все радиаторы компрессор |  | 1h | 2026-03-21 09:00 A | 2026-03-23 10:00 A | 100% |  |  |  | start no earlier than 2026-03-21 09:00 | Дедов В | 1h | 1h |
| 576 | 1.287 | закрепить аварийную кнопку в гидролизатной (фото в чате будет) / пожарный выключатель |  | 1h | 2026-03-22 09:00 A | 2026-03-23 10:00 A | 100% |  |  |  | start no earlier than 2026-03-22 09:00 | Бобренок В | 1h | 1h |
| 577 | 1.288 | кнопки на управление ворот зона жиров поднять и закпепить выше |  | 2h | 2026-03-18 08:00 A | 2026-03-18 11:00 A | 100% |  |  |  | start no earlier than 2026-03-18 08:00 | Макаревич А | 2h | 2h |
| 578 | 1.289 | закрепить все отбойники где завозят навески экструдерщики |  | 2h | 2026-03-18 08:00 A | 2026-03-18 11:00 A | 100% |  |  |  | start no earlier than 2026-03-18 08:00 | Макаревич А | 2h | 2h |
| 579 | 1.290 | закрыить все электро шкафы |  | 30min | 2026-03-17 08:00 A | 2026-03-17 09:30 A | 100% |  |  |  | start no earlier than 2026-03-17 08:00 | Бобренок В | 0.5h | 0.5h |
| 580 | 1.291 | поломоечная машинка устранить течь |  | 1h | 2026-03-17 08:00 A | 2026-03-17 10:00 A | 100% |  |  |  | start no earlier than 2026-03-17 08:00 | Бобренок В | 1h | 1h |
| 581 | 1.292 | закрыить крышку на пробниках, задняя стенка прикрутить |  | 30min | 2026-03-17 08:00 A | 2026-03-17 09:30 A | 100% |  |  |  | start no earlier than 2026-03-17 08:00 | Бобренок В | 0.5h | 0.5h |
| 582 | 1.293 | продувка кабельного лотка |  | 2h | 2026-03-18 09:00 A | 2026-03-18 11:00 A | 100% |  |  |  | start no earlier than 2026-03-18 09:00 | Труфанов А; Некрасов А | 4h | 4h |
| 583 | 1.294 | монтаж крючков под халаты. Получить у мастера |  | 1h | 2026-03-17 08:00 A | 2026-03-17 10:00 A | 100% |  |  |  | start no earlier than 2026-03-17 08:00 | Бобренок В | 1h | 1h |
| 584 | 1.295 | **установить расходомеры пара на ПГ** |  | 0.38d | 2026-04-01 09:00 | 2026-04-01 12:00 |  | 0.38d | 2026-10-12 09:00 |  |  |  | 3h |  |
| 585 | 1.295.1 | монтаж 1 линия расходомер / кабель / блок питания | manual | 3h | 2026-10-12 09:00 A | 2026-10-12 12:00 |  | 3h |  |  | start no earlier than 2026-10-12 09:00 | Некрасов А | 3h |  |
| 586 | 1.296 | **монтаж регистратор данных линия 1 и 2:** |  | 0.25d | 2026-03-18 09:00 A | 2026-03-18 11:00 A | 100% |  |  |  |  |  | 2h | 2h |
| 587 | 1.296.1 | подключение линия 1 |  | 2h | 2026-03-18 09:00 A | 2026-03-18 11:00 A | 100% |  |  |  | start no earlier than 2026-03-18 09:00 | Домоводов К | 2h | 2h |

| ID | WBS | Task | Type | Duration | Start | Finish | Predecessors | Complete | Remaining | Total slack | Free slack | Constraint | Resources | Work | Actual work |
| --- | --- | --- | --- | --- | --- | --- | --- | --- | --- | --- | --- | --- | --- | --- | --- |
| 588 | 1.297 | **разделить воду в экструдер и парогенераторы** |  | 119.44d | 2026-03-19 09:00 A | 2026-09-02 12:30 |  | 90% | 11.69d | 143.16d |  |  |  | 117.5h | 106h |
| 589 | 1.297.1 | заявка поплавкой клапан вертикальный, подводка с боку по аналогии с 4ц |  | 1h | 2026-03-19 09:00 A | 2026-03-19 10:00 A |  | 100% |  |  |  | start no earlier than 2026-03-19 08:00 | Зорькин В | 1h | 1h |
| 590 | 1.297.2 | доставка |  | 10d | 2026-03-19 10:00 A | 2026-04-02 10:00 A | 589 | 100% |  |  |  | start no earlier than 2026-03-19 08:00 | Карабанов | 80h | 80h |
| 591 | 1.297.3 | испытать производсительность маленького черн насоса с "медленным" счетким |  | 2h | 2026-05-20 09:00 A | 2026-05-20 11:00 A |  | 100% |  |  |  | start no earlier than 2026-05-20 09:00 | Тимофеев В | 2h | 2h |
| 592 | 1.297.4 | изготовить емкость для поплавкой камеры и насоса из нерж |  | 4h | 2026-04-27 09:00 A | 2026-04-27 13:00 A |  | 100% |  |  |  | start no earlier than 2026-04-27 09:00 | Макаревич А | 4h | 4h |
| 593 | 1.297.5 | доставка частотный 220 контроль | milestone | 0d | 2026-04-24 09:00 A | 2026-04-24 09:00 A |  | 100% |  |  |  | start no earlier than 2026-04-24 09:00 | Зорькин В |  |  |
| 594 | 1.297.6 | испытать регулирование насоса на частотнике |  | 1h | 2026-05-26 09:00 A | 2026-05-26 10:00 A |  | 100% |  |  |  | start no earlier than 2026-05-26 09:00 | Дедов В | 1h | 1h |
| 595 | 1.297.7 | монтаж насоса + бак нерж на линия 2 |  | 1h | 2026-05-27 09:00 A | 2026-05-27 10:00 A |  | 100% |  |  |  | start no earlier than 2026-05-27 09:00 | Тимофеев В | 1h | 1h |
| 596 | 1.297.8 | монтаж розетка, кабель до насаса, подключение двигатель насоса |  | 1h | 2026-05-27 09:00 A | 2026-05-27 10:00 A |  | 100% |  |  |  | start no earlier than 2026-05-27 09:00 | Бундин В | 1h | 1h |
| 597 | 1.297.9 | подключение насос + счетчик + кран + частотник - сборка схема с байпасом на мал насосе |  | 2h | 2026-08-11 09:00 A | 2026-08-11 11:00 A |  | 100% |  |  |  | start no earlier than 2026-08-11 09:00 | Тимофеев В | 2h | 2h |
| 598 | 1.297.10 | установить счетчик в линию |  | 1h | 2026-08-12 09:00 A | 2026-08-12 10:00 A |  | 100% |  |  |  | start no earlier than 2026-08-12 09:00 | Тимофеев В | 1h | 1h |
| 599 | 1.297.11 | испытания производительности и регулировки |  | 1h | 2026-08-12 09:00 A | 2026-08-12 10:00 A |  | 100% |  |  |  | start no earlier than 2026-08-12 09:00 | Тимофеев В | 1h | 1h |
| 600 | 1.297.12 | тестирование работы при обновленном SSID |  | 1h | 2026-08-19 09:00 A | 2026-08-19 10:00 A |  | 100% |  |  |  | start no earlier than 2026-08-19 09:00 | Домоводов К | 1h | 1h |
| 601 | 1.297.13 | **монтаж на линия 1** |  | 18.44d | 2026-08-07 09:00 | 2026-09-02 12:30 |  |  |  | 143.16d |  |  |  | 11.5h |  |
| 602 | 1.297.13.1 | заявка на счетчик, насос, 3х ход клапан, фитинги, канистра |  | 1h | 2026-08-07 09:00 | 2026-08-07 10:00 |  |  |  | 143.16d | 0d | start no earlier than 2026-08-07 09:00 | Зорькин В | 1h |  |
| 603 | 1.297.13.2 | контроль поставки |  | 30min | 2026-08-28 10:00 | 2026-08-28 10:30 | 602FS+15d |  |  | 143.16d | 0d | start no earlier than 2026-08-12 09:00 | Зорькин В | 0.5h |  |
| 604 | 1.297.13.3 | сборка корпус |  | 4h | 2026-08-31 10:30 | 2026-08-31 15:30 | 603FS+1d |  |  | 143.16d | 0d | start no earlier than 2026-08-12 09:00 | Тимофеев В | 4h |  |
| 605 | 1.297.13.4 | монтаж линия 1 |  | 6h | 2026-09-01 15:30 | 2026-09-02 12:30 | 604FS+1d |  |  | 143.16d |  | start no earlier than 2026-08-12 09:00 | Тимофеев В | 6h |  |
| 606 | 1.297.14 | подключть конденсатор к насосу, запуск системы |  | 1h | 2026-05-27 08:00 A | 2026-05-27 10:00 A |  | 100% |  |  |  | start no earlier than 2026-05-27 08:00 | Дедов В | 1h | 1h |
| 607 | 1.297.15 | подготовить емкость нерж (попловок, сгон) для подключения к насосу |  | 4h | 2026-05-26 09:00 A | 2026-05-26 13:00 A |  | 100% |  |  |  | start no earlier than 2026-05-26 09:00 | Бундин В | 4h | 4h |
| 608 | 1.297.16 | испытать насос на часотоном приводе |  | 2h | 2026-05-19 09:00 A | 2026-05-19 11:00 A | 593 | 100% |  |  |  | start no earlier than 2026-05-20 09:00 | Тимофеев В | 2h | 2h |
| 609 | 1.297.17 | перенос с 3й линии бак с насосом, установка на линия 2 |  | 4h | 2026-04-08 09:00 A | 2026-04-08 13:00 A | 592 | 100% |  |  |  | start no earlier than 2026-04-08 09:00 | Некрасов А | 4h | 4h |
| 610 | 1.298 | бойлер на экструдере - установить трубку на клапан сброса и смонтировать её ы раковину |  | 1h | 2026-03-14 09:00 A | 2026-03-16 10:00 A |  | 100% |  |  |  | start no earlier than 2026-03-14 09:00 | Бундин В | 1h | 1h |
| 611 | 1.299 | смазать дверную ручку (входную) |  | 1h | 2026-03-15 09:00 A | 2026-03-16 10:00 A |  | 100% |  |  |  | start no earlier than 2026-03-15 09:00 | Бундин В | 1h | 1h |
| 612 | 1.300 | сделать ручку дверную (вход на упаковку) |  | 1h | 2026-03-15 09:00 A | 2026-03-16 10:00 A |  | 100% |  |  |  | start no earlier than 2026-03-15 09:00 | Бундин В | 1h | 1h |
| 613 | 1.301 | дверная ручка в туалет (подкрутить) |  | 1h | 2026-03-15 09:00 A | 2026-03-16 10:00 A |  | 100% |  |  |  | start no earlier than 2026-03-15 09:00 | Бундин В | 1h | 1h |
| 614 | 1.302 | штабелер экструдера натянуть цепь |  | 1h | 2026-03-13 08:00 A | 2026-03-13 10:00 A |  | 100% |  |  |  | start no earlier than 2026-03-13 08:00 | Дедов В | 1h | 1h |
| 615 | 1.303 | установить розетку возле роутера. Место монтажа фото от Шуранова |  | 2h | 2026-03-14 09:00 A | 2026-03-16 11:00 A |  | 100% |  |  |  | start no earlier than 2026-03-14 09:00 | Бундин В | 2h | 2h |
| 616 | 1.304 | линия 1 лоток охладителя под конвейером (по фото) - поднять на 3см, что бы не цеплял сетку. Снять / пересверлить крепеж |  | 2h | 2026-03-14 09:00 A | 2026-03-16 11:00 A |  | 100% |  |  |  | start no earlier than 2026-03-14 09:00 | Бундин В | 2h | 2h |
| 617 | 1.305 | изготовтиь полочку для роутера с "крышей. Двух скатная". |  | 4h | 2026-03-14 09:00 A | 2026-03-16 13:00 A |  | 100% |  |  |  | start no earlier than 2026-03-14 09:00 | Бундин В | 4h | 4h |

| ID | WBS | Task | Type | Duration | Start | Finish | Predecessors | Complete | Remaining | Actual start | Total slack | Constraint | Resources | Work | Actual work |
| --- | --- | --- | --- | --- | --- | --- | --- | --- | --- | --- | --- | --- | --- | --- | --- |
| 618 | 1.306 | **АКБ штабелер на навесках** |  | 43d | 2026-03-13 08:00 A | 2026-05-12 18:00 A |  | 100% |  |  |  |  |  | 2h | 2h |
| 619 | 1.306.1 | заявка на новые АКБ, отправить | milestone | 0d | 2026-03-13 08:00 A | 2026-03-13 08:00 A |  | 100% |  |  |  | start no earlier than 2026-03-13 08:00 | Шуранов Ю |  |  |
| 620 | 1.306.2 | получить счет | milestone | 0d | 2026-03-16 09:00 A | 2026-03-16 09:00 A | 619 | 100% |  |  |  | start no earlier than 2026-03-16 09:00 | Шуранов Ю |  |  |
| 621 | 1.306.3 | доставыка\ |  | 40d | 2026-03-16 09:00 A | 2026-05-12 18:00 A | 620 | 100% |  |  |  | start no earlier than 2026-03-13 08:00 |  |  |  |
| 622 | 1.306.4 | замена (получить на складе 2 АКБ и поменять на штабелере) |  | 2h | 2026-03-25 09:00 A | 2026-03-25 11:00 A |  | 100% |  |  |  | start no earlier than 2026-03-25 09:00 | Бобренок В | 2h | 2h |
| 623 | 1.307 | замена шнеков на 1 линии по команде. Подготовить / старые увезти |  | 1h | 2026-03-14 09:00 A | 2026-03-16 10:00 A |  | 100% |  |  |  | start no earlier than 2026-03-14 09:00 | Бобренок В; Некрасов А | 2h | 2h |
| 624 | 1.308 | **установить принтер датаматрикс на пролистыватель** |  | 151d? | 2026-03-13 09:00 A | 2026-09-30 18:00 |  | 20% | 120.8d? |  | 115.59d |  |  | 11h | 3h |
| 625 | 1.308.1 | разработка крепления принтера |  | 1h | 2026-03-13 09:00 A | 2026-03-13 10:00 A |  | 100% |  |  |  | start no earlier than 2026-03-13 08:00 | Зорькин В; Шуранов Ю | 2h | 2h |
| 626 | 1.308.2 | настройка ПО с агрегатором |  | 1d? | 2026-09-30 09:00 | 2026-09-30 18:00 |  |  |  |  | 115.59d | start no earlier than 2026-09-30 09:00 | Домоводов К | 8h |  |
| 627 | 1.308.3 | изучение документации |  | 1h | 2026-05-28 09:00 A | 2026-05-28 10:00 A |  | 100% |  |  |  | start no earlier than 2026-05-28 09:00 | Домоводов К | 1h | 1h |
| 628 | 1.309 | **заменить мятый профлист коррдиор подачи навесок** |  | 32.25d | 2026-03-13 09:00 A | 2026-04-28 11:00 A |  | 100% |  |  |  |  |  | 85h | 85h |
| 629 | 1.309.1 | расчет материал / заявка |  | 1h | 2026-03-13 09:00 A | 2026-03-13 10:00 A |  | 100% |  |  |  | start no earlier than 2026-03-13 09:00 | Шуранов Ю | 1h | 1h |
| 630 | 1.309.2 | доставка |  | 10d | 2026-03-13 10:00 A | 2026-03-27 10:00 A | 629 | 100% |  |  |  | start no earlier than 2026-03-12 08:00 | Карабанов | 80h | 80h |
| 631 | 1.309.3 | замена |  | 2h | 2026-04-28 09:00 A | 2026-04-28 11:00 A | 630 | 100% |  |  |  | start no earlier than 2026-04-28 09:00 | Некрасов А; Труфанов А | 4h | 4h |
| 632 | 1.310 | **заменить плинтус стена вдольпечи 2** |  | 11.06d? | 2026-03-26 09:00 | 2026-04-10 09:30 |  | 91% | 1d? | 2026-03-13 09:00 |  |  |  | 96.5h | 80.5h |
| 633 | 1.310.1 | заявка |  | 30min | 2026-03-13 09:00 A | 2026-03-13 09:30 A |  | 100% |  |  |  | start no earlier than 2026-03-13 09:00 | Шуранов Ю | 0.5h | 0.5h |
| 634 | 1.310.2 | доставка |  | 10d | 2026-03-13 09:30 A | 2026-03-27 09:30 A | 633 | 100% |  |  |  | start no earlier than 2026-03-12 08:00 | Карабанов | 80h | 80h |
| 635 | 1.310.3 | замена |  | 1d? | 2026-10-12 09:00 | 2026-10-12 18:00 | 634 |  |  |  | 106.59d | start no earlier than 2026-10-12 09:00 | Некрасов А; Олег | 16h |  |
| 636 | 1.311 | **заменить аллюминевый скотч на швах вентиляции** |  | 18.25d | 2026-03-12 09:00 A | 2026-04-07 11:00 A |  | 100% |  |  |  |  |  | 82.33h | 82.33h |
| 637 | 1.311.1 | заявка |  | 20min | 2026-03-12 09:00 A | 2026-03-12 09:20 A |  | 100% |  |  |  | start no earlier than 2026-03-12 08:00 | Зорькин В | 0.33h | 0.33h |
| 638 | 1.311.2 | доставка |  | 10d | 2026-03-12 09:20 A | 2026-03-26 09:20 A | 637 | 100% |  |  |  | start no earlier than 2026-03-12 08:00 | Карабанов | 80h | 80h |
| 639 | 1.311.3 | замена (также на улитках печей, циклона, стык регулировки шибера улитки) | manual | 2h | 2026-04-07 09:00 A | 2026-04-07 11:00 A | 638 | 100% |  |  |  | start no earlier than 2026-04-07 09:00 | Бундин В | 2h | 2h |
| 640 | 1.312 | **замена скорлупа утеплитель горячих труб печи** |  | 16d | 2026-03-13 09:00 A | 2026-04-05 11:00 A |  | 100% |  |  |  |  |  | 83h | 83h |
| 641 | 1.312.1 | заявка |  | 1h | 2026-03-13 09:00 A | 2026-03-13 10:00 A |  | 100% |  |  |  | start no earlier than 2026-03-13 09:00 | Зорькин В | 1h | 1h |
| 642 | 1.312.2 | доставка |  | 10d | 2026-03-13 10:00 A | 2026-03-27 10:00 A | 641 | 100% |  |  |  | start no earlier than 2026-03-12 08:00 | Карабанов | 80h | 80h |
| 643 | 1.312.3 | замена | manual | 2h | 2026-04-05 09:00 A | 2026-04-05 11:00 A | 642 | 100% |  |  |  | start no earlier than 2026-04-05 09:00 | Бундин В | 2h | 2h |

| ID | WBS | Task | Type | Duration | Start | Finish | Predecessors | Complete | Actual start | Actual finish | Constraint | Resources | Work | Actual work |
| --- | --- | --- | --- | --- | --- | --- | --- | --- | --- | --- | --- | --- | --- | --- |
| 644 | 1.313 | **купить прокатный запайщик** |  | 85.12d? | 2026-03-16 09:00 A | 2026-07-13 10:00 A |  | 100% |  |  |  |  | 11h | 11h |
| 645 | 1.313.1 | поиск / заявка |  | 2h | 2026-03-16 09:00 A | 2026-03-16 11:00 A |  | 100% |  |  | start no earlier than 2026-03-16 09:00 | Зорькин В | 2h | 2h |
| 646 | 1.313.2 | получить счет + договор |  | 1h | 2026-05-12 09:00 A | 2026-05-12 10:00 A | 645 | 100% |  |  | start no earlier than 2026-05-12 09:00 | Зорькин В | 1h | 1h |
| 647 | 1.313.3 | оплата | milestone | 0d | 2026-05-12 10:00 A | 2026-05-12 10:00 A | 646 | 100% |  |  | start no earlier than 2026-03-12 08:00 | Домоводов К |  |  |
| 648 | 1.313.4 | доставка |  | 40d | 2026-05-12 10:00 A | 2026-07-13 10:00 A | 647 | 100% |  |  | start no earlier than 2026-03-12 08:00 |  |  |  |
| 649 | 1.313.5 | приемка / сборка |  | 1d? | 2026-06-29 09:00 A | 2026-06-29 18:00 A | 648 | 100% |  |  | start no earlier than 2026-03-12 08:00 | Тимофеев В | 8h | 8h |
| 650 | 1.314 | сборка рохли 2шт |  | 1h | 2026-03-13 09:00 A | 2026-03-13 10:00 A |  | 100% |  |  | start no earlier than 2026-03-13 09:00 | Тимофеев В | 1h | 1h |
| 651 | 1.315 | изготовить герметичную крышку на подачку гидролизата |  | 2h | 2026-05-20 09:00 A | 2026-05-20 11:00 A |  | 100% |  |  | start no earlier than 2026-05-20 09:00 | Дедов В; Шуранов Ю | 4h | 4h |
| 652 | 1.316 | **установить крышку печи торцевую с стороны экструдера на шарниры** |  | 12.5d | 2026-03-25 09:00 | 2026-04-10 13:00 |  | 100% | 2026-03-06 09:00 | 2026-09-11 13:00 |  |  | 88.08h | 88.08h |
| 653 | 1.316.1 | заказ шарниры |  | 5min | 2026-03-06 09:00 A | 2026-03-06 09:05 A |  | 100% |  |  | start no earlier than 2026-03-06 08:00 | Шуранов Ю | 0.08h | 0.08h |
| 654 | 1.316.2 | доставка |  | 10d | 2026-03-06 09:05 A | 2026-03-20 09:05 A | 653 | 100% |  |  | start no earlier than 2026-03-06 08:00 | Карабанов | 80h | 80h |
| 655 | 1.316.3 | монтаж линия 1 |  | 4h | 2026-05-13 09:00 A | 2026-05-13 13:00 A | 654 | 100% |  |  | start no earlier than 2026-05-13 09:00 | Бобренок В | 4h | 4h |
| 656 | 1.316.4 | монтаж линия 1 и 2 печи (чтобы открывалась и не мешала открыванию лотку сверху) | manual | 4h | 2026-09-11 09:00 A | 2026-09-11 13:00 A | 654 | 100% |  |  | start no earlier than 2026-09-11 09:00 | Макаревич А | 4h | 4h |
| 657 | 1.317 | **квадропак заменить пружины на лапках** |  | 10.12d | 2026-03-18 09:00 A | 2026-04-01 10:00 A |  | 100% |  |  |  |  | 3h | 3h |
| 658 | 1.317.1 | попытка заменить |  | 1h | 2026-03-18 09:00 A | 2026-03-18 10:00 A |  | 100% |  |  | start no earlier than 2026-03-18 09:00 | Дедов В | 1h | 1h |
| 659 | 1.317.2 | проврить ролики на износ / заказать |  | 1h | 2026-03-19 09:00 A | 2026-03-19 10:00 A |  | 100% |  |  | start no earlier than 2026-03-19 08:00 | Зорькин В | 1h | 1h |
| 660 | 1.317.3 | проверить / разрабоать полпн прижимная пластина регулировка |  | 1h | 2026-04-01 09:00 A | 2026-04-01 10:00 A |  | 100% |  |  | start no earlier than 2026-04-01 09:00 | Шуранов Ю | 1h | 1h |
| 661 | 1.318 | **звонок на ворота по привозу навесок** |  | 37.25d | 2026-03-05 09:00 A | 2026-04-27 11:00 A |  | 100% |  |  |  |  | 82.5h | 82.5h |
| 662 | 1.318.1 | заявка на сирену / звонок |  | 30min | 2026-03-05 09:00 A | 2026-03-05 09:30 A |  | 100% |  |  | start no earlier than 2026-03-05 09:00 | Шуранов Ю | 0.5h | 0.5h |
| 663 | 1.318.2 | доставка |  | 10d | 2026-03-12 09:00 A | 2026-03-25 18:00 A | 662 | 100% |  |  | start no earlier than 2026-03-12 08:00 | Карабанов | 80h | 80h |
| 664 | 1.318.3 | монтаж кнопка и звонок на складе (кнопку устанавливаем справа от ворот- звонок возле ВРУ слева |  | 2h | 2026-04-25 09:00 A | 2026-04-27 11:00 A | 663 | 100% |  |  | start no earlier than 2026-04-25 09:00 | Бобренок В | 2h | 2h |
| 665 | 1.319 | **установить профлист на левую стену** |  | 47d? | 2026-03-12 09:00 A | 2026-05-15 18:00 A |  | 100% |  |  |  |  | 185.5h | 185.5h |
| 666 | 1.319.1 | расчет материал с Олегом |  | 1h | 2026-03-12 09:00 A | 2026-03-12 10:00 A |  | 100% |  |  | start no earlier than 2026-03-12 09:00 | Шуранов Ю | 1h | 1h |
| 667 | 1.319.2 | заявка |  | 30min | 2026-03-19 09:00 A | 2026-03-19 09:30 A | 666 | 100% |  |  | start no earlier than 2026-03-19 09:00 | Шуранов Ю | 0.5h | 0.5h |
| 668 | 1.319.3 | доставка |  | 10d | 2026-03-19 09:30 A | 2026-04-02 09:30 A | 667 | 100% |  |  | start no earlier than 2026-03-04 08:00 | Карабанов | 80h | 80h |
| 669 | 1.319.4 | монтаж пробный ряд |  | 4h | 2026-04-22 09:00 A | 2026-04-22 13:00 A |  | 100% |  |  | start no earlier than 2026-04-22 09:00 | Некрасов А; Олег; Труфанов А | 12h | 12h |
| 670 | 1.319.5 | монтаж каркас |  | 1d? | 2026-04-23 14:00 A | 2026-04-24 13:00 A | 668, 669FS+1d | 100% |  |  | start no earlier than 2026-04-22 09:00 | Некрасов А; Труфанов А | 16h | 16h |
| 671 | 1.319.6 | монтаж лист |  | 6h | 2026-04-28 09:00 A | 2026-04-28 16:00 A | 670 | 100% |  |  | start no earlier than 2026-04-28 09:00 | Некрасов А; Труфанов А | 12h | 12h |
| 672 | 1.319.7 | монтаж уровень 2 |  | 4d | 2026-05-12 09:00 A | 2026-05-15 18:00 A |  | 100% |  |  | start no earlier than 2026-05-12 08:00 | Некрасов А; Труфанов А | 64h | 64h |

| ID | WBS | Task | Type | Duration | Start | Finish | Predecessors | Complete | Constraint | Resources | Work | Actual work |
| --- | --- | --- | --- | --- | --- | --- | --- | --- | --- | --- | --- | --- |
| 673 | 1.320 | **модернизация вентиляции** |  | 135.5d | 2026-03-13 09:00 A | 2026-09-15 13:00 A |  | 100% |  |  | 14.5h | 14.5h |
| 674 | 1.320.1 | заявка врезки для отбора проб |  | 15min | 2026-08-21 09:00 A | 2026-08-21 09:15 A |  | 100% | start no earlier than 2026-08-21 09:00 | Зорькин В | 0.25h | 0.25h |
| 675 | 1.320.2 | контроль доставки врезки для отбора проб |  | 15min | 2026-09-09 09:00 A | 2026-09-09 09:15 A | 674FS+7d | 100% | start no earlier than 2026-09-09 09:00 | Зорькин В | 0.25h | 0.25h |
| 676 | 1.320.3 | монтаж врезки для отбора проб |  | 4h | 2026-09-15 09:00 A | 2026-09-15 13:00 A | 675FS+1d | 100% | start no earlier than 2026-09-15 09:00 | Некрасов А; Труфанов А | 8h | 8h |
| 677 | 1.320.4 | составить схему, расчет |  | 2h | 2026-03-13 09:00 A | 2026-03-13 11:00 A |  | 100% | start no earlier than 2026-03-13 09:00 | Домоводов К | 2h | 2h |
| 678 | 1.320.5 | монтаж вентиляторов |  | 4h | 2026-05-12 09:00 A | 2026-05-12 13:00 A |  | 100% | start no earlier than 2026-05-12 08:00 | оплот | 4h | 4h |
| 679 | 1.321 | **заменаить фитинги на жирах** |  | 44.12d | 2026-02-19 09:00 A | 2026-04-22 10:00 A |  | 100% |  |  | 81.5h | 81.5h |
| 680 | 1.321.1 | заявка |  | 30min | 2026-02-19 09:00 A | 2026-02-19 09:30 A |  | 100% | start no earlier than 2026-02-19 09:00 | Шуранов Ю | 0.5h | 0.5h |
| 681 | 1.321.2 | доставка |  | 10d | 2026-02-19 09:30 A | 2026-03-05 09:30 A | 680 | 100% |  | Карабанов | 80h | 80h |
| 682 | 1.321.3 | контроль поставки | milestone | 0d | 2026-03-12 08:00 A | 2026-03-12 08:00 A | 681 | 100% | start no earlier than 2026-03-12 08:00 | Шуранов Ю |  |  |
| 683 | 1.321.4 | контроль. Пришли опять не те | milestone | 0min | 2026-03-12 09:00 A | 2026-03-12 09:00 A | 681, 682 | 100% | start no earlier than 2026-03-12 09:00 | Зорькин В |  |  |
| 684 | 1.321.5 | контроль | milestone | 0d | 2026-04-01 09:00 A | 2026-04-01 09:00 A |  | 100% | start no earlier than 2026-04-01 09:00 | Зорькин В |  |  |
| 685 | 1.321.6 | замена |  | 1h | 2026-04-22 09:00 A | 2026-04-22 10:00 A | 683FS+2d | 100% | start no earlier than 2026-04-22 09:00 | Бобренок В | 1h | 1h |
| 686 | 1.322 | **жиротопка замена воздухоотводчиков** |  | 24.12d | 2026-03-04 09:00 A | 2026-04-07 10:00 A |  | 100% |  |  | 41.25h | 41.25h |
| 687 | 1.322.1 | заявка |  | 15min | 2026-03-04 09:00 A | 2026-03-04 09:15 A |  | 100% | start no earlier than 2026-03-04 09:00 | Зорькин В | 0.25h | 0.25h |
| 688 | 1.322.2 | доставка |  | 5d | 2026-03-04 09:15 A | 2026-03-11 09:15 A | 687 | 100% | start no earlier than 2026-02-27 08:00 | Карабанов | 40h | 40h |
| 689 | 1.322.3 | замена |  | 1h | 2026-04-07 09:00 A | 2026-04-07 10:00 A | 688 | 100% | start no earlier than 2026-04-07 09:00 | Бундин В | 1h | 1h |
| 690 | 1.323 | **увеличить освещение в зоне квадропака** |  | 11.12d | 2026-03-04 09:00 A | 2026-03-19 10:00 A |  | 100% |  |  | 83.5h | 83.5h |
| 691 | 1.323.1 | составить список мматериал для монтажа |  | 30min | 2026-03-04 09:00 A | 2026-03-04 09:30 A |  | 100% | start no earlier than 2026-03-04 09:00 | Зорькин В; Шуранов Ю | 1h | 1h |
| 692 | 1.323.2 | заявка трос, светильники |  | 30min | 2026-03-04 09:30 A | 2026-03-04 10:00 A | 691 | 100% | start no earlier than 2026-02-27 08:00 | Шуранов Ю | 0.5h | 0.5h |
| 693 | 1.323.3 | доставка |  | 10d | 2026-03-05 10:00 A | 2026-03-19 10:00 A | 692FS+1d | 100% | start no earlier than 2026-02-27 08:00 | Карабанов | 80h | 80h |
| 694 | 1.323.4 | монтаж |  | 2h | 2026-03-06 09:00 A | 2026-03-06 11:00 A |  | 100% | start no earlier than 2026-03-06 09:00 | Бобренок В | 2h | 2h |
| 695 | 1.324 | **установить орг стекло/нерж на обратный ход ленты на раму конвейера** |  | 38.25d | 2026-03-03 09:00 A | 2026-04-24 11:00 A |  | 100% |  |  | 83.5h | 83.5h |
| 696 | 1.324.1 | заявка нерж |  | 30min | 2026-03-03 09:00 A | 2026-03-03 09:30 A |  | 100% | start no earlier than 2026-03-03 09:00 | Зорькин В | 0.5h | 0.5h |
| 697 | 1.324.2 | доставка |  | 10d | 2026-03-03 09:30 A | 2026-03-17 09:30 A | 696 | 100% | start no earlier than 2026-03-02 09:00 | Карабанов | 80h | 80h |
| 698 | 1.324.3 | подготовка материала в размер по аналогии 2 линии |  | 1h | 2026-04-15 09:00 A | 2026-04-15 10:00 A | 697 | 100% | start no earlier than 2026-04-15 09:00 | Бундин В | 1h | 1h |
| 699 | 1.324.4 | установка на остановке 1 линии (переустановить) |  | 2h | 2026-04-24 09:00 A | 2026-04-24 11:00 A |  | 100% | start no earlier than 2026-04-24 09:00 | Бобренок В | 2h | 2h |

| ID | WBS | Task | Duration | Start | Finish | Predecessors | Complete | Constraint | Resources | Work | Actual work |
| --- | --- | --- | --- | --- | --- | --- | --- | --- | --- | --- | --- |
| 700 | 1.325 | **установить роутер в зону экструдера для регистрации данных** | 2.12d | 2026-03-02 09:00 A | 2026-03-04 10:00 A |  | 100% |  |  | 10.17h | 10.17h |
| 701 | 1.325.1 | монтаж кабель / розетка, роутер | 4h | 2026-03-02 09:00 A | 2026-03-02 13:00 A |  | 100% | start no earlier than 2026-03-02 09:00 | Некрасов А; Труфанов А | 8h | 8h |
| 702 | 1.325.2 | Монтаж розетки для роутера | 1h | 2026-03-03 09:00 A | 2026-03-03 10:00 A |  | 100% | start no earlier than 2026-03-03 09:00 | Тимофеев В | 1h | 1h |
| 703 | 1.325.3 | Заявка Айтишнику на монтаж наконечников | 10min | 2026-03-03 09:00 A | 2026-03-03 09:10 A |  | 100% | start no earlier than 2026-03-03 09:00 | Зорькин В | 0.17h | 0.17h |
| 704 | 1.325.4 | Монтаж штекеров на кабель | 1h | 2026-03-04 09:00 A | 2026-03-04 10:00 A |  | 100% | start no earlier than 2026-03-04 09:00 | Коленкоров | 1h | 1h |
| 705 | 1.326 | **ремонт приточной вентиляции** | 47.25d | 2026-02-26 09:00 A | 2026-05-04 11:00 A |  | 100% |  |  | 334.5h | 334.5h |
| 706 | 1.326.1 | заявка калорифер | 30min | 2026-03-04 09:00 A | 2026-03-04 09:30 A |  | 100% | start no earlier than 2026-03-04 09:00 | Зорькин В | 0.5h | 0.5h |
| 707 | 1.326.2 | доставка | 10d | 2026-03-04 09:30 A | 2026-03-20 09:30 A | 706 | 100% |  | Карабанов | 80h | 80h |
| 708 | 1.326.3 | замена калорифер | 4h | 2026-03-11 09:00 A | 2026-03-11 13:00 A |  | 100% | start no earlier than 2026-03-11 09:00 | Некрасов А; Труфанов А | 8h | 8h |
| 709 | 1.326.4 | дать фото насоса | 20min | 2026-02-26 09:00 A | 2026-02-26 09:20 A |  | 100% | start no earlier than 2026-02-26 08:00 | Бундин В | 0.33h | 0.33h |
| 710 | 1.326.5 | заявка насос вода | 30min | 2026-03-02 09:30 A | 2026-03-02 10:00 A | 706, 709 | 100% | start no earlier than 2026-02-26 08:00 | Зорькин В | 0.5h | 0.5h |
| 711 | 1.326.6 | доставка | 10d | 2026-03-02 10:00 A | 2026-03-16 10:00 A | 710 | 100% | start no earlier than 2026-02-26 08:00 | Карабанов | 80h | 80h |
| 712 | 1.326.7 | контроль доставки насос и заслонка | 10min | 2026-03-24 09:00 A | 2026-03-24 09:10 A |  | 100% | start no earlier than 2026-03-24 08:00 | Зорькин В | 0.17h | 0.17h |
| 713 | 1.326.8 | замена насоса | 1h | 2026-03-25 09:10 A | 2026-03-25 10:10 A | 712FS+1d | 100% | start no earlier than 2026-03-24 09:00 | Труфанов А | 1h | 1h |
| 714 | 1.326.9 | заявка привод заслонки | 30min | 2026-03-04 09:00 A | 2026-03-04 09:30 A | 710 | 100% | start no earlier than 2026-03-04 09:00 | Зорькин В | 0.5h | 0.5h |
| 715 | 1.326.10 | доставка | 10d | 2026-03-04 09:30 A | 2026-03-18 09:30 A | 714 | 100% | start no earlier than 2026-02-26 08:00 | Карабанов | 80h | 80h |
| 716 | 1.326.11 | замена привода заслонки | 1h | 2026-05-04 09:00 A | 2026-05-04 10:00 A | 712FS+1d | 100% | start no earlier than 2026-05-04 09:00 | Бобренок В | 1h | 1h |
| 717 | 1.326.12 | заявка фильтры на приточная вентиляция | 30min | 2026-03-04 09:00 A | 2026-03-04 09:30 A |  | 100% | start no earlier than 2026-03-04 09:00 | Зорькин В | 0.5h | 0.5h |
| 718 | 1.326.13 | доставка | 10d | 2026-03-04 09:30 A | 2026-03-18 09:30 A | 717 | 100% | start no earlier than 2026-02-27 08:00 | Карабанов | 80h | 80h |
| 719 | 1.326.14 | замена | 2h | 2026-05-04 09:00 A | 2026-05-04 11:00 A | 718 | 100% | start no earlier than 2026-05-04 09:00 | Некрасов А | 2h | 2h |
| 720 | 1.327 | **монтаж регистратор данных линия 1 и 2:** | 1.12d | 2026-02-24 09:00 A | 2026-02-25 10:00 A |  | 100% |  |  | 5h | 5h |
| 721 | 1.327.1 | установить розетку и автомат для для блока питания в ШУ экструдера, без подключения | 2h | 2026-02-24 09:00 A | 2026-02-24 11:00 A |  | 100% | start no earlier than 2026-02-24 09:00 | Дедов В | 2h | 2h |
| 722 | 1.327.2 | монтаж безподключения кабель RS485 по аналогии с линия 3 - только часотный привод. На складе. | 1h | 2026-02-24 09:00 A | 2026-02-24 10:00 A |  | 100% | start no earlier than 2026-02-24 09:00 | Дедов В | 1h | 1h |
| 723 | 1.327.3 | подключение розеток для блока питания в ШУ | 1h | 2026-02-25 09:00 A | 2026-02-25 10:00 A |  | 100% | start no earlier than 2026-02-25 09:00 | Некрасов А | 1h | 1h |
| 724 | 1.327.4 | монтаж пультов управления и индикации регистратор, по аналогии с линия 3 | 1h | 2026-02-25 09:00 A | 2026-02-25 10:00 A |  | 100% | start no earlier than 2026-02-25 09:00 | Некрасов А | 1h | 1h |
| 725 | 1.328 | заменить пластик втулку на металл деталь уплотнение вала прекондицинера 2 линия | 1d? | 2025-09-08 09:00 A | 2025-09-08 18:00 A |  | 100% | start no earlier than 2025-09-08 09:00 |  |  |  |

| ID | WBS | Task | Duration | Start | Finish | Predecessors | Complete | Actual finish | Total slack | Constraint | Resources | Work | Actual work |
| --- | --- | --- | --- | --- | --- | --- | --- | --- | --- | --- | --- | --- | --- |
| 726 | 1.329 | **баки жир 2 линия устноавить наконечники. От 23.05.25** | 265.25d | 2025-04-16 09:00 A | 2026-04-22 11:00 A |  | 100% |  |  |  |  | 42.5h | 42.5h |
| 727 | 1.329.1 | заявка на наконечнки | 30min | 2025-04-16 09:00 A | 2025-04-16 09:30 A |  | 100% |  |  | start no earlier than 2025-04-16 09:00 | Зорькин В | 0.5h | 0.5h |
| 728 | 1.329.2 | доставка | 5d | 2025-04-16 09:30 A | 2025-04-23 09:30 A | 727 | 100% |  |  | start no earlier than 2025-04-14 09:00 | Мультан | 40h | 40h |
| 729 | 1.329.3 | ТО каблей, клемников | 2h | 2026-04-22 09:00 A | 2026-04-22 11:00 A | 728 | 100% |  |  | start no earlier than 2026-04-22 09:00 | Труфанов А | 2h | 2h |
| 730 | 1.330 | **установить фильтры на жир** | 89.12d? | 2025-05-14 09:00 A | 2025-09-16 10:00 A |  | 100% |  |  |  |  | 50h | 50h |
| 731 | 1.330.1 | изготовить переходники токарь разместить | 1h | 2025-09-08 09:00 A | 2025-09-08 10:00 A |  | 100% |  |  | start no earlier than 2025-09-08 09:00 | Зорькин В | 1h | 1h |
| 732 | 1.330.2 | контроль доставки | 5d | 2025-09-08 10:00 A | 2025-09-15 10:00 A | 731 | 100% |  |  | start no earlier than 2025-09-08 09:00 | Зорькин В | 40h | 40h |
| 733 | 1.330.3 | замена | 1d? | 2025-09-15 10:00 A | 2025-09-16 10:00 A | 732 | 100% |  |  | start no earlier than 2025-09-08 09:00 | Тимофеев В | 8h | 8h |
| 734 | 1.330.4 | установить фильтры на жир 2шт через краны на тройник | 1h | 2025-05-14 09:00 A | 2025-05-14 10:00 A |  | 100% |  |  | start no earlier than 2025-05-14 09:00 | Тимофеев В | 1h | 1h |
| 735 | 1.331 | **палетные ворота подача навесок + подача жир** | 14d? | 2025-07-17 09:00 A | 2025-08-05 18:00 A |  | 100% |  |  |  |  | 32h | 32h |
| 736 | 1.331.1 | подготовить чертеж | 1d? | 2025-07-17 09:00 A | 2025-07-17 18:00 A |  | 100% |  |  | start no earlier than 2025-07-17 09:00 | Зорькин В | 8h | 8h |
| 737 | 1.331.2 | сборка рамы | 2d | 2025-07-25 09:00 A | 2025-07-28 18:00 A | 736 | 100% |  |  | start no earlier than 2025-07-25 09:00 | Некрасов А | 16h | 16h |
| 738 | 1.331.3 | монтаж | 1d? | 2025-08-05 09:00 A | 2025-08-05 18:00 A | 737 | 100% |  |  | start no earlier than 2025-08-05 09:00 | Некрасов А | 8h | 8h |
| 739 | 1.332 | защита подшипников паронтом + подготовка | 4h | 2025-06-18 09:00 A | 2025-06-18 13:00 A |  | 100% |  |  | start no earlier than 2025-06-18 09:00 | Тимофеев В | 4h | 4h |
| 740 | 1.333 | **квадропак ТО + составить карту смазки и ТО + составить список ЗИП** | 0.5d | 2025-04-02 09:00 A | 2025-04-02 13:00 A |  | 100% |  |  |  |  | 4h | 4h |
| 741 | 1.333.1 | оформить карту ТО | 4h | 2025-04-02 09:00 A | 2025-04-02 13:00 A |  | 100% |  |  | start no earlier than 2025-04-02 09:00 | Зорькин В | 4h | 4h |
| 742 | 1.334 | **квадропак некрасивый шов - золотинка** | 104.25d | 2025-01-13 09:00 A | 2025-06-06 11:00 |  | 100% | 2025-04-17 16:30 |  |  |  | 8h | 8h |
| 743 | 1.334.1 | **изготовление термоножа с вставкойвставкой** | 0.12d | 2025-01-13 09:00 A | 2025-01-13 10:00 A |  | 100% |  |  |  |  | 1h | 1h |
| 744 | 1.334.1.1 | чертеж | 1h | 2025-01-13 09:00 A | 2025-01-13 10:00 A |  | 100% |  |  | start no earlier than 2025-01-13 09:00 | Зорькин В | 1h | 1h |
| 745 | 1.334.2 | **установка тефлона на термонож** | 42.25d | 2025-04-17 09:00 A | 2025-06-06 11:00 |  | 100% | 2025-04-17 16:30 |  |  |  | 7h | 7h |
| 746 | 1.334.2.1 | разработать метод крепления | 30min | 2025-04-17 09:00 A | 2025-04-17 09:30 A |  | 100% |  |  | start no earlier than 2025-04-17 09:00 | Зорькин В; Шуранов Ю | 1h | 1h |
| 747 | 1.334.2.2 | чертеж | 4h | 2025-04-17 09:30 A | 2025-04-17 14:30 A | 746 | 100% |  |  | start no earlier than 2025-01-17 09:00 | Зорькин В | 4h | 4h |
| 748 | 1.334.2.3 | орг изготовление деталей | 2h | 2025-04-17 14:30 A | 2025-04-17 16:30 A | 747 | 100% |  |  | start no earlier than 2025-04-16 09:00 | Шуранов Ю | 2h | 2h |
| 749 | 1.335 | **режет кабель ЛУКАС силовой в лотке эстакада у КПП** | 444.5d | 2024-08-02 09:00 | 2026-04-16 13:00 |  |  |  | 242.09d |  |  | 4.5h |  |
| 750 | 1.335.1 | решение о переговорах ГП | 30min | 2024-08-02 09:00 | 2024-08-02 09:30 |  |  |  | 686.53d | start no earlier than 2024-08-02 09:00 | Домоводов К | 0.5h |  |
| 751 | 1.335.2 | перекладка кабель | 4h | 2026-04-16 09:00 | 2026-04-16 13:00 |  |  |  | 242.09d | start no earlier than 2026-04-16 08:00 | Олег | 4h |  |

| ID | WBS | Task | Duration | Start | Finish | Predecessors | Complete | Total slack | Constraint | Resources | Work | Actual work |
| --- | --- | --- | --- | --- | --- | --- | --- | --- | --- | --- | --- | --- |
| 752 | 1.336 | **ШР2.2 замена автомат на циклон на номинальный** | 5.06d | 2026-04-10 09:00 A | 2026-04-17 09:30 A |  | 100% |  |  |  | 41.5h | 41.5h |
| 753 | 1.336.1 | прорверить какой стоит / заявка по мощности мотора | 30min | 2026-04-10 09:00 A | 2026-04-10 09:30 A |  | 100% |  | start no earlier than 2026-04-10 09:00 | Тимофеев В | 0.5h | 0.5h |
| 754 | 1.336.2 | достьавка | 5d | 2026-04-10 09:30 A | 2026-04-17 09:30 A | 753 | 100% |  | start no earlier than 2024-03-04 09:00 | Малинина М | 40h | 40h |
| 755 | 1.336.3 | замена | 1h | 2026-04-16 09:30 A | 2026-04-16 10:30 A | 754 | 100% |  | start no earlier than 2026-04-06 09:00 | Шуранов Ю | 1h | 1h |
| 756 | 1.337 | **кронштейн фотометки ТЕКО усилить** | 10.12d | 2024-09-11 09:00 A | 2024-09-25 10:00 A |  | 100% |  |  |  | 82h | 82h |
| 757 | 1.337.1 | поиск заявка кронштейна для датчика с регулировкой в3 плоскостях | 1h | 2024-09-11 09:00 A | 2024-09-11 10:00 A |  | 100% |  | start no earlier than 2024-09-11 09:00 | Зорькин В | 1h | 1h |
| 758 | 1.337.2 | доставка | 10d | 2024-09-11 10:00 A | 2024-09-25 10:00 A | 757 | 100% |  | start no earlier than 2024-09-11 09:00 | Мультан | 80h | 80h |
| 759 | 1.337.3 | замена | 1h | 2024-09-21 10:00 A | 2024-09-23 10:00 A | 758 | 100% |  | start no earlier than 2024-09-11 09:00 | Тимофеев В | 1h | 1h |
| 760 | 1.338 | **квадропак греет пневмоцилиндр термоножа** | 14.5d | 2024-09-12 09:00 A | 2024-10-02 13:00 A |  | 100% |  |  |  | 85h | 85h |
| 761 | 1.338.1 | решение о применении теплоизоляц пластины / заявка | 1h | 2024-09-12 09:00 A | 2024-09-12 10:00 A |  | 100% |  | start no earlier than 2024-09-12 09:00 | Зорькин В | 1h | 1h |
| 762 | 1.338.2 | доставка | 10d | 2024-09-12 10:00 A | 2024-09-26 10:00 A | 761 | 100% |  | start no earlier than 2024-09-11 09:00 | Мультан | 80h | 80h |
| 763 | 1.338.3 | замена | 4h | 2024-10-02 09:00 A | 2024-10-02 13:00 A | 762 | 100% |  | start no earlier than 2024-10-02 09:00 | Тимофеев В | 4h | 4h |
| 764 | 1.339 | **ремонт комппрессора - сдать по гарантии** | 739.12d | 2023-10-31 09:00 A | 2026-08-31 10:00 A |  | 100% |  |  |  | 2h | 2h |
| 765 | 1.339.1 | контроль снабжения - отправитьт поставщику | 1h | 2023-10-31 09:00 A | 2023-10-31 10:00 A |  | 100% |  | start no earlier than 2023-10-31 09:00 | Лобанов И | 1h | 1h |
| 766 | 1.339.2 | контроль возврата | 1h | 2026-08-31 09:00 A | 2026-08-31 10:00 A | 765 | 100% |  | start no earlier than 2026-08-31 09:00 | Зорькин В | 1h | 1h |
| 767 | 1.340 | **убрать кабеля с пола на упаковке 1 цех** | 0.02d | 2026-09-01 09:00 | 2026-09-01 09:10 |  |  | 144.57d |  |  | 0.17h |  |
| 768 | 1.340.1 | проверить на актуальность | 10min | 2026-09-01 09:00 | 2026-09-01 09:10 |  |  | 144.57d | start no earlier than 2026-09-01 09:00 | Зорькин В | 0.17h |  |
| 769 | 1.341 | режет металлом изоляцию кабеля в прорходе стены в 1 цех угол комппрессора - обезвредить | 1h | 2023-12-28 09:00 A | 2023-12-28 10:00 A |  | 100% |  | start no earlier than 2023-12-28 09:00 | Бобренок В; Дедов В | 2h | 2h |
| 770 | 1.342 | **убрать кабеля с пола и заменить переноски штатными розетками - участок жира 1 цех** | 0.01d | 2026-09-01 09:00 | 2026-09-01 09:05 |  |  | 144.58d |  |  | 0.08h |  |
| 771 | 1.342.1 | проверить на актуальность | 5min | 2026-09-01 09:00 | 2026-09-01 09:05 |  |  | 144.58d | start no earlier than 2026-09-01 09:00 | Зорькин В | 0.08h |  |
| 772 | 1.343 | изготовить ключь для ТП | 2h | 2023-06-21 09:00 A | 2023-06-21 11:00 A |  | 100% |  | start no earlier than 2023-06-21 09:00 | Домоводов К | 2h | 2h |
| 773 | 1.344 | заменитьт автомат 63С кондиционер 1 цех | 1h | 2023-06-22 09:00 A | 2023-06-22 10:00 A |  | 100% |  | start no earlier than 2023-06-22 09:00 | Тимофеев В | 1h | 1h |
| 774 | 1.345 | **Барабаны 2 линия дражжировка** | 18d | 2026-04-21 09:00 A | 2026-05-14 18:00 A |  | 100% |  |  |  | 94.5h | 94.5h |
| 775 | 1.345.1 | Проработать модернизацию форсунок | 3h | 2026-04-22 09:00 A | 2026-04-22 12:00 A |  | 100% |  | start no earlier than 2026-04-22 09:00 | Зорькин В; Домоводов К | 6h | 6h |
| 776 | 1.345.2 | сделать заявку на доп форсунки, расходники | 30min | 2026-04-22 09:00 A | 2026-04-22 09:30 A |  | 100% |  | start no earlier than 2026-04-22 09:00 | Зорькин В | 0.5h | 0.5h |
| 777 | 1.345.3 | доставка | 10d | 2026-04-30 09:00 A | 2026-05-14 18:00 A |  | 100% |  | start no earlier than 2026-04-30 09:00 | Карабанов | 80h | 80h |
| 778 | 1.345.4 | Внедрение и монтаж | 2h | 2026-05-08 09:00 A | 2026-05-08 11:00 A |  | 100% |  | start no earlier than 2026-05-08 09:00 | Зорькин В; Тимофеев В | 4h | 4h |

| ID | WBS | Task | Type | Duration | Start | Finish | Predecessors | Complete | Actual start | Actual finish | Constraint | Resources | Work | Actual work |
| --- | --- | --- | --- | --- | --- | --- | --- | --- | --- | --- | --- | --- | --- | --- |
| 779 | 1.345.5 | **Парогенератор** |  | 0.25d | 2026-04-21 09:00 A | 2026-04-21 11:00 A |  | 100% |  |  |  |  | 4h | 4h |
| 780 | 1.345.5.1 | Проверить термадатчик (панельтемпературы) TC4R на корректность работы, скачет температура, по необходимости заменить |  | 2h | 2026-04-21 09:00 A | 2026-04-21 11:00 A |  | 100% |  |  | start no earlier than 2026-04-21 08:00 | Бундин В; Зорькин В | 4h | 4h |
| 781 | 1.346 | **Звонок на экструдер** |  | 14.12d | 2026-04-07 09:00 A | 2026-04-27 10:00 A |  | 100% |  |  |  |  | 6h | 6h |
| 782 | 1.346.1 | Протяжка кабеля от ворот к экструдерщикам |  | 4h | 2026-04-07 09:00 A | 2026-04-07 13:00 A |  | 100% |  |  | start no earlier than 2026-04-22 09:00 | Дедов В | 4h | 4h |
| 783 | 1.346.2 | монтаж звонка |  | 1h | 2026-04-25 09:00 A | 2026-04-27 10:00 A | 782 | 100% |  |  | start no earlier than 2026-04-25 09:00 | Дедов В | 1h | 1h |
| 784 | 1.346.3 | монтаж кнопки за воротами |  | 1h | 2026-04-25 10:00 A | 2026-04-27 10:00 A | 783 | 100% |  |  | start no earlier than 2026-04-21 08:00 | Дедов В | 1h | 1h |
| 785 | 1.347 | **Насос гидролизата** |  | 28.01d | 2026-08-04 09:00 A | 2026-09-10 09:05 A |  | 100% |  |  |  |  | 0.42h | 0.42h |
| 786 | 1.347.1 | Заказать ремкомплект шнек, резинка, трубка, связаться с производителем |  | 20min | 2026-08-04 09:00 A | 2026-08-04 09:20 A |  | 100% |  |  | start no earlier than 2026-08-04 09:00 | Зорькин В | 0.33h | 0.33h |
| 787 | 1.347.2 | Доставка контроль сам насос шетсрен |  | 5min | 2026-09-10 09:00 A | 2026-09-10 09:05 A |  | 100% |  |  | start no earlier than 2026-09-10 09:00 | Зорькин В | 0.08h | 0.08h |
| 788 | 1.348 | **Дражжировка конвейер №1 после печки** |  | 122.12d | 2026-04-22 08:00 A | 2026-09-30 10:00 A |  | 100% |  |  |  |  | 13.08h | 13.08h |
| 789 | 1.348.1 | Поставить резьбовые клепки на боковой кожух, где кончается лента |  | 1h | 2026-09-30 09:00 A | 2026-09-30 10:00 A |  | 100% |  |  | start no earlier than 2026-09-30 09:00 | Тимофеев В | 1h | 1h |
| 790 | 1.348.2 | Ремонт насоса от 2 линии 1 цех, статор взять на складе |  | 2h | 2026-09-10 09:00 A | 2026-09-10 11:00 A |  | 100% |  |  | start no earlier than 2026-09-10 09:00 | Некрасов А | 2h | 2h |
| 791 | 1.348.3 | контроль героторная пара оплата |  | 5min | 2026-08-21 09:00 A | 2026-08-21 09:05 A |  | 100% |  |  | start no earlier than 2026-08-21 09:00 | Зорькин В | 0.08h | 0.08h |
| 792 | 1.348.4 | Замена сальника на поворотном столе/проверить |  | 1h | 2026-07-23 09:00 A | 2026-07-23 10:00 A |  | 100% |  |  | start no earlier than 2026-07-23 08:00 | Бундин В | 1h | 1h |
| 793 | 1.348.5 | **дражжировка** |  | 0.62d | 2026-04-22 08:00 A | 2026-04-22 15:00 A |  | 100% |  |  |  |  | 9h | 9h |
| 794 | 1.348.5.1 | Установка рамы для фильтров |  | 3h | 2026-04-22 08:00 A | 2026-04-22 12:00 A |  | 100% |  |  | start no earlier than 2026-04-22 08:00 | Тимофеев В | 3h | 3h |
| 795 | 1.348.5.2 | установка счетчика |  | 1h | 2026-04-22 11:00 A | 2026-04-22 12:00 A | 794 | 100% |  |  | start no earlier than 2026-04-22 08:00 | Тимофеев В | 1h | 1h |
| 796 | 1.348.5.3 | кронштейн под пульт расходомера |  | 2h | 2026-04-22 12:00 A | 2026-04-22 15:00 A | 795 | 100% |  |  | start no earlier than 2026-04-22 08:00 | Тимофеев В | 2h | 2h |
| 797 | 1.348.5.4 | **Парогенератор** |  | 0.38d | 2026-04-22 09:00 A | 2026-04-22 12:00 A |  | 100% |  |  |  |  | 3h | 3h |
| 798 | 1.348.5.4.1 | чистка парогенераторов 1 и 2 линия |  | 3h | 2026-04-22 09:00 A | 2026-04-22 12:00 A |  | 100% |  |  | start no earlier than 2026-04-22 08:00 | Бундин В | 3h | 3h |
| 799 | 1.349 | **отмена** |  | 70.75d? | 2026-04-22 09:00 | 2026-07-29 16:00 A |  | 100% | 2026-07-08 09:00 |  |  |  | 12.33h | 12.33h |
| 800 | 1.349.1 | **Парогенератор** |  | 27.5d? | 2026-04-22 09:00 | 2026-05-25 13:00 |  | 100% | 2026-07-08 09:00 | 2026-07-29 16:00 |  |  | 12.33h | 12.33h |
| 801 | 1.349.1.1 | Замена говротрубы 1 линия |  | 1h | 2026-07-08 09:00 A | 2026-07-08 10:00 A |  | 100% |  |  | start no earlier than 2026-07-08 09:00 | Бобренок В | 1h | 1h |
| 802 | 1.349.1.2 | Осмотр стоек где стоит реле давления до расширительного бачка |  | 30min | 2026-07-27 09:00 A | 2026-07-27 09:30 A |  | 100% |  |  | start no earlier than 2026-07-27 09:00 | Тимофеев В | 0.5h | 0.5h |
| 803 | 1.349.1.3 | Составить список материала для ремонта и изготовления стоек |  | 30min | 2026-07-27 09:30 A | 2026-07-27 10:00 A | 802 | 100% |  |  | start no earlier than 2026-05-27 09:00 | Тимофеев В | 0.5h | 0.5h |
| 804 | 1.349.1.4 | Заказать недостающий материал |  | 20min | 2026-07-27 09:00 A | 2026-07-27 09:20 A |  | 100% |  |  | start no earlier than 2026-07-27 09:00 | Зорькин В | 0.33h | 0.33h |
| 805 | 1.349.1.5 | Изготовление стоек |  | 3h | 2026-07-29 09:00 A | 2026-07-29 12:00 A | 803 | 100% |  |  | start no earlier than 2026-07-29 09:00 | Некрасов А | 3h | 3h |
| 806 | 1.349.1.6 | Замена стойки под реле давления |  | 3h | 2026-07-29 12:00 A | 2026-07-29 16:00 A | 805 | 100% |  |  | start no earlier than 2026-05-27 09:00 | Некрасов А | 3h | 3h |
| 807 | 1.349.1.7 | Составить список материалов или заключение по 2-м частотникам из 1 цеха от теко 0,4 (поворотный стол и конвейер) |  | 1h | 2026-07-27 08:00 A | 2026-07-27 10:00 A |  | 100% |  |  | start no earlier than 2026-07-27 08:00 | Дедов В | 1h | 1h |
| 808 | 1.349.1.8 | Взять трубку в нашем кабинете и насверлить по всей длине симметрично отверстия самым маленьким сверлом которое у нас есть (по этому заданию позвонить) |  | 3h | 2026-07-28 08:00 A | 2026-07-28 12:00 A |  | 100% |  |  | start no earlier than 2026-07-28 08:00 | Макаревич А | 3h | 3h |
| 809 | 1.350 | Демонтаж разборка/сборка редукторы шлюз. Питателей циклона 1 и 2 линия | manual | 3h | 2026-04-24 09:00 A | 2026-04-24 12:00 A |  | 100% |  |  | start no earlier than 2026-04-24 09:00 | Бундин В | 3h | 3h |

| ID | WBS | Task | Type | Duration | Start | Finish | Predecessors | Complete | Remaining | Actual start | Total slack | Constraint | Resources | Work | Actual work |
| --- | --- | --- | --- | --- | --- | --- | --- | --- | --- | --- | --- | --- | --- | --- | --- |
| 810 | 1.351 | **Теко 0,4** |  | 0.38d | 2026-04-03 09:00 A | 2026-04-03 12:00 A |  | 100% |  |  |  |  |  | 3h | 3h |
| 811 | 1.351.1 | замена ковшей | manual | 3h | 2026-04-03 09:00 A | 2026-04-03 12:00 A |  | 100% |  |  |  | start no earlier than 2026-04-03 09:00 | Макаревич А | 3h | 3h |
| 812 | 2 | **2 цех** |  | 249d? | 2023-11-16 09:00 | 2024-10-29 18:00 |  | 88% | 29.34d? | 2024-01-08 09:00 |  |  |  | 2974.58h | 2633.75h |
| 813 | 2.1 | Сфотать шильдик компрессора (попросить пацанов с фасовки) и скинуть Зорькину |  | 1h | 2026-10-12 09:00 | 2026-10-12 10:00 |  |  |  |  | 107.47d | start no earlier than 2026-10-12 08:00 | Бундин В | 1h |  |
| 814 | 2.2 | Слить весь антифриз с приточки в вентиляции, перемотать соединения ПП к колориферу и насос |  | 2h | 2026-10-12 09:00 | 2026-10-12 11:00 |  |  |  |  | 107.34d | start no earlier than 2026-10-12 08:00 | Бундин В | 2h |  |
| 815 | 2.3 | Открыть приточку под потолком, где кабинеты в корридоре (по возможности найти диффузор и установить его, либо подумать, как ограничить поток) |  | 2h | 2026-10-12 09:00 | 2026-10-12 11:00 |  |  |  |  | 107.34d | start no earlier than 2026-10-12 08:00 | Бундин В | 2h |  |
| 816 | 2.4 | Бежит со стыка в раковине с сифоном, проверить/исправить на жирах |  | 1h | 2026-10-12 09:00 | 2026-10-12 10:00 |  |  |  |  | 107.47d | start no earlier than 2026-10-12 08:00 | Бундин В | 1h |  |
| 817 | 2.5 | Поставить воздухоотводчик с боковым отводом на котел с которого бежало | manual | 1h | 2026-10-12 09:00 | 2026-10-12 10:00 | 818 |  |  |  |  |  | Бобренок В | 1h |  |
| 818 | 2.6 | Поставить сливной шланг на поломоечную машинку, должен быть на ней | manual | 30min | 2026-10-10 09:00 A | 2026-10-10 09:30 A |  | 100% |  |  |  | start no earlier than 2026-10-10 09:00 | Бундин В | 0.5h | 0.5h |
| 819 | 2.7 | Собрать новый электрод для парогенератора из цельного нерж прутка, конец немного закруглить лепестковым диском |  | 4h | 2026-10-12 10:00 A | 2026-10-12 15:00 A | 817 | 100% |  |  |  |  | Бобренок В; Зорькин В | 8h | 8h |
| 820 | 2.8 | Сделать штекер поломоечной машинки. Склеить или взять со старого зарядного и приделать в замен нынешнего, проявить смекалку как это можно сделать. Созвониться с зорькиным |  | 2h | 2026-10-06 09:00 A | 2026-10-06 11:00 A |  | 100% |  |  |  | start no earlier than 2026-10-06 08:00 | Бобренок В | 2h | 2h |
| 821 | 2.9 | При запуске отопления приточки, как будет давление в системе проверить антифриз, долить |  | 1h | 2026-10-28 09:00 | 2026-10-28 10:00 |  |  |  |  | 95.47d | start no earlier than 2026-10-28 09:00 | Тимофеев В | 1h |  |
| 822 | 2.10 | Устранить течь в вентялиционной, проверить количество антифриза |  | 1h | 2026-10-06 09:00 A | 2026-10-06 10:00 A |  | 100% |  |  |  | start no earlier than 2026-10-06 09:00 | Бобренок В | 1h | 1h |
| 823 | 2.11 | Перебрать ножевой узел, понять причину люфта/устранить |  | 2h | 2026-10-06 09:00 A | 2026-10-06 11:00 A |  | 100% |  |  |  | start no earlier than 2026-10-06 09:00 | Бобренок В | 2h | 2h |
| 824 | 2.12 | Откалибровать смеситель |  | 1h | 2026-10-09 09:00 | 2026-10-09 10:00 |  |  |  |  | 108.47d | start no earlier than 2026-10-09 09:00 | Дедов В | 1h |  |
| 825 | 2.13 | Восстановление платы от рециркуляторной лампы, составление списка комплектующих, подбор аналога платы |  | 3h | 2026-10-07 09:00 A | 2026-10-07 12:00 A |  | 100% |  |  |  | start no earlier than 2026-10-07 09:00 | Дедов В | 3h | 3h |
| 826 | 2.14 | Ремонт шпингалета на воротох, где навески, получить у мастеров, если нет, звони Зорькину | manual | 1h | 2026-10-03 09:00 A | 2026-10-03 10:00 A |  | 100% |  |  |  | start no earlier than 2026-10-03 09:00 | Бобренок В | 1h | 1h |
| 827 | 2.15 | Замена дырявой трубы под парогенератором |  | 1h | 2026-10-08 09:00 A | 2026-10-08 10:00 A |  | 100% |  |  |  | start no earlier than 2026-10-08 09:00 | Некрасов | 1h | 1h |
| 828 | 2.16 | Плата связи RS485 замена |  | 1h | 2026-10-01 09:00 A | 2026-10-01 10:00 A |  | 100% |  |  |  | start no earlier than 2026-10-01 08:00 | Дедов В | 1h | 1h |
| 829 | 2.17 | Ремонт электрики Бестром (в случае если не будет работать) |  | 4h | 2026-10-07 09:00 A | 2026-10-07 13:00 A |  | 100% |  |  |  | start no earlier than 2026-10-07 09:00 | Дедов В | 4h | 4h |
| 830 | 2.18 | Подключить кабель датчика пирометра с печи, разобраться, где что |  | 2h | 2026-10-09 09:00 | 2026-10-09 11:00 |  |  |  |  | 108.34d | start no earlier than 2026-10-09 09:00 | Дедов В | 2h |  |
| 831 | 2.19 | Изготовить пластину для удобного сбора гранулы лопатой, позвонить зорькину | manual | 2h | 2026-10-06 09:00 A | 2026-10-06 11:00 A |  | 100% |  |  |  | start no earlier than 2026-10-06 09:00 | Бобренок В | 2h | 2h |
| 832 | 2.20 | Посмотреть ручки на складе, по возможности замена, если их нет ,сообщить какие закупить. Если ничего нет и ремонт невозможен, фиксируем язычок или убираем его. | manual | 1h | 2026-10-03 09:00 A | 2026-10-03 10:00 A |  | 100% |  |  |  | start no earlier than 2026-10-03 09:00 | Бобренок В | 1h | 1h |
| 833 | 2.21 | Посмотреть пылесос от второго цеха, должен быть в слесарке, если нет, забрать | manual | 1h | 2026-09-29 09:00 A | 2026-09-29 10:00 A |  | 100% |  |  |  | start no earlier than 2026-09-29 09:00 | Бобренок В | 1h | 1h |
| 834 | 2.22 | Включить отопление в лабораторию |  | 1h | 2026-10-02 09:00 A | 2026-10-02 10:00 A |  | 100% |  |  |  | start no earlier than 2026-10-02 09:00 | Некрасов | 1h | 1h |

| ID | WBS | Task | Duration | Start | Finish | Predecessors | Complete | Remaining | Total slack | Free slack | Constraint | Resources | Work | Actual work |
| --- | --- | --- | --- | --- | --- | --- | --- | --- | --- | --- | --- | --- | --- | --- |
| 835 | 2.23 | **Ремонт бактерицидной лампы возле компрессора** | 8d? | 2026-10-02 09:00 A | 2026-10-12 18:00 |  | 87% | 1.02d? | 106.59d |  |  |  | 9.17h | 8h |
| 836 | 2.23.1 | Заявка на плату управления лампы | 1h | 2026-10-02 09:00 | 2026-10-02 10:00 |  |  |  | 114.47d |  | start no earlier than 2026-10-02 08:00 | Зорькин В | 1h |  |
| 837 | 2.23.2 | контроль | 10min | 2026-10-02 09:00 | 2026-10-02 09:10 |  |  |  | 114.57d |  | start no earlier than 2026-10-02 08:00 | Зорькин В | 0.17h |  |
| 838 | 2.23.3 | Ремонт | 1d? | 2026-10-12 09:00 A | 2026-10-12 18:00 A |  | 100% |  |  |  | start no earlier than 2026-10-12 09:00 | Дедов В | 8h | 8h |
| 839 | 2.24 | **пыление при загрузке при высыпании из мешка в бункер дозатора** | 13.59d | 2026-10-01 09:00 | 2026-10-19 14:45 |  |  |  | 102d |  |  |  | 4.75h |  |
| 840 | 2.24.1 | **изготовить рукав на дозатор для помещения в него мешка из гибкого герметичного матриала** | 13.59d | 2026-10-01 09:00 | 2026-10-19 14:45 |  |  |  | 102d |  |  |  | 4.75h |  |
| 841 | 2.24.1.1 | заявка на силикон/брезент полотно | 30min | 2026-10-01 09:00 | 2026-10-01 09:30 |  |  |  | 102d | 0d | start no earlier than 2026-10-01 09:00 | Зорькин В | 0.5h |  |
| 842 | 2.24.1.2 | доставка контроль | 15min | 2026-10-16 09:30 | 2026-10-16 09:45 | 841FS+12d |  |  | 102d | 0d | start no earlier than 2026-09-30 08:00 | Зорькин В | 0.25h |  |
| 843 | 2.24.1.3 | изготовление мешка | 4h | 2026-10-19 09:45 | 2026-10-19 14:45 | 842FS+1d |  |  | 102d |  | start no earlier than 2026-09-30 08:00 | Тимофеев В | 4h |  |
| 844 | 2.25 | **установить аспирационный рукав в зону бункера + фильтр + выход в цех/или общ обменную вент** | 17.09d? | 2026-10-05 09:00 | 2026-10-28 09:45 |  |  |  | 95.5d |  |  |  | 8.75h |  |
| 845 | 2.25.1 | заявка на аспирацию как в слесарке | 30min | 2026-10-05 09:00 | 2026-10-05 09:30 |  |  |  | 95.5d | 0d | start no earlier than 2026-10-05 09:00 | Зорькин В | 0.5h |  |
| 846 | 2.25.2 | доставка контроль | 15min | 2026-10-26 09:30 | 2026-10-26 09:45 | 845FS+15d |  |  | 95.5d | 0d | start no earlier than 2026-09-30 08:00 | Зорькин В | 0.25h |  |
| 847 | 2.25.3 | монтаж аспирационная установка | 1d? | 2026-10-27 09:45 | 2026-10-28 09:45 | 846FS+1d |  |  | 95.5d |  | start no earlier than 2026-09-30 08:00 | Тимофеев В | 8h |  |
| 848 | 2.26 | **пыление при дозации из шнека на продукт** | 0.38d | 2026-10-01 09:00 | 2026-10-01 12:00 |  |  |  | 115.22d |  |  |  | 5h |  |
| 849 | 2.26.1 | установить пластину НЕРЖ на выход шнека для отклонения порошка ближе к барабану | 2h | 2026-10-01 09:00 | 2026-10-01 11:00 |  |  |  | 115.34d |  | start no earlier than 2026-10-01 09:00 | Тимофеев В | 2h |  |
| 850 | 2.26.2 | **изготовить /купить патрубок типа 90 колено сантех** | 0.38d | 2026-10-01 09:00 | 2026-10-01 12:00 |  |  |  | 115.22d |  |  |  | 3h |  |
| 851 | 2.26.2.1 | модель + печать на 3д | 2h | 2026-10-01 09:00 | 2026-10-01 11:00 |  |  |  | 115.22d | 0d | start no earlier than 2026-10-01 09:00 | Домоводов К | 2h |  |
| 852 | 2.26.2.2 | монтаж | 1h | 2026-10-01 11:00 | 2026-10-01 12:00 | 851 |  |  | 115.22d |  | start no earlier than 2026-09-30 08:00 | Тимофеев В | 1h |  |
| 853 | 2.27 | **сыпит в одну точку барабана, образуя не нужное кольцо** | 11d | 2026-10-05 09:00 | 2026-10-19 18:00 |  |  |  | 101.59d |  |  |  | 9h |  |
| 854 | 2.27.1 | **перенос дозатора на второй барабан** | 11d | 2026-10-05 09:00 | 2026-10-19 18:00 |  |  |  | 101.59d |  |  |  | 9h |  |
| 855 | 2.27.1.1 | согласовоать с производством технологами старт переноса | 1h | 2026-10-05 09:00 | 2026-10-05 10:00 |  |  |  | 108.47d | 3.88d | start no earlier than 2026-10-05 09:00 | Зорькин В | 1h |  |
| 856 | 2.27.1.2 | изготовить раму - составить чертежи | 2h | 2026-10-16 09:00 | 2026-10-16 11:00 | 855FS+2d |  |  | 101.59d | 0d | start no earlier than 2026-10-16 09:00 | Труфанов А | 2h |  |
| 857 | 2.27.1.3 | сборка рама | 4h | 2026-10-16 11:00 | 2026-10-16 16:00 | 856 |  |  | 101.59d | 0d | start no earlier than 2026-10-02 09:00 | Труфанов А | 4h |  |
| 858 | 2.27.1.4 | перенос шнека дозатора / переключения | 2h | 2026-10-19 16:00 | 2026-10-19 18:00 | 857FS+1d |  |  | 101.59d |  | start no earlier than 2026-09-30 08:00 | Тимофеев В | 2h |  |
| 859 | 2.28 | Продуть всю вентиляшку на жирах с люльки | 2h | 2026-09-29 09:00 A | 2026-09-29 11:00 A |  | 100% |  |  |  | start no earlier than 2026-09-29 08:00 | Бундин В | 2h | 2h |
| 861 | 2.29 | Изготовить носик на подаче сухого гидролизата под уклоном ближе к барабану | 3h | 2026-09-29 09:00 A | 2026-09-29 12:00 A |  | 100% |  |  |  | start no earlier than 2026-09-29 09:00 | Тимофеев В | 3h | 3h |
| 862 | 2.30 | Изготовление рамы на ножках для переноса всего барабана с сухим гидролизатом к нижнему барабану | 4h | 2026-09-29 09:00 | 2026-09-29 13:00 |  |  |  | 117.09d |  | start no earlier than 2026-09-29 09:00 | Тимофеев В | 4h |  |
| 863 | 2.31 | изготовить ножки на бункер нории БЕСТРОМ | 3h | 2026-09-26 09:00 A | 2026-09-26 12:00 A |  | 100% |  |  |  | start no earlier than 2026-09-26 09:00 | Бобренок В | 3h | 3h |

| ID | WBS | Task | Duration | Start | Finish | Predecessors | Complete | Remaining | Total slack | Constraint | Resources | Work | Actual work |
| --- | --- | --- | --- | --- | --- | --- | --- | --- | --- | --- | --- | --- | --- |
| 864 | 2.32 | **установить 4 трубки с быстросъемами в барабаны жиров** | 3.5d | 2026-09-25 09:00 A | 2026-09-28 13:00 |  | 33% | 2.33d | 118.09d |  |  | 6h | 2h |
| 865 | 2.32.1 | подготовить сменную трубку для подачи жира, насверлить резьбу, отверстия | 2h | 2026-09-25 09:00 A | 2026-09-25 11:00 A |  | 100% |  |  | start no earlier than 2026-09-25 09:00 | Тимофеев В | 2h | 2h |
| 866 | 2.32.2 | подготовить трубку 3 и 4 | 4h | 2026-09-28 09:00 | 2026-09-28 13:00 |  |  |  | 118.09d | start no earlier than 2026-09-28 09:00 | Тимофеев В | 4h |  |
| 867 | 2.33 | кран на жирах нет стопора - вращение на 360 устранить, найти этот кран. | 30min | 2026-09-24 09:00 A | 2026-09-24 09:30 A |  | 100% |  |  | start no earlier than 2026-09-24 09:00 | Тимофеев В | 0.5h | 0.5h |
| 868 | 2.34 | Проверить весы на смесителе прыгают в диапазаоне 40кг | 1h | 2026-09-23 09:00 | 2026-09-23 10:00 |  |  |  | 123.47d | start no earlier than 2026-09-23 09:00 | Дедов В | 1h |  |
| 869 | 2.35 | **лаборатория** | 0.12d | 2026-09-22 09:00 A | 2026-09-22 10:00 A |  | 100% |  |  |  |  | 1.5h | 1.5h |
| 870 | 2.35.1 | Перегорел тэн на дигистре | 30min | 2026-09-22 09:00 A | 2026-09-22 09:30 A |  | 100% |  |  | start no earlier than 2026-09-22 09:00 | Тимофеев В | 0.5h | 0.5h |
| 871 | 2.35.2 | Поставить колбу в лаборотории на бульбуляторе, колба в лаборатории | 1h | 2026-09-22 09:00 A | 2026-09-22 10:00 A |  | 100% |  |  | start no earlier than 2026-09-22 09:00 | Тимофеев В | 1h | 1h |
| 872 | 2.36 | Сделать ручки и щеколду для мусорки на улице | 1h | 2026-09-25 09:00 A | 2026-09-25 10:00 A |  | 100% |  |  | start no earlier than 2026-09-25 09:00 | Бундин В | 1h | 1h |
| 873 | 2.37 | установить трубку жир ф12 - нарезать резьбу под фитинг / сверлить под "струйки" | 2h | 2026-09-24 09:00 A | 2026-09-24 11:00 A |  | 100% |  |  | start no earlier than 2026-09-24 09:00 | Тимофеев В | 2h | 2h |
| 874 | 2.38 | **система сброса муки с прекондиционера в мешки** | 2d? | 2026-09-18 09:00 A | 2026-09-19 18:00 A |  | 100% |  |  |  |  | 11h | 11h |
| 875 | 2.38.1 | Продумать варианты предложить, согласовать с Домоводовым и смонтировать, чтоб можно было вешать мешок на экструдере, под рассекатель потока муки выходящий из прекондиционера, который сделал Макаревич | 3h | 2026-09-18 09:00 A | 2026-09-18 12:00 A |  | 100% |  |  | start no earlier than 2026-09-18 09:00 | Бобренок В | 3h | 3h |
| 876 | 2.38.2 | изготовление тележки с креплением для 2х мешков. Покрасить | 1d? | 2026-09-19 09:00 A | 2026-09-19 18:00 A |  | 100% |  |  | start no earlier than 2026-09-19 09:00 | Бобренок В | 8h | 8h |
| 877 | 2.39 | Промывка дистилятора в лаборатории | 3h | 2026-09-18 09:00 A | 2026-09-18 12:00 A |  | 100% |  |  | start no earlier than 2026-09-18 09:00 | Бобренок В | 3h | 3h |
| 878 | 2.40 | Изготовить стопор для пленки на бестром (Обратиться к пацанам на фасовке или к мастеру, должны подсказать) | 2h | 2026-09-16 09:00 A | 2026-09-16 11:00 A |  | 100% |  |  | start no earlier than 2026-09-16 08:00 | Бундин В | 2h | 2h |
| 879 | 2.41 | ремонт лампа бактерициодная (это не инсекюьтер) на ГП (не горит табло). Ревизия. | 2h | 2026-09-13 09:00 A | 2026-09-13 11:00 A |  | 100% |  |  | start no earlier than 2026-09-13 09:00 | Дедов В | 2h | 2h |
| 880 | 2.42 | ремонт ворот ГП слетели тросы | 2h | 2026-09-11 09:00 A | 2026-09-11 11:00 A |  | 100% |  |  | start no earlier than 2026-09-11 08:00 | Бобренок В | 2h | 2h |
| 881 | 2.43 | ремонт светильник корридор у отк | 1h | 2026-09-14 09:00 A | 2026-09-14 10:00 A |  | 100% |  |  | start no earlier than 2026-09-14 09:00 | Макаревич А | 1h | 1h |
| 882 | 2.44 | замена квадрат ручка дверь экструдер | 1h | 2026-09-14 09:00 A | 2026-09-14 10:00 A |  | 100% |  |  | start no earlier than 2026-09-14 09:00 | Макаревич А | 1h | 1h |
| 883 | 2.45 | **ревизия сливной шланг моечная машинка** | 24.25d | 2026-09-14 09:00 A | 2026-10-09 11:00 A |  | 100% |  |  |  |  | 3.5h | 3.5h |
| 884 | 2.45.1 | ревизия / удлинить | 1h | 2026-09-14 09:00 A | 2026-09-14 10:00 A |  | 100% |  |  | start no earlier than 2026-09-14 09:00 | Тимофеев В | 1h | 1h |
| 885 | 2.45.2 | заявка | 15min | 2026-09-18 09:00 A | 2026-09-18 09:15 A |  | 100% |  |  | start no earlier than 2026-09-18 09:00 | Зорькин В | 0.25h | 0.25h |
| 886 | 2.45.3 | контроль доставки | 15min | 2026-10-07 09:00 A | 2026-10-07 09:15 A | 885FS+5d | 100% |  |  | start no earlier than 2026-10-07 09:00 | Зорькин В | 0.25h | 0.25h |
| 887 | 2.45.4 | монтаж | 2h | 2026-10-09 09:00 A | 2026-10-09 11:00 A | 886FS+1d | 100% |  |  | start no earlier than 2026-10-09 09:00 | Тимофеев В | 2h | 2h |
| 888 | 2.46 | Проверка системы под давлением, при необходимости заменить шланги на пневматические?? | 1h | 2026-09-21 09:00 A | 2026-09-21 10:00 A |  | 100% |  |  | start no earlier than 2026-09-22 09:00 | Тимофеев В | 1h | 1h |
| 889 | 2.47 | Установить трубку на жирах, которую сделал викторович | 30min | 2026-09-09 09:00 A | 2026-09-09 09:30 A |  | 100% |  |  | start no earlier than 2026-09-09 08:00 | Тимофеев В | 0.5h | 0.5h |

| ID | WBS | Task | Type | Duration | Start | Finish | Predecessors | Complete | Constraint | Resources | Work | Actual work |
| --- | --- | --- | --- | --- | --- | --- | --- | --- | --- | --- | --- | --- |
| 890 | 2.48 | **реверс теплоносителя в приточном калорифере** |  | 28.25d | 2026-08-24 09:00 A | 2026-09-24 11:00 A |  | 100% |  |  | 2.5h | 2.5h |
| 891 | 2.48.1 | заявка |  | 15min | 2026-08-24 09:00 A | 2026-08-24 09:15 A |  | 100% | start no earlier than 2026-08-24 09:00 | Зорькин В | 0.25h | 0.25h |
| 892 | 2.48.2 | контроль доставки |  | 15min | 2026-09-14 09:05 A | 2026-09-14 09:20 A | 1104FS+5d | 100% | start no earlier than 2026-09-09 09:00 | Зорькин В | 0.25h | 0.25h |
| 893 | 2.48.3 | монтаж |  | 2h | 2026-09-24 09:00 A | 2026-09-24 11:00 A | 1105FS+1d | 100% | start no earlier than 2026-09-24 09:00 | Дедов В | 2h | 2h |
| 894 | 2.49 | востановить потерю токов в печи / ревизия . Замена тенов |  | 4h | 2026-09-09 09:00 A | 2026-09-09 13:00 A |  | 100% | start no earlier than 2026-09-09 09:00 | Бобренок В | 4h | 4h |
| 895 | 2.50 | Смазка подшипников привода охладителя | manual | 1h | 2026-09-09 09:00 A | 2026-09-09 10:00 A |  | 100% |  | Бобренок В | 1h | 1h |
| 896 | 2.51 | Обрезать пенку пвх на двери в охладителе ,сделать ее ровной |  | 1h | 2026-09-07 09:00 A | 2026-09-07 10:00 A |  | 100% | start no earlier than 2026-09-05 09:00 | Макаревич А | 1h | 1h |
| 897 | 2.52 | Переборка парогенератора, поиск неисправности (подключили перемычку между реле времени) |  | 4h | 2026-09-02 09:00 A | 2026-09-02 13:00 A |  | 100% | start no earlier than 2026-09-02 09:00 | Бобренок В | 4h | 4h |
| 898 | 2.53 | **Подготовить электрическую часть для подключения второго насоса без частотника (продолжаем эту задачу)** |  | 13.25d | 2026-09-03 09:00 A | 2026-09-17 11:00 A |  | 100% |  |  | 4.17h | 4.17h |
| 899 | 2.53.1 | установить на линию доп насос (резервный) |  | 1h | 2026-09-10 09:00 A | 2026-09-10 10:00 A |  | 100% | start no earlier than 2026-09-10 09:00 | Тимофеев В | 1h | 1h |
| 900 | 2.53.2 | монтаж |  | 1h | 2026-09-09 09:00 A | 2026-09-09 10:00 A |  | 100% | start no earlier than 2026-09-09 09:00 | Тимофеев В | 1h | 1h |
| 901 | 2.53.3 | Переместить розетки со стола, смонтировать площадку к раме и закрепить на эту раму |  | 2h | 2026-09-17 09:00 A | 2026-09-17 11:00 A |  | 100% | start no earlier than 2026-09-17 09:00 | Тимофеев В | 2h | 2h |
| 902 | 2.53.4 | Подумать место установки автомата |  | 10min | 2026-09-03 09:00 A | 2026-09-03 09:10 A |  | 100% | start no earlier than 2026-09-03 09:00 | Тимофеев В | 0.17h | 0.17h |
| 903 | 2.54 | Ремонт парогенератора, замена реле давления + отвалился контакт + замена мембраны |  | 1h | 2026-09-02 09:00 A | 2026-09-02 10:00 A |  | 100% | start no earlier than 2026-09-02 08:00 | Труфанов А | 1h | 1h |
| 904 | 2.55 | Замена редуктора на печи |  | 2h | 2026-09-01 09:00 A | 2026-09-01 11:00 A |  | 100% | start no earlier than 2026-09-01 09:00 | Бундин В | 2h | 2h |
| 905 | 2.56 | проверка котлов на приточку (замена клапана и тена на большую мощность) | manual | 2h | 2026-09-07 09:00 A | 2026-09-07 11:00 A |  | 100% | start no earlier than 2026-09-07 09:00 | Дедов В | 2h | 2h |
| 906 | 2.57 | проверка всех котлов на отопление по цеху | manual | 4h | 2026-08-30 09:00 A | 2026-08-30 13:00 A |  | 100% | start no earlier than 2026-08-30 09:00 | Дедов В | 4h | 4h |
| 907 | 2.58 | закрепить коробку двери снизу (возле ШУ приточка 2 этаж) |  | 2h | 2026-08-28 09:00 A | 2026-08-28 11:00 A |  | 100% | start no earlier than 2026-08-28 09:00 | Макаревич А | 2h | 2h |
| 908 | 2.59 | **заменить фильтры на воду в цехе (проверить мембрану на гидроаккумуляторе)** |  | 1d? | 2026-08-28 09:00 A | 2026-08-28 18:00 A |  | 100% |  | Бобренок В | 16h | 16h |
| 909 | 2.59.1 | заказать фильтры |  | 1d? | 2026-08-28 09:00 A | 2026-08-28 18:00 A |  | 100% | start no earlier than 2026-08-28 09:00 | Шуранов Ю | 8h | 8h |
| 910 | 2.60 | монтаж и подключение розетки для кондиционера в кабинет ОТК |  | 2h | 2026-08-26 08:00 A | 2026-08-26 11:00 A |  | 100% | start no earlier than 2026-08-26 08:00 | Бобренок В | 2h | 2h |
| 911 | 2.61 | сливной шланг от кондиционеров наш кабинет и Шелепова спрятать в кабель канал 30х25 (он на складе) |  | 2h | 2026-08-26 08:00 A | 2026-08-26 11:00 A |  | 100% | start no earlier than 2026-08-26 08:00 | Бобренок В | 2h | 2h |
| 912 | 2.62 | сливной шланг от кондиционеров кабинет Сапелина спрятать в кабель канал 30х25 (он на складе) с 10 до 11ч |  | 1h | 2026-08-31 09:00 A | 2026-08-31 10:00 A |  | 100% | start no earlier than 2026-08-31 09:00 | Тимофеев В | 1h | 1h |
| 913 | 2.63 | замерить токи на оборудование (таблица в слесарке) |  | 3h | 2026-08-27 09:00 A | 2026-08-27 12:00 A |  | 100% | start no earlier than 2026-08-27 09:00 | Бобренок В | 3h | 3h |

| ID | WBS | Task | Type | Duration | Start | Finish | Predecessors | Complete | Remaining | Total slack | Free slack | Constraint | Resources | Work | Actual work |
| --- | --- | --- | --- | --- | --- | --- | --- | --- | --- | --- | --- | --- | --- | --- | --- |
| 914 | 2.64 | **дренаж кондиционеров жир и упаковка установить отдельный насос от жиров** |  | 28.06d | 2026-08-24 09:00 A | 2026-09-24 09:30 A |  | 100% |  |  |  |  |  | 122.5h | 122.5h |
| 915 | 2.64.1 | заявка насос |  | 30min | 2026-08-24 09:00 A | 2026-08-24 09:30 A |  | 100% |  |  |  | start no earlier than 2026-08-24 09:00 | Шуранов Ю | 0.5h | 0.5h |
| 916 | 2.64.2 | контроль доставка |  | 15d | 2026-09-02 09:30 A | 2026-09-24 09:30 A | 915FS+7d | 100% |  |  |  | start no earlier than 2026-08-20 09:00 | Зорькин В | 120h | 120h |
| 917 | 2.64.3 | Разорвать контур от насоса и сделать слив в раковину | manual | 1h | 2026-09-01 09:00 A | 2026-09-01 10:00 A | 916FS+1d | 100% |  |  |  | start no earlier than 2026-09-01 09:00 | Некрасов А; Тимофеев В | 2h | 2h |
| 918 | 2.65 | **бетонирование крыльцо вход в 2ц** |  | 0.02d | 2026-08-31 09:00 | 2026-08-31 09:10 |  |  |  | 145.57d |  |  |  | 0.17h |  |
| 919 | 2.65.1 | заявка Олегу |  | 10min | 2026-08-31 09:00 | 2026-08-31 09:10 |  |  |  | 145.57d |  | start no earlier than 2026-08-31 09:00 | Шуранов Ю | 0.17h |  |
| 920 | 2.66 | течь кондиционер жиры - контроль работы слива |  | 30min | 2026-08-31 09:00 A | 2026-08-31 09:30 A |  | 100% |  |  |  | start no earlier than 2026-08-31 09:00 | Тимофеев В | 0.5h | 0.5h |
| 921 | 2.67 | контроль замена фитинги или трубки жир, устранить возможность произвольного срыва |  | 30min | 2026-09-01 09:00 A | 2026-09-01 09:30 A |  | 100% |  |  |  | start no earlier than 2026-09-03 09:00 | Некрасов А; Шуранов Ю | 1h | 1h |
| 922 | 2.68 | **разгрузка синего накопителя, в реверс шнек + окно** |  | 5.12d | 2026-08-20 09:00 A | 2026-08-27 10:00 A |  | 100% |  |  |  |  |  | 4h | 4h |
| 923 | 2.68.1 | выполнить люк в шнеке: вырезать окно, крепеж на шарнир + притвор с уплотнением + застежка | milestone | 0h | 2026-08-20 09:00 A | 2026-08-20 09:00 A |  | 100% |  |  |  | start no earlier than 2026-08-20 09:00 | Некрасов А; Тимофеев В |  |  |
| 924 | 2.68.2 | быстросъемное крепление |  | 1h | 2026-08-27 09:00 A | 2026-08-27 10:00 A |  | 100% |  |  |  | start no earlier than 2026-08-27 09:00 | Тимофеев В | 1h | 1h |
| 925 | 2.68.3 | изготовление фланца + труба для крепления гофротрубы ф250 |  | 3h | 2026-08-24 09:00 A | 2026-08-24 12:00 A |  | 100% |  |  |  | start no earlier than 2026-08-24 09:00 | Некрасов А | 3h | 3h |
| 926 | 2.69 | перенос розетка на стену инсекютер корридор у ОТК |  | 1h | 2026-08-15 09:00 A | 2026-08-17 10:00 A |  | 100% |  |  |  | start no earlier than 2026-08-15 09:00 | Бундин В | 1h | 1h |
| 927 | 2.70 | перенос инсекютер ниже на фасовке, для возможности доступа операторами |  | 1h | 2026-09-24 09:00 A | 2026-09-24 10:00 A |  | 100% |  |  |  | start no earlier than 2026-09-24 09:00 | Бундин В | 1h | 1h |
| 928 | 2.71 | изготовить лопатку для датчика сырья, что бы было 2-4 лопасти и ниже на 5-10см |  | 2h | 2026-08-13 09:00 A | 2026-08-13 11:00 A |  | 100% |  |  |  | start no earlier than 2026-08-13 09:00 | Макаревич А | 2h | 2h |
| 929 | 2.72 | прикрепить план увакуации на место (зона отстоя навесок, стенка мойки) |  | 30min | 2026-08-12 09:00 A | 2026-08-12 09:30 A |  | 100% |  |  |  | start no earlier than 2026-08-12 09:00 | Макаревич А | 0.5h | 0.5h |
| 930 | 2.73 | ремонт ручка в экструдер 2ц |  | 1h | 2026-08-14 09:00 A | 2026-08-14 10:00 A |  | 100% |  |  |  | start no earlier than 2026-08-14 09:00 | Труфанов А | 1h | 1h |
| 931 | 2.74 | **установить сифон ф110 в линию слива жиров** |  | 57.31d | 2026-08-12 09:00 A | 2026-10-20 11:30 |  | 29% | 40.94d | 101.28d |  |  |  | 3.5h | 1h |
| 932 | 2.74.1 | заявка на сифон, планирование монтаж |  | 1h | 2026-08-12 09:00 A | 2026-08-12 10:00 A |  | 100% |  |  |  | start no earlier than 2026-08-12 09:00 | Зорькин В | 1h | 1h |
| 933 | 2.74.2 | возможно ли убрать сифоны ф50, достаточно ли заслонки без гидрозатвора? Как сделать гидрозатвор ф100 |  | 15min | 2026-10-19 09:00 | 2026-10-19 09:15 |  |  |  | 101.28d | 0d | start no earlier than 2026-10-19 09:00 | Труфанов А | 0.25h |  |
| 934 | 2.74.3 | решение | milestone | 0d | 2026-10-20 09:15 | 2026-10-20 09:15 | 933FS+1d |  |  | 101.28d | 0d | start no earlier than 2026-09-08 08:00 | Зорькин В |  |  |
| 935 | 2.74.4 | контроль доставка |  | 15min | 2026-10-20 09:15 | 2026-10-20 09:30 | 932FS+7d, 934 |  |  | 101.28d | 0d | start no earlier than 2026-08-31 09:00 | Зорькин В | 0.25h |  |
| 936 | 2.74.5 | монтаж |  | 2h | 2026-10-20 09:30 | 2026-10-20 11:30 | 935 |  |  | 101.28d |  | start no earlier than 2026-09-07 09:00 | Бобренок В | 2h |  |
| 937 | 2.75 | **установить инсекютер дополнительный на экструдер** |  | 22.25d | 2026-08-21 09:00 A | 2026-09-17 11:00 A |  | 100% |  |  |  |  |  | 2.5h | 2.5h |
| 938 | 2.75.1 | заявка инстекютер |  | 15min | 2026-08-21 09:00 A | 2026-08-21 09:15 A |  | 100% |  |  |  | start no earlier than 2026-08-21 09:00 | Зорькин В | 0.25h | 0.25h |
| 939 | 2.75.2 | контроль доставки |  | 15min | 2026-09-09 09:00 A | 2026-09-09 09:15 A | 938FS+7d | 100% |  |  |  | start no earlier than 2026-09-09 09:00 | Зорькин В | 0.25h | 0.25h |
| 940 | 2.75.3 | монтаж розетка / кабель |  | 2h | 2026-09-17 09:00 A | 2026-09-17 11:00 A | 939FS+1d | 100% |  |  |  | start no earlier than 2026-09-17 09:00 | Труфанов А | 2h | 2h |
| 941 | 2.76 | маркировка канистры гидролизата - передать на время гровер нач цеха 2 |  | 20min | 2026-08-11 09:00 A | 2026-08-11 09:20 A |  | 100% |  |  |  | start no earlier than 2026-08-11 09:00 | Бобренок В | 0.33h | 0.33h |

| ID | WBS | Task | Type | Duration | Start | Finish | Predecessors | Complete | Remaining | Total slack | Free slack | Constraint | Resources | Work | Actual work |
| --- | --- | --- | --- | --- | --- | --- | --- | --- | --- | --- | --- | --- | --- | --- | --- |
| 942 | 2.77 | **ограждение мусорного контейнера у 2ц** |  | 15d | 2026-08-31 09:00 A | 2026-09-15 18:00 A |  | 100% |  |  |  |  |  | 34.75h | 34.75h |
| 943 | 2.77.1 | схема размещения |  | 1h | 2026-08-31 09:00 A | 2026-08-31 10:00 A |  | 100% |  |  |  | start no earlier than 2026-08-31 09:00 | Зорькин В | 1h | 1h |
| 944 | 2.77.2 | контроль остатков материала - каркас + обшивка стен |  | 30min | 2026-08-31 10:00 A | 2026-08-31 10:30 A | 943 | 100% |  |  |  | start no earlier than 2026-08-14 09:00 | Зорькин В | 0.5h | 0.5h |
| 945 | 2.77.3 | заявка материал / лист |  | 1h | 2026-09-01 10:30 A | 2026-09-01 11:30 A | 944FS+1d | 100% |  |  |  | start no earlier than 2026-08-10 08:00 | Зорькин В | 1h | 1h |
| 946 | 2.77.4 | контроль поставка |  | 15min | 2026-09-14 11:30 A | 2026-09-14 11:45 A | 945FS+10d | 100% |  |  |  | start no earlier than 2026-08-10 08:00 | Зорькин В | 0.25h | 0.25h |
| 947 | 2.77.5 | монтаж каркас + обшивка |  | 2d | 2026-09-14 09:00 A | 2026-09-15 18:00 A | 946FS+1d | 100% |  |  |  | start no earlier than 2026-08-10 08:00 | Некрасов А; Тимофеев В | 32h | 32h |
| 948 | 2.78 | **установить кондиционер контролерам ОТК в 2ц** |  | 7.38d | 2026-08-19 09:00 A | 2026-08-28 12:00 A |  | 100% |  |  |  |  |  | 7.5h | 7.5h |
| 949 | 2.78.1 | оапата счет контроль |  | 15min | 2026-08-19 09:00 A | 2026-08-19 09:15 A |  | 100% |  |  |  | start no earlier than 2026-08-19 09:00 | Домоводов К | 0.25h | 0.25h |
| 950 | 2.78.2 | длоставка контроль |  | 15min | 2026-08-24 09:15 A | 2026-08-24 09:30 A | 949FS+4d | 100% |  |  |  | start no earlier than 2026-08-17 09:00 | Домоводов К | 0.25h | 0.25h |
| 951 | 2.78.3 | монтаж |  | 4h | 2026-08-24 09:30 A | 2026-08-24 14:30 A | 950 | 100% |  |  |  | start no earlier than 2026-08-10 08:00 | оплот | 4h | 4h |
| 952 | 2.78.4 | монтаж крозетка |  | 3h | 2026-08-28 09:00 A | 2026-08-28 12:00 A | 951FS-1d | 100% |  |  |  | start no earlier than 2026-08-28 09:00 | Бобренок В | 3h | 3h |
| 953 | 2.79 | **усиление подогрев приточной вентиляции** |  | 58d? | 2026-08-17 09:00 A | 2026-10-23 18:00 |  | 33% | 38.93d? | 97.59d |  |  |  | 18.25h | 6h |
| 954 | 2.79.1 | планирование мощности для приточная вент до 200 квт + тепл завесы |  | 4h | 2026-08-17 09:00 A | 2026-08-17 13:00 A |  | 100% |  |  |  | start no earlier than 2026-08-17 09:00 | Домоводов К | 4h | 4h |
| 955 | 2.79.2 | Подключить колорифер в противоток, гибкую подводку получить на складе |  | 2h | 2026-09-24 09:00 A | 2026-09-24 11:00 A |  | 100% |  |  |  | start no earlier than 2026-09-24 08:00 | Дедов В | 2h | 2h |
| 956 | 2.79.3 | заявка доп котлы + автоматика |  | 4h | 2026-09-16 09:00 | 2026-09-16 13:00 | 954FS+1d |  |  | 119.06d | 0d | start no earlier than 2026-09-16 09:00 | Домоводов К | 4h |  |
| 957 | 2.79.4 | контроль поствки |  | 15min | 2026-09-26 14:00 | 2026-09-26 14:15 | 956FS+10d |  |  | 119.06d | 21.47d | start no earlier than 2026-08-10 08:00 | Зорькин В | 0.25h |  |
| 958 | 2.79.5 | монтаж |  | 1d? | 2026-10-23 09:00 | 2026-10-23 18:00 | 957 |  |  | 97.59d |  | start no earlier than 2026-10-23 09:00 | Некрасов А | 8h |  |
| 959 | 2.80 | собрать 4 стула и тумбочку. Находятся у мастера |  | 4h | 2026-08-10 08:00 A | 2026-08-10 13:00 A |  | 100% |  |  |  | start no earlier than 2026-08-10 08:00 | Бобренок В | 4h | 4h |
| 960 | 2.81 | кабель к вентилятору печи примыкание гофры к трубе выполнить без пустот фото Фадеевой |  | 1h | 2026-08-11 09:00 A | 2026-08-11 10:00 A |  | 100% |  |  |  | start no earlier than 2026-08-11 09:00 | Бобренок В | 1h | 1h |
| 961 | 2.82 | закрыить все эл щщитки на ключь |  | 1h | 2026-08-10 08:00 A | 2026-08-10 10:00 A |  | 100% |  |  |  | start no earlier than 2026-08-10 08:00 | Бобренок В | 1h | 1h |
| 962 | 2.83 | установить отбойник склад навесок, стена мойки |  | 1h | 2026-08-10 08:00 A | 2026-08-10 10:00 A |  | 100% |  |  |  | start no earlier than 2026-08-10 08:00 | Бобренок В | 1h | 1h |
| 963 | 2.84 | **обеспечить не менее +15 зимой в зоне хранения навесок** |  | 72.75d? | 2026-08-04 09:00 A | 2026-11-02 16:00 |  | 23% | 56.19d? | 91.84d |  |  |  | 42.25h | 8.25h |
| 964 | 2.84.1 | **утепление стены** |  | 52.75d | 2026-09-01 09:00 A | 2026-11-02 16:00 |  | 14% | 45.47d | 91.84d |  |  |  | 13.25h | 1h |
| 965 | 2.84.1.1 | расчет количство утеплителя + профлист/саморезы. Заявка |  | 1h | 2026-09-09 09:00 A | 2026-09-09 10:00 A |  | 100% |  |  |  | start no earlier than 2026-09-09 09:00 | Зорькин В | 1h | 1h |
| 966 | 2.84.1.2 | получить цену / решение о тепловой завесе | milestone | 0d | 2026-09-01 09:00 A | 2026-09-01 09:00 A |  | 100% |  |  |  | start no earlier than 2026-09-01 09:00 | Домоводов К |  |  |
| 967 | 2.84.1.3 | контроль даты доставки |  | 15min | 2026-09-14 10:00 | 2026-09-14 10:15 | 965FS+5d |  |  | 130.69d | 38.84d | start no earlier than 2026-08-27 08:00 | Зорькин В | 0.25h |  |
| 968 | 2.84.1.4 | монтаж пеноплекса на стену |  | 6h | 2026-11-02 09:00 | 2026-11-02 16:00 | 967FS+1d |  |  | 91.84d |  | start no earlier than 2026-11-02 09:00 | Бобренок В; Труфанов А | 12h |  |
| 969 | 2.84.1.5 | решение об утеплении стены сравнить с затратами на тепловые завесы | milestone | 0h | 2026-09-01 09:00 | 2026-09-01 09:00 | 966, 985 |  |  | 123.25d | 25d | start no earlier than 2026-08-24 09:00 | Домоводов К |  |  |

| ID | WBS | Task | Type | Duration | Start | Finish | Predecessors | Complete | Remaining | Total slack | Free slack | Constraint | Resources | Work | Actual work |
| --- | --- | --- | --- | --- | --- | --- | --- | --- | --- | --- | --- | --- | --- | --- | --- |
| 970 | 2.84.2 | **кап ремонт стен зона хранения навесок. Промерзают** |  | 5.12d | 2026-08-04 09:00 A | 2026-08-11 10:00 A |  | 100% |  |  |  |  |  | 5h | 5h |
| 971 | 2.84.2.1 | установить листы на место склад навесо стена с эл щитком |  | 1h | 2026-08-11 09:00 A | 2026-08-11 10:00 A |  | 100% |  |  |  | start no earlier than 2026-08-11 09:00 | Тимофеев В | 1h | 1h |
| 972 | 2.84.2.2 | вскрытие стен дя составления плана работ. Демонтировать несколько листов в зоне промерзания (гдещиток) |  | 4h | 2026-08-04 09:00 A | 2026-08-04 13:00 A |  | 100% |  |  |  | start no earlier than 2026-08-04 09:00 | Тимофеев В | 4h | 4h |
| 973 | 2.84.3 | **тепловые завесы в 2ц зона подачи навесок** |  | 57.34d? | 2026-08-17 09:00 A | 2026-10-23 11:45 |  | 8% | 52.51d? | 98.25d |  |  |  | 23.75h | 2h |
| 974 | 2.84.3.1 | **монтаж теплокалориферов** |  | 20.34d? | 2026-09-28 09:00 | 2026-10-23 11:45 |  |  |  | 98.25d |  |  |  | 10.75h |  |
| 975 | 2.84.3.1.1 | заявка |  | 2h | 2026-09-28 09:00 | 2026-09-28 11:00 | 969FS+1d |  |  | 98.25d | 0d | start no earlier than 2026-09-28 09:00 | Домоводов К | 2h |  |
| 976 | 2.84.3.1.2 | контроль оплаты\ |  | 15min | 2026-09-30 11:00 | 2026-09-30 11:15 | 975FS+2d |  |  | 98.25d | 0d | start no earlier than 2026-09-07 09:00 | Зорькин В | 0.25h |  |
| 977 | 2.84.3.1.3 | контроль доставки |  | 15min | 2026-10-20 11:15 | 2026-10-20 11:30 | 976FS+15d |  |  | 98.25d | 0d | start no earlier than 2026-08-10 08:00 | Зорькин В | 0.25h |  |
| 978 | 2.84.3.1.4 | приемка |  | 15min | 2026-10-21 11:30 | 2026-10-21 11:45 | 977FS+1d |  |  | 98.25d | 0d | start no earlier than 2026-08-10 08:00 | Зорькин В | 0.25h |  |
| 979 | 2.84.3.1.5 | монтаж калориферов |  | 1d? | 2026-10-22 11:45 | 2026-10-23 11:45 | 978FS+1d |  |  | 98.25d |  | start no earlier than 2026-08-10 08:00 | Некрасов А | 8h |  |
| 980 | 2.84.3.2 | **монтаж кабель** |  | 54d? | 2026-08-17 09:00 A | 2026-10-19 18:00 |  | 15% | 45.69d? | 101.59d |  |  |  | 13h | 2h |
| 981 | 2.84.3.2.1 | планирование мощности |  | 2h | 2026-08-17 09:00 A | 2026-08-17 11:00 A |  | 100% |  |  |  | start no earlier than 2026-08-17 09:00 | Домоводов К | 2h | 2h |
| 982 | 2.84.3.2.2 | заявка кабель /щиток |  | 2h | 2026-09-28 09:00 | 2026-09-28 11:00 | 981 |  |  | 111.22d | 0d | start no earlier than 2026-09-28 09:00 | Домоводов К | 2h |  |
| 983 | 2.84.3.2.3 | контроль доставка |  | 1h | 2026-10-04 11:00 | 2026-10-04 12:00 | 982FS+5d |  |  | 111.22d | 9.62d | start no earlier than 2026-08-10 08:00 | Зорькин В | 1h |  |
| 984 | 2.84.3.2.4 | монтаж |  | 1d? | 2026-10-19 09:00 | 2026-10-19 18:00 | 983FS+1d |  |  | 101.59d |  | start no earlier than 2026-10-19 09:00 | Некрасов А | 8h |  |
| 985 | 2.84.4 | контроль достаточности если не крепить верхние саморезы |  | 15min | 2026-08-13 09:00 A | 2026-08-13 09:15 A |  | 100% |  |  |  | start no earlier than 2026-08-13 09:00 | Домоводов К | 0.25h | 0.25h |
| 986 | 2.85 | **дверь в мойку сделать герметичный притвор** |  | 1.25d | 2026-08-14 09:00 A | 2026-08-17 11:00 A |  | 100% |  |  |  |  |  | 2.33h | 2.33h |
| 987 | 2.85.1 | подбор уплотнителя / заказать |  | 20min | 2026-08-14 09:00 A | 2026-08-14 09:20 A |  | 100% |  |  |  | start no earlier than 2026-08-14 09:00 | Домоводов К | 0.33h | 0.33h |
| 988 | 2.85.2 | монтаж резинки на клей |  | 2h | 2026-08-16 09:00 A | 2026-08-17 11:00 A |  | 100% |  |  |  | start no earlier than 2026-08-16 09:00 | Бобренок В | 2h | 2h |
| 989 | 2.86 | **пролистыватель с апликтором заказ** |  | 49d? | 2026-08-10 09:00 A | 2026-10-05 18:00 |  | 12% | 42.93d? | 111.59d |  |  |  | 9.42h | 1.17h |
| 990 | 2.86.1 | получить договор + счет |  | 1h | 2026-08-10 09:00 A | 2026-08-10 10:00 A |  | 100% |  |  |  | start no earlier than 2026-08-10 08:00 | Зорькин В | 1h | 1h |
| 991 | 2.86.2 | **согласвоание договор** |  | 3.02d | 2026-08-12 09:00 A | 2026-08-17 09:10 A |  | 100% |  |  |  |  |  | 0.17h | 0.17h |
| 992 | 2.86.2.1 | подать договор |  | 5min | 2026-08-12 09:00 A | 2026-08-12 09:05 A |  | 100% |  |  |  | start no earlier than 2026-08-12 09:00 | Домоводов К | 0.08h | 0.08h |
| 993 | 2.86.2.2 | контроль |  | 5min | 2026-08-17 09:05 A | 2026-08-17 09:10 A | 992FS+5d | 100% |  |  |  | start no earlier than 2026-08-12 09:00 | Домоводов К | 0.08h | 0.08h |
| 994 | 2.86.3 | оплата подать счет | milestone | 0d | 2026-08-12 09:00 A | 2026-08-12 09:00 A |  | 100% |  |  |  | start no earlier than 2026-08-12 09:00 | Домоводов К |  |  |
| 995 | 2.86.4 | доставка конетроль |  | 15min | 2026-09-18 09:00 | 2026-09-18 09:15 | 994FS+30d |  |  | 126.56d | 14.97d | start no earlier than 2026-08-10 08:00 | Зорькин В | 0.25h |  |
| 996 | 2.86.5 | монтаж |  | 1d? | 2026-10-05 09:00 | 2026-10-05 18:00 | 995FS+1d |  |  | 111.59d |  | start no earlier than 2026-10-05 09:00 | Тимофеев В | 8h |  |

| ID | WBS | Task | Type | Duration | Start | Finish | Predecessors | Complete | Remaining | Total slack | Free slack | Constraint | Resources | Work | Actual work |
| --- | --- | --- | --- | --- | --- | --- | --- | --- | --- | --- | --- | --- | --- | --- | --- |
| 997 | 2.87 | **вентиляция мойка приточно-вытяжная 1ц 2 линия** |  | 9.19d | 2026-08-13 09:00 A | 2026-08-26 10:30 A |  | 100% |  |  |  |  |  | 20h | 20h |
| 998 | 2.87.1 | монтаж вытяжной трубы в колектор. После переноса вентиляторов отключен |  | 4h | 2026-08-17 09:00 A | 2026-08-17 13:00 A |  | 100% |  |  |  | start no earlier than 2026-08-16 09:00 | Бобренок В | 4h | 4h |
| 999 | 2.87.2 | составить проект |  | 4h | 2026-08-13 09:00 A | 2026-08-13 13:00 A |  | 100% |  |  |  | start no earlier than 2026-08-13 09:00 | Домоводов К | 4h | 4h |
| 1000 | 2.87.3 | заявка материалы |  | 1h | 2026-08-24 09:00 A | 2026-08-24 10:00 A | 999FS+7d | 100% |  |  |  | start no earlier than 2026-08-24 09:00 | Зорькин В | 1h | 1h |
| 1001 | 2.87.4 | контроль поставки |  | 30min | 2026-08-25 10:00 A | 2026-08-25 10:30 A | 1000FS+1d | 100% |  |  |  | start no earlier than 2026-08-10 08:00 | Зорькин В | 0.5h | 0.5h |
| 1002 | 2.87.5 | монтаж |  | 1d | 2026-08-25 10:30 A | 2026-08-26 10:30 A | 1001 | 100% |  |  |  | start no earlier than 2026-08-10 08:00 | Некрасов А; Тимофеев В | 10.5h | 10.5h |
| 1003 | 2.88 | **выполнить обрамление двери в охладитель, что бы скрыть поверхность** |  | 27.25d | 2026-08-14 09:00 A | 2026-09-17 11:00 A |  | 100% |  |  |  |  |  | 4.5h | 4.5h |
| 1004 | 2.88.1 | заказ декоративный уголок |  | 15min | 2026-08-14 09:00 A | 2026-08-14 09:15 A |  | 100% |  |  |  | start no earlier than 2026-08-14 09:00 | Домоводов К | 0.25h | 0.25h |
| 1005 | 2.88.2 | контроль доставки |  | 15min | 2026-09-09 09:00 A | 2026-09-09 09:15 A | 1004FS+5d | 100% |  |  |  | start no earlier than 2026-09-09 09:00 | Зорькин В | 0.25h | 0.25h |
| 1006 | 2.88.3 | обить дверь в охладитель профлистом оцнк |  | 2h | 2026-09-17 09:00 A | 2026-09-17 11:00 A |  | 100% |  |  |  | start no earlier than 2026-09-17 09:00 | Некрасов А | 2h | 2h |
| 1007 | 2.88.4 | монтаж |  | 2h | 2026-09-03 09:00 A | 2026-09-03 11:00 A | 1005FS+1d | 100% |  |  |  | start no earlier than 2026-09-03 09:00 | Труфанов А | 2h | 2h |
| 1008 | 2.89 | **ремонт осушителя компрессора 2ц** |  | 47.31d | 2026-08-09 09:00 A | 2026-10-04 11:30 |  | 82% | 8.63d | 113.28d |  |  |  | 13.58h | 11.33h |
| 1009 | 2.89.1 | проверка давления фреона |  | 1h | 2026-09-17 09:00 A | 2026-09-17 10:00 A |  | 100% |  |  |  | start no earlier than 2026-09-17 09:00 | Труфанов А; Некрасов А | 2h | 2h |
| 1010 | 2.89.2 | заявка фреон 134а |  | 15min | 2026-09-25 09:00 A | 2026-09-25 09:15 A | 1009 | 100% |  |  |  | start no earlier than 2026-09-25 09:00 | Зорькин В | 0.25h | 0.25h |
| 1011 | 2.89.3 | доставка контроль |  | 15min | 2026-10-02 09:15 | 2026-10-02 09:30 | 1010FS+7d |  |  | 113.28d | 0d | start no earlier than 2026-09-18 08:00 | Зорькин В | 0.25h |  |
| 1012 | 2.89.4 | заправить хладогент |  | 2h | 2026-10-04 09:30 | 2026-10-04 11:30 | 1011FS+1d |  |  | 113.28d |  | start no earlier than 2026-10-01 09:00 | Некрасов А | 2h |  |
| 1013 | 2.89.5 | фото шильдик для поиск в продаже |  | 10min | 2026-08-11 09:00 A | 2026-08-11 09:10 A |  | 100% |  |  |  | start no earlier than 2026-08-11 09:00 | Некрасов А | 0.17h | 0.17h |
| 1014 | 2.89.6 | связь с сервисным отделом получить дату |  | 1h | 2026-08-12 09:00 A | 2026-08-12 10:00 A |  | 100% |  |  |  | start no earlier than 2026-08-12 09:00 | Зорькин В | 1h | 1h |
| 1015 | 2.89.7 | фото шильдик для поиск в продаже |  | 1h | 2026-08-12 09:00 A | 2026-08-12 10:00 A |  | 100% |  |  |  | start no earlier than 2026-08-12 09:00 | Зорькин В | 1h | 1h |
| 1016 | 2.89.8 | слить конденсат с компрессора, чистка фильтров | manual | 3h | 2026-08-09 09:00 A | 2026-08-09 12:00 A |  | 100% |  |  |  | start no earlier than 2026-08-09 09:00 | Бобренок В | 3h | 3h |
| 1017 | 2.89.9 | попробовать смазать подшипники вентилятора осушителя |  | 15min | 2026-08-18 09:00 A | 2026-08-18 09:15 A |  | 100% |  |  |  | start no earlier than 2026-08-18 09:00 | Некрасов А | 0.25h | 0.25h |
| 1018 | 2.89.10 | замер размеров вентилятора |  | 15min | 2026-08-18 09:00 A | 2026-08-18 09:15 A |  | 100% |  |  |  | start no earlier than 2026-08-18 09:00 | Зорькин В; Некрасов А | 0.5h | 0.5h |
| 1019 | 2.89.11 | подбор аналога вентилятора погабариту |  | 1h | 2026-08-18 09:15 A | 2026-08-18 10:15 A | 1018 | 100% |  |  |  | start no earlier than 2026-08-14 09:00 | Зорькин В | 1h | 1h |
| 1020 | 2.89.12 | заменить вентилятор на осушителе (от охладителя, лежит на компрессоре). В 6 утра остановка |  | 2h | 2026-08-19 09:00 A | 2026-08-19 11:00 A |  | 100% |  |  |  | start no earlier than 2026-08-19 09:00 | Бобренок В | 2h | 2h |
| 1021 | 2.89.13 | Заявка в сервис не работает осушитель |  | 10min | 2026-08-31 09:00 A | 2026-08-31 09:10 A |  | 100% |  |  |  | start no earlier than 2026-08-31 09:00 | Зорькин В | 0.17h | 0.17h |
| 1022 | 2.90 | установить защитные крышки на клемник вентиляторов охладителя. От 3д печать | manual | 4h | 2026-09-16 09:00 A | 2026-09-16 13:00 A |  | 100% |  |  |  | start no earlier than 2026-09-16 09:00 | Труфанов А | 4h | 4h |
| 1023 | 2.91 | заменить резинки на красном баке (выдать, если будет остановка, поменять) | manual | 1h | 2026-08-31 09:00 A | 2026-08-31 10:00 A |  | 100% |  |  |  | start no earlier than 2026-08-31 09:00 | Бобренок В | 1h | 1h |
| 1024 | 2.92 | на приемной горловине красного смесителя закрутить второй ленточный хомут, чтобы не выпадала мука |  | 1h | 2026-08-06 09:00 A | 2026-08-06 10:00 A |  | 100% |  |  |  | start no earlier than 2026-08-06 08:00 | Труфанов А | 1h | 1h |

| ID | WBS | Task | Type | Duration | Start | Finish | Predecessors | Complete | Actual start | Actual finish | Constraint | Resources | Work | Actual work |
| --- | --- | --- | --- | --- | --- | --- | --- | --- | --- | --- | --- | --- | --- | --- |
| 1025 | 2.93 | **закрутить болты на петлях двери печи** |  | 0.12d | 2026-09-02 09:00 A | 2026-09-02 10:00 A |  | 100% |  |  |  |  | 1h | 1h |
| 1026 | 2.93.1 | попробовать закрутить на винтовые заклепки |  | 1h | 2026-09-02 09:00 A | 2026-09-02 10:00 A |  | 100% |  |  | start no earlier than 2026-09-04 09:00 | Некрасов А | 1h | 1h |
| 1027 | 2.94 | установка фильтров на подачу жира (осн. + резерв) |  | 2h | 2026-08-06 08:00 A | 2026-08-06 11:00 A |  | 100% |  |  | start no earlier than 2026-08-06 08:00 | Тимофеев В | 2h | 2h |
| 1028 | 2.95 | эксперимент с лейкой подача жиров |  | 1h | 2026-08-06 08:00 A | 2026-08-06 10:00 A |  | 100% |  |  | start no earlier than 2026-08-06 08:00 | Тимофеев В | 1h | 1h |
| 1029 | 2.96 | **по аналогии второй линии насверлить сверлом 1 мм отверстия в трубке для жиров** |  | 0.12d | 2026-08-06 09:00 A | 2026-08-06 10:00 A |  | 100% |  |  |  | Макаревич А | 2h | 2h |
| 1030 | 2.96.1 | установка трубки на жиры |  | 1h | 2026-08-06 09:00 A | 2026-08-06 10:00 A |  | 100% |  |  | start no earlier than 2026-08-06 09:00 | Тимофеев В | 1h | 1h |
| 1031 | 2.97 | поломоечная машинка вырезать из силикона шторку захвата воды |  | 2h | 2026-08-03 08:00 A | 2026-08-03 11:00 A |  | 100% |  |  | start no earlier than 2026-08-03 08:00 | Бобренок В | 2h | 2h |
| 1032 | 2.98 | **втулка фторопласт заказать 26х44х5** |  | 1d? | 2026-08-04 09:00 A | 2026-08-04 18:00 A |  | 100% |  |  |  | Шуранов Ю | 8h | 8h |
| 1033 | 2.98.1 | счет доставка |  | 1d? | 2026-08-04 09:00 A | 2026-08-04 18:00 A |  | 100% |  |  | start no earlier than 2026-08-04 08:00 |  |  |  |
| 1034 | 2.99 | **посмотреть вентилятор Сапелина у нас в кабинете (не работает)** |  | 1d? | 2026-08-04 09:00 A | 2026-08-04 18:00 A |  | 100% |  |  |  | Бобренок В | 8h | 8h |
| 1035 | 2.99.1 | сгорел двигатель |  | 1d? | 2026-08-04 09:00 A | 2026-08-04 18:00 A |  | 100% |  |  | start no earlier than 2026-08-04 08:00 |  |  |  |
| 1036 | 2.100 | слить конденсат с компрессора |  | 0.5h | 2026-08-02 09:00 A | 2026-08-03 09:30 A |  | 100% |  |  | start no earlier than 2026-08-02 09:00 | Бобренок В | 0.5h | 0.5h |
| 1037 | 2.101 | **продолжить изготовление приемной горловины по аналогии 3 ц.** |  | 4h? | 2026-08-10 09:00 | 2026-08-10 13:00 |  | 100% | 2026-07-29 09:00 | 2026-09-04 11:00 |  |  | 14.08h | 14.08h |
| 1038 | 2.101.1 | заказать прут нерж. |  | 1d? | 2026-07-29 09:00 A | 2026-07-29 18:00 A |  | 100% |  |  | start no earlier than 2026-07-29 09:00 | Зорькин В | 8h | 8h |
| 1039 | 2.101.2 | контроль доставка |  | 5min | 2026-08-18 09:00 A | 2026-08-18 09:05 A |  | 100% |  |  | start no earlier than 2026-08-18 09:00 | Зорькин В | 0.08h | 0.08h |
| 1040 | 2.101.3 | изготовление / установка |  | 4h | 2026-08-20 09:00 A | 2026-08-20 13:00 A | 1039 | 100% |  |  | start no earlier than 2026-08-20 09:00 | Макаревич А | 4h | 4h |
| 1041 | 2.101.4 | Корректировка горловины, сделать более плотные зазоры, посмотреть по месту |  | 2h | 2026-09-04 09:00 A | 2026-09-04 11:00 A |  | 100% |  |  | start no earlier than 2026-09-04 09:00 | Макаревич А | 2h | 2h |
| 1042 | 2.102 | прикрутить лотки охладителя, чтобы не задевали сетку (лишние отверстия заварить) | manual | 2h | 2026-08-03 09:00 A | 2026-08-03 11:00 A |  | 100% |  |  | start no earlier than 2026-08-03 09:00 | Бобренок В | 2h | 2h |
| 1043 | 2.103 | чистка фильтров кондиционеров | manual | 1h | 2026-08-01 09:00 A | 2026-08-01 10:00 A |  | 100% |  |  | start no earlier than 2026-08-01 09:00 | Бундин В | 1h | 1h |
| 1044 | 2.104 | слить конденсат с компрессора |  | 1h | 2026-07-30 08:00 A | 2026-07-30 10:00 A |  | 100% |  |  | start no earlier than 2026-07-30 08:00 | Дедов В | 1h | 1h |
| 1045 | 2.105 | слив конденсата с кондиционеров прочистить трубу | manual | 2h | 2026-08-01 09:00 A | 2026-08-01 11:00 A |  | 100% |  |  | start no earlier than 2026-08-01 09:00 | Бундин В | 2h | 2h |
| 1046 | 2.106 | Настройка частотника питателя (созвон с Валентином) |  | 1h | 2026-07-31 09:00 A | 2026-07-31 10:00 A |  | 100% |  |  | start no earlier than 2026-07-31 09:00 | Бундин В | 1h | 1h |
| 1047 | 2.107 | дверь металлическая зона выдачи ГП ревизия, плоход закрывается |  | 1h | 2026-07-15 09:00 A | 2026-07-15 10:00 A |  | 100% |  |  | start no earlier than 2026-07-15 09:00 | Бундин В | 1h | 1h |
| 1048 | 2.108 | крепление доводчик дверь входная |  | 1h | 2026-07-15 09:00 A | 2026-07-15 10:00 A |  | 100% |  |  | start no earlier than 2026-07-15 09:00 | Бундин В | 1h | 1h |
| 1049 | 2.109 | снять меющийся, установить новый прайсчекер (лежит у мастеров) |  | 1h | 2026-07-15 09:00 A | 2026-07-15 10:00 A |  | 100% |  |  | start no earlier than 2026-07-15 09:00 | Бундин В | 1h | 1h |
| 1050 | 2.110 | ремонт кронштейна датчик давления |  | 30min | 2026-07-10 09:00 A | 2026-07-10 09:30 A |  | 100% |  |  | start no earlier than 2026-07-10 09:00 | Бобренок В | 0.5h | 0.5h |
| 1051 | 2.111 | замерить демонтированные шнеки, заполнить ьабличку Зорькина |  | 1h | 2026-07-11 09:00 A | 2026-07-13 10:00 A |  | 100% |  |  | start no earlier than 2026-07-11 09:00 | Макаревич А | 1h | 1h |
| 1052 | 2.112 | обшить входной проем п-образным профилем (на складе лежит) | manual | 3h | 2026-07-08 09:00 A | 2026-07-08 12:00 A |  | 100% |  |  | start no earlier than 2026-07-08 09:00 | Некрасов А; Тимофеев В | 6h | 6h |
| 1053 | 2.113 | чистка воздушных клапанов на септике |  | 1d? | 2026-07-02 09:00 A | 2026-07-02 18:00 A |  | 100% |  |  | start no earlier than 2026-07-02 09:00 | Олег | 8h | 8h |
| 1054 | 2.114 | закрепить щиток транспортера у стены на фасовке, малый дозатор) | manual | 1h | 2026-07-04 09:00 A | 2026-07-04 10:00 A |  | 100% |  |  | start no earlier than 2026-07-04 09:00 | Дедов В | 1h | 1h |

| ID | WBS | Task | Type | Duration | Start | Finish | Complete | Constraint | Resources | Work | Actual work |
| --- | --- | --- | --- | --- | --- | --- | --- | --- | --- | --- | --- |
| 1055 | 2.115 | **под экструдером масло- ревизия откуда** |  | 0.12d | 2026-07-03 09:00 A | 2026-07-03 10:00 A | 100% |  |  | 1h | 1h |
| 1056 | 2.115.1 | заменить шланг 20мм (лежит черный на стеллаже справа, где кабель) при остановке- согласовать с мастером |  | 1h | 2026-07-03 09:00 A | 2026-07-03 10:00 A | 100% | start no earlier than 2026-07-03 09:00 | Макаревич А | 1h | 1h |
| 1057 | 2.116 | чистка труб сброса конденсата с кондиционеров |  | 2h | 2026-06-30 09:00 A | 2026-06-30 11:00 A | 100% | start no earlier than 2026-06-30 09:00 | Некрасов А; Тимофеев В | 2h | 2h |
| 1058 | 2.117 | чистка всех фильтров на кондиционеры, разобраться с питанием внутреннего блока |  | 1d? | 2026-06-29 09:00 A | 2026-06-29 18:00 A | 100% | start no earlier than 2026-06-29 09:00 |  |  |  |
| 1059 | 2.118 | ТО бестром |  | 2h | 2026-06-30 09:00 A | 2026-06-30 11:00 A | 100% | start no earlier than 2026-06-30 09:00 | Бундин В | 2h | 2h |
| 1060 | 2.119 | промыть внешние блоки кондиционеров |  | 3h | 2026-06-26 09:00 A | 2026-06-26 12:00 A | 100% | start no earlier than 2026-06-26 09:00 | Тимофеев В; Дедов В | 6h | 6h |
| 1061 | 2.120 | вернуть кожух защиты на прекондиционер (подогнать в размер) на остановке линии |  | 2h | 2026-06-24 09:00 A | 2026-06-24 11:00 A | 100% | start no earlier than 2026-06-24 09:00 | Труфанов А | 2h | 2h |
| 1062 | 2.121 | подключение тепловой защиты на приточке и вытяжке |  | 2h | 2026-06-23 08:00 A | 2026-06-23 11:00 A | 100% | start no earlier than 2026-06-23 08:00 | Тимофеев В; Макаревич А | 4h | 4h |
| 1063 | 2.122 | заменить фильтр приточка 2 этаж и указать кол-во остатка на складе |  | 1h | 2026-06-20 09:00 A | 2026-06-22 10:00 A | 100% | start no earlier than 2026-06-20 09:00 | Дедов В | 1h | 1h |
| 1064 | 2.123 | сделать защиту жировика от холода (изготовить из сенгвич панели на навесках 2ц.) жировик расскажет | manual | 2h | 2026-06-21 09:00 A | 2026-06-21 11:00 A | 100% | start no earlier than 2026-06-21 09:00 | Бундин В | 2h | 2h |
| 1065 | 2.124 | проверка теко 0,4 -пакет запаенный |  | 1h | 2026-06-18 08:00 A | 2026-06-18 10:00 A | 100% | start no earlier than 2026-06-18 08:00 | Дедов В | 1h | 1h |
| 1066 | 2.125 | подключение датчика давления через гидрошланг |  | 1h | 2026-07-09 09:00 A | 2026-07-09 10:00 A | 100% | start no earlier than 2026-07-09 09:00 | Бундин В | 1h | 1h |
| 1067 | 2.126 | чистка парогенератора |  | 2h | 2026-06-18 08:00 A | 2026-06-18 11:00 A | 100% | start no earlier than 2026-06-18 08:00 | Тимофеев В | 2h | 2h |
| 1068 | 2.127 | слив конденсата с компрессора и продуть радиаторы и фильтры |  | 1h | 2026-06-20 09:00 A | 2026-06-22 10:00 A | 100% | start no earlier than 2026-06-20 09:00 | Бобренок В | 1h | 1h |
| 1069 | 2.128 | проверить, есть ли давление во всех гидроаккумуляторах на отоплении по цеху, зафиксировать с порванными мембранами |  | 2h | 2026-06-11 09:00 A | 2026-06-11 11:00 A | 100% | start no earlier than 2026-06-11 09:00 | Дедов В | 2h | 2h |
| 1070 | 2.129 | дверь охладителя и угол - прикрутить наружний уголок 20х50 и 50х50, чтобы не резали руки (уголок на входе напротив ворот в синем складе) |  | 3h | 2026-06-12 09:00 A | 2026-06-12 12:00 A | 100% | start no earlier than 2026-06-12 09:00 | Дедов В | 3h | 3h |
| 1071 | 2.130 | взять на складе специальный п-образный профиль и обшить дверной проем вход в охладитель | manual | 2h | 2026-07-05 09:00 A | 2026-07-05 11:00 A | 100% | start no earlier than 2026-07-05 09:00 |  |  |  |
| 1072 | 2.131 | проверка гидроаккумулятора на водоподготовке |  | 0.5h | 2026-06-11 09:00 A | 2026-06-11 09:30 A | 100% | start no earlier than 2026-06-11 09:00 | Дедов В | 0.5h | 0.5h |
| 1073 | 2.132 | чистка парогенератора |  | 2h | 2026-06-11 09:00 A | 2026-06-11 11:00 A | 100% | start no earlier than 2026-06-11 09:00 | Тимофеев В | 2h | 2h |
| 1074 | 2.133 | **посмотреть на желтом складе шибер, если найдем устанавливаем на аквариум зона экструдера** |  | 0.12d | 2026-06-12 09:00 A | 2026-06-12 10:00 A | 100% |  |  | 1h | 1h |
| 1075 | 2.133.1 | монтаж воздуховод под углом на шибер- настройка с операторами направление обдува |  | 1h | 2026-06-12 09:00 A | 2026-06-12 10:00 A | 100% | start no earlier than 2026-06-12 09:00 | Бундин В | 1h | 1h |
| 1076 | 2.134 | **ворота выход готовой продукции (прикрутить ролик, ролик у нас в кабинете)** |  | 1d? | 2026-06-11 09:00 A | 2026-06-11 18:00 A | 100% |  |  | 8h | 8h |
| 1077 | 2.134.1 | выкл. Ручной режим |  | 1d? | 2026-06-11 09:00 A | 2026-06-11 18:00 A | 100% | start no earlier than 2026-06-11 09:00 | Дедов В | 8h | 8h |
| 1078 | 2.135 | промерить шнеки / гильзы износ. Маркировать |  | 1h | 2026-07-08 09:00 A | 2026-07-08 10:00 A | 100% | start no earlier than 2026-07-08 09:00 | Зорькин В | 1h | 1h |
| 1079 | 2.136 | сверлить сетку от фильеры, сверлом на станке, все отверстия. |  | 4h | 2026-06-06 09:00 A | 2026-06-08 13:00 A | 100% | start no earlier than 2026-06-06 09:00 | Бобренок В | 4h | 4h |

| ID | WBS | Task | Type | Duration | Start | Finish | Predecessors | Complete | Actual start | Actual finish | Constraint | Resources | Work | Actual work |
| --- | --- | --- | --- | --- | --- | --- | --- | --- | --- | --- | --- | --- | --- | --- |
| 1080 | 2.137 | **заменаить сальник редуктора транспортер №3** |  | 0.12d | 2026-06-18 09:00 A | 2026-06-18 10:00 A |  | 100% |  |  |  |  | 2h | 2h |
| 1081 | 2.137.1 | заменаить редутор из зип |  | 1h | 2026-06-18 09:00 A | 2026-06-18 10:00 A |  | 100% |  |  | start no earlier than 2026-06-18 09:00 | Тимофеев В | 1h | 1h |
| 1082 | 2.137.2 | замена сальник на снятом |  | 1h | 2026-06-18 09:00 A | 2026-06-18 10:00 A |  | 100% |  |  | start no earlier than 2026-06-19 09:00 | Тимофеев В | 1h | 1h |
| 1083 | 2.138 | законтрогаить шпильки-ножки запайщиков |  | 1h | 2026-06-06 09:00 A | 2026-06-08 10:00 A |  | 100% |  |  | start no earlier than 2026-06-06 09:00 | Бобренок В | 1h | 1h |
| 1084 | 2.139 | **нория квадропак -устранить просыпание** |  | 1d? | 2026-06-04 09:00 A | 2026-06-04 18:00 A |  | 100% |  |  |  | Тимофеев В | 16h | 16h |
| 1085 | 2.139.1 | добавить частоту частотника до 70 на норию |  | 1d? | 2026-06-04 09:00 A | 2026-06-04 18:00 A |  | 100% |  |  | start no earlier than 2026-06-04 09:00 | Дедов В | 8h | 8h |
| 1086 | 2.140 | Замена шнеков (усиленные) - по уровню |  | 4h | 2026-06-04 09:00 A | 2026-06-04 13:00 A |  | 100% |  |  | start no earlier than 2026-06-04 09:00 | Тимофеев В | 4h | 4h |
| 1087 | 2.141 | монтаж воздуховод приточный в площадку загрузки смесителя |  | 3h | 2026-06-05 09:00 A | 2026-06-05 12:00 A |  | 100% |  |  | start no earlier than 2026-06-05 09:00 | Некрасов А | 3h | 3h |
| 1088 | 2.142 | очистка вентилятора окно экструдер |  | 40min | 2026-06-04 09:00 A | 2026-06-04 09:40 A |  | 100% |  |  | start no earlier than 2026-06-04 09:00 | Некрасов А; Бундин В | 1.33h | 1.33h |
| 1089 | 2.143 | **доп освещение зона охладитель** |  | 4.75d? | 2026-06-09 09:00 | 2026-06-15 16:00 |  | 100% | 2026-06-10 09:00 | 2026-08-06 11:00 |  |  | 12.67h | 12.67h |
| 1090 | 2.143.1 | спланировать монтаж / проверить наличие матералов |  | 20min | 2026-06-25 09:00 A | 2026-06-25 09:20 A |  | 100% |  |  | start no earlier than 2026-06-25 09:00 | Шуранов Ю; Дедов В | 0.67h | 0.67h |
| 1091 | 2.143.2 | заказать |  | 1d? | 2026-06-10 09:00 A | 2026-06-10 18:00 A |  | 100% |  |  | start no earlier than 2026-06-10 09:00 | Шуранов Ю | 8h | 8h |
| 1092 | 2.143.3 | монтаж |  | 2h | 2026-08-06 09:00 A | 2026-08-06 11:00 A | 1090 | 100% |  |  | start no earlier than 2026-08-06 09:00 | Тимофеев В; Бундин В | 4h | 4h |
| 1093 | 2.144 | отключить двигатель зиплока бестром |  | 1h | 2026-06-12 09:00 A | 2026-06-12 10:00 A |  | 100% |  |  | start no earlier than 2026-06-12 09:00 | Бундин В | 1h | 1h |
| 1094 | 2.145 | ж гардероб душ кабина осмотр гидрозатвор - сильный запах |  | 2h | 2026-05-30 09:00 A | 2026-06-01 11:00 A |  | 100% |  |  | start no earlier than 2026-05-30 09:00 | Бобренок В | 2h | 2h |
| 1095 | 2.146 | ремонт кресло , паук находится на складе у Веры |  | 1h | 2026-06-13 09:00 A | 2026-06-15 10:00 A |  | 100% |  |  | start no earlier than 2026-06-13 09:00 | Бобренок В | 1h | 1h |
| 1096 | 2.147 | ревизия нихром запайщик |  | 1h | 2026-05-29 09:00 A | 2026-05-29 10:00 A |  | 100% |  |  | start no earlier than 2026-05-29 08:00 | Бундин В | 1h | 1h |
| 1097 | 2.148 | штабелер 2ц ревизия колес |  | 1h | 2026-06-01 09:00 A | 2026-06-01 10:00 A |  | 100% |  |  | start no earlier than 2026-06-01 09:00 | Макаревич А | 1h | 1h |
| 1098 | 2.149 | **ремонт эл котел №3 охладитель** |  | 79.25d? | 2026-06-05 09:00 A | 2026-09-19 11:00 A |  | 100% |  |  |  |  | 24.25h | 24.25h |
| 1099 | 2.149.1 | заказать плату |  | 1d? | 2026-07-15 09:00 A | 2026-07-15 18:00 A |  | 100% |  |  | start no earlier than 2026-07-15 09:00 | Зорькин В | 8h | 8h |
| 1100 | 2.149.2 | замена силовой платы зота в районе мойки экструдера (плата на складе) -проверка | manual | 2h | 2026-08-09 09:00 A | 2026-08-09 11:00 A |  | 100% |  |  | start no earlier than 2026-08-09 09:00 | Бобренок В | 2h | 2h |
| 1101 | 2.149.3 | котел №3 проверка платы силовой управления тенами (после откл управления перегрелся пошел дым) на складе есть платы 2 шт. для ЗОТА. Слава плату заменил грешит на д температуры |  | 2h | 2026-09-01 09:00 A | 2026-09-01 11:00 A |  | 100% |  |  | start no earlier than 2026-09-01 09:00 | Дедов В | 2h | 2h |
| 1102 | 2.149.4 | Замена силовой платы, где сгорела 1 ТТР |  | 2h | 2026-08-31 08:00 A | 2026-08-31 11:00 A |  | 100% |  |  | start no earlier than 2026-08-31 08:00 | Дедов В | 2h | 2h |
| 1103 | 2.149.5 | Не работает блок тенов, заказать |  | 10min | 2026-09-01 09:00 A | 2026-09-01 09:10 A |  | 100% |  |  | start no earlier than 2026-09-01 08:00 | Зорькин В | 0.17h | 0.17h |
| 1104 | 2.149.6 | Контроль доставки |  | 5min | 2026-09-09 09:00 A | 2026-09-09 09:05 A |  | 100% |  |  | start no earlier than 2026-09-09 09:00 | Зорькин В | 0.08h | 0.08h |
| 1105 | 2.149.7 | замена блок тенов |  | 2h | 2026-09-19 09:00 A | 2026-09-19 11:00 A |  | 100% |  |  | start no earlier than 2026-09-19 09:00 | Дедов В | 2h | 2h |
| 1106 | 2.149.8 | заказать плату управления |  | 1d? | 2026-06-05 09:00 A | 2026-06-05 18:00 A |  | 100% |  |  | start no earlier than 2026-06-05 09:00 | Зорькин В | 8h | 8h |
| 1107 | 2.150 | замена задних подшипников на прекондиционере (посмотреть итальянские на складе) |  | 6h | 2026-05-26 09:00 A | 2026-05-26 16:00 A |  | 100% |  |  | start no earlier than 2026-05-26 09:00 | Тимофеев В; Некрасов А | 12h | 12h |
| 1108 | 2.151 | перемотать трубы скотчем серым и по низу стык улиток "загерметизировать" |  | 2h | 2026-05-25 08:00 A | 2026-05-25 11:00 A |  | 100% |  |  | start no earlier than 2026-05-25 08:00 | Макаревич А | 2h | 2h |

| ID | WBS | Task | Type | Duration | Start | Finish | Complete | Actual finish | Constraint | Resources | Work | Actual work |
| --- | --- | --- | --- | --- | --- | --- | --- | --- | --- | --- | --- | --- |
| 1109 | 2.152 | **изготовить мойка малая из нерж** |  | 0.5d | 2026-06-01 08:00 A | 2026-06-01 13:00 A | 100% |  |  | Макаревич А | 8h | 8h |
| 1110 | 2.152.1 | подключить мойку на месте (по телефону обсудим) |  | 4h | 2026-06-01 08:00 A | 2026-06-01 13:00 A | 100% |  | start no earlier than 2026-06-01 08:00 | Макаревич А | 4h | 4h |
| 1111 | 2.153 | **дополнительное освещение в зоне жиров** |  | 6.5d | 2026-05-26 09:00 A | 2026-06-01 13:00 | 100% | 2026-06-04 09:30 |  |  | 5h | 5h |
| 1112 | 2.153.1 | заказ светильников |  | 1h | 2026-05-26 09:00 A | 2026-05-26 10:00 A | 100% |  | start no earlier than 2026-05-26 09:00 | Шуранов Ю | 1h | 1h |
| 1113 | 2.153.2 | монтаж |  | 4h | 2026-06-01 09:00 A | 2026-06-01 13:00 A | 100% |  | start no earlier than 2026-06-01 09:00 | Макаревич А | 4h | 4h |
| 1114 | 2.153.3 | подключить к автомату на мойке |  | 0.5h | 2026-06-04 09:00 A | 2026-06-04 09:30 A | 100% |  | start no earlier than 2026-06-04 09:00 |  |  |  |
| 1115 | 2.154 | подключить пк мастеров через ИБП (согласовать с мастером 1 цеха) |  | 1h | 2026-05-25 09:00 A | 2026-05-25 10:00 A | 100% |  | start no earlier than 2026-05-25 08:00 | Шуранов Ю | 1h | 1h |
| 1116 | 2.155 | заменить помпу на термопоте в кухне |  | 1h | 2026-05-27 09:00 A | 2026-05-27 10:00 A | 100% |  | start no earlier than 2026-05-27 09:00 | Дедов В | 1h | 1h |
| 1117 | 2.156 | лопнул шланг от насосной станции до редуктора- заменить |  | 1h | 2026-05-25 08:00 A | 2026-05-25 10:00 A | 100% |  | start no earlier than 2026-05-25 08:00 | Макаревич А | 1h | 1h |
| 1118 | 2.157 | установить влагоотделитель на квадропак |  | 1h | 2026-05-25 08:00 A | 2026-05-25 10:00 A | 100% |  | start no earlier than 2026-05-25 08:00 | Дедов В | 1h | 1h |
| 1119 | 2.158 | закрепить монтажную коробку в коридоре до жировика слева, от кондиционера |  | 1h | 2026-05-22 09:00 A | 2026-05-22 10:00 A | 100% |  | start no earlier than 2026-05-22 09:00 | Бобренок В | 1h | 1h |
| 1120 | 2.159 | закрепить на доп. Клипсы трубу-воздух к стене за бестромом |  | 1h | 2026-05-23 09:00 A | 2026-05-25 10:00 A | 100% |  | start no earlier than 2026-05-23 09:00 | Бобренок В | 1h | 1h |
| 1121 | 2.160 | заменить сетку печки (находиться в слесарке) | manual | 3h | 2026-05-24 09:00 A | 2026-05-24 12:00 A | 100% |  | start no earlier than 2026-05-24 09:00 | Макаревич А | 3h | 3h |
| 1122 | 2.161 | уложить красиво и закрепить гофру от нории до красного смесителя | manual | 2h | 2026-05-24 09:00 A | 2026-05-24 11:00 A | 100% |  | start no earlier than 2026-05-24 09:00 | Макаревич А | 2h | 2h |
| 1123 | 2.162 | взять ножевой узел с желтого склада и фильеры, подготовить и передать во второй цех на экструдер |  | 1h | 2026-05-21 09:00 A | 2026-05-21 10:00 A | 100% |  | start no earlier than 2026-05-21 08:00 | Бундин В | 1h | 1h |
| 1124 | 2.163 | проверить все лотки на охладителе, чтобы не задевали сетку- если нужно поднять. |  | 1h | 2026-05-21 09:00 A | 2026-05-21 10:00 A | 100% |  | start no earlier than 2026-05-21 08:00 | Бундин В | 1h | 1h |
| 1125 | 2.164 | чистка парогенератора, если нужно замена электродов |  | 2h | 2026-05-21 08:00 A | 2026-05-21 11:00 A | 100% |  | start no earlier than 2026-05-21 08:00 | Тимофеев В | 2h | 2h |
| 1126 | 2.165 | чистка фильтра редуктора экструдера, проверка уровня масла |  | 1h | 2026-05-21 08:00 A | 2026-05-21 10:00 A | 100% |  | start no earlier than 2026-05-21 08:00 | Тимофеев В | 1h | 1h |
| 1127 | 2.166 | проверить пневмоцилиндры на встряхивателях квадропака |  | 1h | 2026-05-21 08:00 A | 2026-05-21 10:00 A | 100% |  | start no earlier than 2026-05-21 08:00 | Бобренок В | 1h | 1h |
| 1128 | 2.167 | проверка токов на печи, если просадка проверяем перемычки, тены |  | 1h | 2026-05-21 09:00 A | 2026-05-21 10:00 A | 100% |  | start no earlier than 2026-05-21 08:00 | Некрасов А | 1h | 1h |
| 1129 | 2.168 | коротит на баке жиров все проверить |  | 1h | 2026-05-21 09:00 A | 2026-05-21 10:00 A | 100% |  | start no earlier than 2026-05-21 08:00 |  |  |  |
| 1130 | 2.169 | в зоне фасовки сделать конструкцию, чтобы не выпадала макулатура |  | 6h | 2026-08-31 09:00 A | 2026-08-31 16:00 A | 100% |  | start no earlier than 2026-08-31 09:00 | Макаревич А | 6h | 6h |
| 1131 | 2.170 | закрепить доводчик на входной двери |  | 1h | 2026-05-23 09:00 A | 2026-05-25 10:00 A | 100% |  | start no earlier than 2026-05-23 09:00 | Бундин В | 1h | 1h |
| 1132 | 2.171 | установить розетку для палетооботчика на его колону |  | 2h | 2026-05-18 09:00 A | 2026-05-18 11:00 A | 100% |  | start no earlier than 2026-05-18 09:00 | Дедов В | 2h | 2h |

| ID | WBS | Task | Type | Duration | Start | Finish | Predecessors | Complete | Constraint | Resources | Work | Actual work |
| --- | --- | --- | --- | --- | --- | --- | --- | --- | --- | --- | --- | --- |
| 1133 | 2.172 | **ИБП установить на принтер SAVEMA** |  | 5.25d | 2026-05-19 09:00 A | 2026-05-26 11:00 A |  | 100% |  |  | 3.25h | 3.25h |
| 1134 | 2.172.1 | подбор и заявка ИБП |  | 1h | 2026-05-19 09:00 A | 2026-05-19 10:00 A |  | 100% | start no earlier than 2026-05-19 09:00 | Шуранов Ю | 1h | 1h |
| 1135 | 2.172.2 | контроль поставки |  | 15min | 2026-05-26 09:00 A | 2026-05-26 09:15 A |  | 100% | start no earlier than 2026-05-26 09:00 | Шуранов Ю | 0.25h | 0.25h |
| 1136 | 2.172.3 | монтаж и подключение в шкафу | manual | 2h | 2026-05-26 09:00 A | 2026-05-26 11:00 A | 1135 | 100% | start no earlier than 2026-05-26 09:00 | Дедов В | 2h | 2h |
| 1137 | 2.173 | **переместить на склад ЗИП палет сетка, зарядка АКБ штабелера** |  | 0.12d | 2026-06-01 09:00 A | 2026-06-01 10:00 A |  | 100% |  |  | 1h | 1h |
| 1138 | 2.173.1 | зарядку АКБ переместить в контейнер, она находится в мойке зона экструдера | manual | 1h | 2026-06-01 09:00 A | 2026-06-01 10:00 A |  | 100% | start no earlier than 2026-06-01 09:00 | Макаревич А | 1h | 1h |
| 1139 | 2.174 | **бестром замена линейный подшипник прижима красных ремней** |  | 24.5d | 2026-05-15 09:00 A | 2026-06-18 13:00 A |  | 100% |  |  | 5.25h | 5.25h |
| 1140 | 2.174.1 | заявка |  | 1h | 2026-05-15 09:00 A | 2026-05-15 10:00 A |  | 100% | start no earlier than 2026-05-15 09:00 | Зорькин В | 1h | 1h |
| 1141 | 2.174.2 | доставка контроль |  | 15min | 2026-05-27 10:00 A | 2026-05-27 10:15 A | 1140FS+10d | 100% | start no earlier than 2026-05-14 08:00 | Зорькин В | 0.25h | 0.25h |
| 1142 | 2.174.3 | замена |  | 4h | 2026-06-18 09:00 A | 2026-06-18 13:00 A | 1141 | 100% | start no earlier than 2026-06-18 09:00 | Тимофеев В | 4h | 4h |
| 1143 | 2.175 | осмотр цепи муфты редуктора экструдера |  | 1h | 2026-05-14 09:00 A | 2026-05-14 10:00 A |  | 100% | start no earlier than 2026-05-14 09:00 | Тимофеев В | 1h | 1h |
| 1144 | 2.176 | Линия 3 на жирах нужно поменять колеса на транспортёре, который идет на охладитель |  | 1h | 2026-05-14 09:00 A | 2026-05-14 10:00 A |  | 100% | start no earlier than 2026-05-14 09:00 | Макаревич А | 1h | 1h |
| 1145 | 2.177 | осмотр прекондиционер "звон" |  | 30min | 2026-05-14 09:00 A | 2026-05-14 09:30 A |  | 100% | start no earlier than 2026-05-14 09:00 | Тимофеев В | 0.5h | 0.5h |
| 1146 | 2.178 | **заменить гофра унитаз правый отсек** |  | 16.12d | 2026-05-13 09:00 A | 2026-06-04 10:00 A |  | 100% |  |  | 41.25h | 41.25h |
| 1147 | 2.178.1 | заявка гофра |  | 15min | 2026-05-13 09:00 A | 2026-05-13 09:15 A |  | 100% | start no earlier than 2026-05-13 09:00 | Зорькин В | 0.25h | 0.25h |
| 1148 | 2.178.2 | доставка |  | 5d | 2026-05-13 09:15 A | 2026-05-20 09:15 A | 1147 | 100% | start no earlier than 2026-05-12 08:00 | Карабанов | 40h | 40h |
| 1149 | 2.178.3 | замена |  | 1h | 2026-06-04 09:00 A | 2026-06-04 10:00 A | 1148 | 100% | start no earlier than 2026-06-04 09:00 | Бобренок В | 1h | 1h |
| 1150 | 2.179 | замена смазка шприц на экструдере |  | 30min | 2026-05-13 09:00 A | 2026-05-13 09:30 A |  | 100% | start no earlier than 2026-05-13 09:00 | Некрасов А | 0.5h | 0.5h |
| 1151 | 2.180 | замена передний подшипник + набивка прекондиционер |  | 1h | 2026-05-14 09:00 A | 2026-05-14 10:00 A |  | 100% | start no earlier than 2026-05-14 09:00 | Тимофеев В | 1h | 1h |
| 1152 | 2.181 | прикрутить лоток выше на 1 ярусе, задевает сетку со сторону редуктора |  | 1h | 2026-05-08 08:00 A | 2026-05-08 10:00 A |  | 100% | start no earlier than 2026-05-08 08:00 | Макаревич А | 1h | 1h |
| 1153 | 2.182 | взять шайбу у нас в кабинете и шлифануть одну сторону |  | 1h | 2026-05-08 09:00 A | 2026-05-08 10:00 A |  | 100% | start no earlier than 2026-05-08 09:00 | Макаревич А | 1h | 1h |
| 1154 | 2.183 | смотровое окно на загрузке прекондиционера установить |  | 4h | 2026-08-25 09:00 A | 2026-08-25 13:00 A |  | 100% | start no earlier than 2026-08-31 09:00 | Тимофеев В | 4h | 4h |
| 1155 | 2.184 | добавить воду в систему отопления зота охладитель |  | 1h | 2026-05-09 09:00 A | 2026-05-11 10:00 A |  | 100% | start no earlier than 2026-05-09 09:00 | Макаревич А | 1h | 1h |
| 1156 | 2.185 | монтаж сетки на палетообмотчике | manual | 4h | 2026-05-14 09:00 A | 2026-05-14 13:00 A |  | 100% | start no earlier than 2026-05-14 09:00 | Некрасов А; Труфанов А | 8h | 8h |
| 1157 | 2.186 | Собрать стул, находится в кабинете мастеров 2 цех |  | 1h | 2026-05-13 09:00 A | 2026-05-13 10:00 A |  | 100% | start no earlier than 2026-05-13 09:00 | Бундин В | 1h | 1h |

| ID | WBS | Task | Type | Duration | Start | Finish | Complete | Actual start | Actual finish | Constraint | Resources | Work | Actual work |
| --- | --- | --- | --- | --- | --- | --- | --- | --- | --- | --- | --- | --- | --- |
| 1158 | 2.187 | **взять у нас на складе инсектицидные светильники и повесить их во 2 цехе, где нет** |  | 1.12d | 2026-05-12 09:00 A | 2026-05-13 10:00 A | 100% |  |  |  |  | 3h | 3h |
| 1159 | 2.187.1 | ремонт |  | 2h | 2026-05-12 09:00 A | 2026-05-12 11:00 A | 100% |  |  | start no earlier than 2026-05-12 09:00 | Бундин В | 2h | 2h |
| 1160 | 2.187.2 | монтаж ламп / заполнить в журнал мастера |  | 1h | 2026-05-13 09:00 A | 2026-05-13 10:00 A | 100% |  |  | start no earlier than 2026-05-13 09:00 | Бундин В | 1h | 1h |
| 1161 | 2.188 | герметиком замазать гофру на унитазах (запах) | manual | 1h | 2026-05-07 08:00 A | 2026-05-07 09:00 A | 100% |  |  | start no earlier than 2026-05-07 08:00 | Бобренок В | 1h | 1h |
| 1162 | 2.189 | заменить фильтр на приточку 2 этаж |  | 1h | 2026-05-07 08:00 A | 2026-05-07 10:00 A | 100% |  |  | start no earlier than 2026-05-07 08:00 | Тимофеев В | 1h | 1h |
| 1163 | 2.190 | ревизия перемычек, тен на печи - замена |  | 4h | 2026-05-07 09:00 A | 2026-05-07 13:00 A | 100% |  |  | start no earlier than 2026-05-07 08:00 | Труфанов А | 4h | 4h |
| 1164 | 2.191 | **повесить на места светильники инсектицидные (замена ламп)** |  | 1d? | 2026-05-11 09:00 | 2026-05-11 18:00 | 100% | 2026-05-12 09:00 | 2026-05-12 11:00 |  |  | 2h | 2h |
| 1165 | 2.191.1 | **заказать досели** |  | 0.25d | 2026-05-12 09:00 A | 2026-05-12 11:00 A | 100% |  |  |  |  | 2h | 2h |
| 1166 | 2.191.1.1 | ремонт не рабочих светильников |  | 2h | 2026-05-12 09:00 A | 2026-05-12 11:00 A | 100% |  |  | start no earlier than 2026-05-12 09:00 | Бундин В | 2h | 2h |
| 1167 | 2.192 | уложить кабель в гофре вдоль экструдера в лоток |  | 2h | 2026-05-04 09:00 A | 2026-05-04 11:00 A | 100% |  |  | start no earlier than 2026-05-04 08:00 | Бундин В | 2h | 2h |
| 1168 | 2.193 | **подготовить ТРМ для парогенератора цех 2** |  | 0d | 2026-05-16 09:00 A | 2026-05-16 10:00 A | 100% |  |  |  | Дедов В | 1h | 1h |
| 1169 | 2.193.1 | установить на остановке ТРМ (который сняли отдать Дедову для восстановления) восстановить кнопку | manual | 1h | 2026-05-16 09:00 A | 2026-05-16 10:00 A | 100% |  |  | start no earlier than 2026-05-16 09:00 | Дедов В | 1h | 1h |
| 1170 | 2.194 | повесить светильники 3шт. |  | 1h | 2026-05-04 09:00 A | 2026-05-04 10:00 A | 100% |  |  | start no earlier than 2026-05-04 08:00 | Труфанов А | 1h | 1h |
| 1171 | 2.195 | монтаж свет на фасовке |  | 8h | 2026-05-05 09:00 A | 2026-05-05 18:00 A | 100% |  |  | start no earlier than 2026-05-05 09:00 | Тимофеев В; Труфанов А | 15h | 15h |
| 1172 | 2.196 | заменить кулер в ШУ на жирах |  | 1h | 2026-04-29 08:00 A | 2026-04-29 10:00 A | 100% |  |  | start no earlier than 2026-04-29 08:00 | Дедов В | 1h | 1h |
| 1173 | 2.197 | заменить 3х ходовой кран и фитинги с гайкой на жирах |  | 1h | 2026-04-29 09:00 A | 2026-04-29 10:00 A | 100% |  |  | start no earlier than 2026-04-30 09:00 | Дедов В | 1h | 1h |
| 1174 | 2.198 | закрепить на подножке резинку на штабелере зона экструдера (можно на саморез/клепки) |  | 1h | 2026-04-29 08:00 A | 2026-04-29 10:00 A | 100% |  |  | start no earlier than 2026-04-29 08:00 | Дедов В | 1h | 1h |
| 1175 | 2.199 | **заменить сетку для печи из зип** |  | 0.38d | 2026-05-05 09:00 A | 2026-05-05 12:00 A | 100% |  |  |  |  | 5h | 5h |
| 1176 | 2.199.1 | **заменить сетку , которую сняли с печи** |  | 3h | 2026-05-05 09:00 A | 2026-05-05 12:00 A | 100% |  |  |  | Бундин В | 5h | 5h |
| 1177 | 2.199.1.1 | ремонт сетки |  | 2h | 2026-05-05 09:00 A | 2026-05-05 11:00 A | 100% |  |  | start no earlier than 2026-05-05 09:00 | Бобренок В | 2h | 2h |
| 1178 | 2.200 | под норией сыпит сырье устранить |  | 4h | 2026-04-30 09:00 A | 2026-04-30 13:00 A | 100% |  |  | start no earlier than 2026-04-30 09:00 | Труфанов А; Некрасов А | 8h | 8h |
| 1179 | 2.201 | устранить течь, сброс пара под прекондиционером |  | 1h | 2026-05-01 09:00 A | 2026-05-01 10:00 A | 100% |  |  | start no earlier than 2026-05-01 09:00 | Дедов В | 1h | 1h |
| 1180 | 2.202 | устранить течь редуктор прекондиционера |  | 5h | 2026-04-29 09:00 A | 2026-04-29 15:00 A | 100% |  |  | start no earlier than 2026-04-29 08:00 | Некрасов А; Труфанов А | 10h | 10h |
| 1181 | 2.203 | почистить фильтр на поломоечной машинке |  | 1h | 2026-04-29 09:00 A | 2026-04-29 10:00 A | 100% |  |  | start no earlier than 2026-04-29 09:00 | Тимофеев В | 1h | 1h |
| 1182 | 2.204 | Полное ТО квадропак (чистка тен, смазка штоков пневмоцилиндров, шприцевание подшипников) |  | 3h | 2026-04-28 09:00 A | 2026-04-28 12:00 A | 100% |  |  | start no earlier than 2026-04-28 09:00 | Тимофеев В | 3h | 3h |
| 1183 | 2.205 | Полное ТО бестром (чистка тен, смазка штоков пневмоцилиндров, шприцевание подшипников) |  | 2h | 2026-04-28 09:00 A | 2026-04-28 11:00 A | 100% |  |  | start no earlier than 2026-04-28 09:00 | Тимофеев В | 2h | 2h |
| 1184 | 2.206 | демонтаж инсектютерной ламп на очистку / продуть |  | 1h | 2026-04-27 08:00 A | 2026-04-27 10:00 A | 100% |  |  | start no earlier than 2026-04-27 08:00 | Тимофеев В | 1h | 1h |
| 1185 | 2.207 | ремонт инсектецидных ламп взять у Мастера в каб. (проверить контакты соединения самих лам, дросели). 3 исправно/1 сломан дросель |  | 1h | 2026-04-29 09:00 A | 2026-04-29 10:00 A | 100% |  |  | start no earlier than 2026-04-29 09:00 | Дедов В | 1h | 1h |

| ID | WBS | Task | Type | Duration | Start | Finish | Predecessors | Complete | Actual start | Actual finish | Constraint | Resources | Work | Actual work |
| --- | --- | --- | --- | --- | --- | --- | --- | --- | --- | --- | --- | --- | --- | --- |
| 1186 | 2.208 | **замена дроселя инсекцидной лампы** |  | 17.38d | 2026-04-30 09:00 A | 2026-05-25 12:00 A |  | 100% |  |  |  |  | 84.25h | 84.25h |
| 1187 | 2.208.1 | заявка |  | 15min | 2026-04-30 09:00 A | 2026-04-30 09:15 A |  | 100% |  |  | start no earlier than 2026-04-30 08:00 | Шуранов Ю | 0.25h | 0.25h |
| 1188 | 2.208.2 | замена |  | 3h | 2026-05-25 08:00 A | 2026-05-25 12:00 A |  | 100% |  |  | start no earlier than 2026-05-25 08:00 | Дедов В | 3h | 3h |
| 1189 | 2.208.3 | доставка |  | 10d | 2026-05-04 09:00 A | 2026-05-18 18:00 A | 1187 | 100% |  |  | start no earlier than 2026-05-04 09:00 | Карабанов | 80h | 80h |
| 1190 | 2.208.4 | замена |  | 1h | 2026-05-12 09:00 A | 2026-05-12 10:00 A |  | 100% |  |  | start no earlier than 2026-05-12 09:00 | Бундин В | 1h | 1h |
| 1191 | 2.209 | поликарбанат в зоне седла жировика оторвался, ремонт |  | 1h | 2026-04-30 09:00 A | 2026-04-30 10:00 A |  | 100% |  |  | start no earlier than 2026-04-30 09:00 | Бундин В | 1h | 1h |
| 1192 | 2.210 | зачистить и покрасить решетку на входе в 2 ц. |  | 4h | 2026-04-28 09:00 A | 2026-04-28 13:00 A |  | 100% |  |  | start no earlier than 2026-04-28 09:00 | Дворник | 4h | 4h |
| 1193 | 2.211 | поднять лотки на 10 мм на охладителе со стороны фасовки (видео вышлю) |  | 1h | 2026-04-24 09:00 A | 2026-04-24 10:00 A |  | 100% |  |  | start no earlier than 2026-04-24 08:00 | Бундин В | 1h | 1h |
| 1194 | 2.212 | добавить в систему отопления котла в мойке и в охладителе воды | manual | 2h | 2026-04-24 09:00 A | 2026-04-24 11:00 A |  | 100% |  |  | start no earlier than 2026-04-24 09:00 | Бундин В | 2h | 2h |
| 1195 | 2.213 | на углы установить отбойники выход с зоны экструдера |  | 2h | 2026-04-23 09:00 A | 2026-04-23 11:00 A |  | 100% |  |  | start no earlier than 2026-04-23 08:00 | Бундин В | 2h | 2h |
| 1196 | 2.214 | сделать ТО Бестром (чистка тен и т.д.) |  | 2h | 2026-04-22 08:00 A | 2026-04-22 11:00 A |  | 100% |  |  | start no earlier than 2026-04-22 08:00 | Дедов В | 2h | 2h |
| 1197 | 2.215 | собрать кабинку в мужской раздевалке, она там стоит в коробке |  | 1h | 2026-04-23 09:00 A | 2026-04-23 10:00 A |  | 100% |  |  | start no earlier than 2026-04-23 09:00 | Дедов В | 1h | 1h |
| 1198 | 2.216 | заменить датчик переполнения на загрузке с синего бункера, на складе взять |  | 1h | 2026-04-29 09:00 A | 2026-04-29 10:00 A |  | 100% |  |  | start no earlier than 2026-04-29 09:00 | Дедов В | 1h | 1h |
| 1199 | 2.217 | **включить все исектицидные светильники по цеху, проверить есть ли напряжение в розетках** |  | 0.12d | 2026-04-23 09:00 A | 2026-04-23 10:00 A |  | 100% |  |  |  | Дедов В | 2h | 2h |
| 1200 | 2.217.1 | проверить напряжение в розетке светильника на фасовке |  | 1h | 2026-04-23 09:00 A | 2026-04-23 10:00 A |  | 100% |  |  | start no earlier than 2026-04-23 08:00 | Бундин В | 1h | 1h |
| 1201 | 2.218 | **установить кольцо "вентури" в фильеру** |  | 2.38d? | 2026-05-04 09:00 | 2026-05-06 12:00 |  | 100% | 2026-04-27 09:00 | 2026-09-10 10:00 |  |  | 4.5h | 4.5h |
| 1202 | 2.218.1 | определить диаметр отверстия кольца |  | 1h | 2026-04-27 09:00 A | 2026-04-27 10:00 A |  | 100% |  |  | start no earlier than 2026-04-27 09:00 | Зорькин В | 1h | 1h |
| 1203 | 2.218.2 | заявка на изготовление |  | 1h | 2026-04-28 10:00 A | 2026-04-28 11:00 A | 1202FS+1d | 100% |  |  | start no earlier than 2026-04-20 08:00 | Зорькин В | 1h | 1h |
| 1204 | 2.218.3 | контроль |  | 1h | 2026-05-04 09:00 A | 2026-05-04 10:00 A | 1203FS+1d | 100% |  |  | start no earlier than 2026-05-04 09:00 | Зорькин В | 1h | 1h |
| 1205 | 2.218.4 | заявка на выжечь проставку лдя кольца |  | 30min | 2026-07-15 09:00 A | 2026-07-15 09:30 A |  | 100% |  |  | start no earlier than 2026-07-15 09:00 | Зорькин В | 0.5h | 0.5h |
| 1206 | 2.218.5 | контроль доставки | milestone | 0d | 2026-07-22 09:30 A | 2026-07-22 09:30 A | 1205FS+5d | 100% |  |  | start no earlier than 2026-07-15 09:00 | Зорькин В |  |  |
| 1207 | 2.218.6 | провести тест |  | 1h | 2026-09-10 09:00 A | 2026-09-10 10:00 A |  | 100% |  |  | start no earlier than 2026-09-10 09:00 | Зорькин В | 1h | 1h |
| 1208 | 2.219 | замена фильтр вода подача в накопитель |  | 1h | 2026-04-21 09:00 A | 2026-04-21 10:00 A |  | 100% |  |  | start no earlier than 2026-04-21 09:00 | Тимофеев В | 1h | 1h |
| 1209 | 2.220 | замена потускневших ламп в инсекютере. Мастеру сообщить кол-во. б/у складывать в коробку |  | 2h | 2026-05-04 09:00 A | 2026-05-04 11:00 A |  | 100% |  |  | start no earlier than 2026-05-04 09:00 | Макаревич А | 2h | 2h |

| ID | WBS | Task | Type | Duration | Start | Finish | Predecessors | Complete | Actual start | Actual finish | Constraint | Resources | Work | Actual work |
| --- | --- | --- | --- | --- | --- | --- | --- | --- | --- | --- | --- | --- | --- | --- |
| 1210 | 2.221 | **ограждение палетообмотчика** |  | 19.25d | 2026-04-17 08:00 A | 2026-05-14 11:00 A |  | 100% |  |  |  |  | 190.5h | 190.5h |
| 1211 | 2.221.1 | **подготовка и монтаж рамы** |  | 6.75d | 2026-04-17 08:00 A | 2026-04-27 16:00 A |  | 100% |  |  |  |  | 24h | 24h |
| 1212 | 2.221.1.1 | изготовить ограждения для палетообмотчика (размеры обговорим) |  | 10h | 2026-04-17 08:00 A | 2026-04-20 11:00 A |  | 100% |  |  | start no earlier than 2026-04-17 08:00 | Макаревич А | 10h | 10h |
| 1213 | 2.221.1.2 | очистка, покраска рам ограждения. Быстросохн грунт-эмаль по ржавчине 3в1. |  | 4h | 2026-04-20 08:00 A | 2026-04-20 13:00 A |  | 100% |  |  | start no earlier than 2026-04-20 08:00 | Макаревич А | 4h | 4h |
| 1214 | 2.221.1.3 | монтаж рамы ограждения |  | 4h | 2026-04-27 09:00 A | 2026-04-27 13:00 A | 1213 | 100% |  |  | start no earlier than 2026-04-27 09:00 | Тимофеев В | 4h | 4h |
| 1215 | 2.221.1.4 | приварить пластины под стойки ограждения и закрепить к полу, чтобы оператор был вне зоны опасности) |  | 6h | 2026-04-25 09:00 A | 2026-04-27 16:00 A |  | 100% |  |  | start no earlier than 2026-04-25 09:00 | Макаревич А | 6h | 6h |
| 1216 | 2.221.2 | **обклеить рамы лентой** |  | 17.25d | 2026-04-21 09:00 A | 2026-05-14 11:00 A |  | 100% |  |  |  |  | 82.25h | 82.25h |
| 1217 | 2.221.2.1 | заявка клейка лента сигнальная черно-желтая / негабарит |  | 15min | 2026-04-21 09:00 A | 2026-04-21 09:15 A |  | 100% |  |  | start no earlier than 2026-04-21 09:00 | Зорькин В | 0.25h | 0.25h |
| 1218 | 2.221.2.2 | доставка |  | 10d | 2026-04-21 09:15 A | 2026-05-05 09:15 A | 1217 | 100% |  |  | start no earlier than 2026-04-20 08:00 | Карабанов | 80h | 80h |
| 1219 | 2.221.2.3 | монтаж ленты черно-желтой |  | 2h | 2026-05-14 09:00 A | 2026-05-14 11:00 A | 1218 | 100% |  |  | start no earlier than 2026-05-14 09:00 | Бобренок В | 2h | 2h |
| 1220 | 2.221.3 | **монтаж сетки на раму** |  | 10.03d | 2026-04-21 09:00 A | 2026-05-05 09:15 A |  | 100% |  |  |  |  | 84.25h | 84.25h |
| 1221 | 2.221.3.1 | заявка сетка для ограждения |  | 15min | 2026-04-21 09:00 A | 2026-04-21 09:15 A |  | 100% |  |  | start no earlier than 2026-04-21 09:00 | Зорькин В | 0.25h | 0.25h |
| 1222 | 2.221.3.2 | доставка сетка |  | 10d | 2026-04-21 09:15 A | 2026-05-05 09:15 A | 1221 | 100% |  |  | start no earlier than 2026-04-20 08:00 | Карабанов | 80h | 80h |
| 1223 | 2.221.3.3 | монтаж сетка |  | 4h | 2026-05-04 09:15 A | 2026-05-04 14:15 A | 1222 | 100% |  |  | start no earlier than 2026-04-20 08:00 | Некрасов А | 4h | 4h |
| 1224 | 2.222 | воздухозабоник циклона отпилить и вернуть как было раньше |  | 1h | 2026-04-28 09:00 A | 2026-04-28 10:00 A |  | 100% |  |  | start no earlier than 2026-04-28 09:00 | Тимофеев В | 1h | 1h |
| 1225 | 2.223 | проверка всех гидроаккумуляторов парогенератор, в вент комнате и отопительные |  | 2h | 2026-04-17 09:00 A | 2026-04-17 11:00 A |  | 100% |  |  | start no earlier than 2026-04-17 08:00 |  |  |  |
| 1226 | 2.224 | сборка полетообмотчика на фасовке |  | 1h | 2026-04-16 09:00 A | 2026-04-16 10:00 A |  | 100% |  |  | start no earlier than 2026-04-16 09:00 | Бобренок В | 1h | 1h |
| 1227 | 2.225 | заменить ремень на охладителе |  | 1h | 2026-04-15 09:00 A | 2026-04-15 10:00 A |  | 100% |  |  | start no earlier than 2026-04-15 08:00 | Некрасов А | 1h | 1h |
| 1228 | 2.226 | оторвался контроллер мониторинга на ШУ экструдера |  | 1h | 2026-04-15 09:00 A | 2026-04-15 10:00 A |  | 100% |  |  | start no earlier than 2026-04-15 08:00 | Некрасов А | 1h | 1h |
| 1229 | 2.227 | **сделать горловину на быстросъемах прекондиционер** |  | 3.88d? | 2026-04-16 09:00 | 2026-04-21 17:00 |  | 100% | 2026-08-20 09:00 | 2026-09-14 12:00 |  |  | 23h | 23h |
| 1230 | 2.227.1 | заказать защелки |  | 1d? | 2026-08-31 09:00 A | 2026-08-31 18:00 A |  | 100% |  |  | start no earlier than 2026-08-31 09:00 | Шуранов Ю | 8h | 8h |
| 1231 | 2.227.2 | Удлинить носик, чтоб можно было вешать мешок, куда будет ссыпаться мука |  | 3h | 2026-09-14 09:00 A | 2026-09-14 12:00 A |  | 100% |  |  | start no earlier than 2026-09-14 08:00 | Макаревич А | 3h | 3h |
| 1232 | 2.227.3 | изготовить установить люк для чистки с обр стороны как в 3ц (шапочка) |  | 4h | 2026-09-12 09:00 A | 2026-09-12 13:00 A |  | 100% |  |  | start no earlier than 2026-09-12 09:00 | Макаревич А | 4h | 4h |
| 1233 | 2.227.4 | установка |  | 1d? | 2026-08-20 09:00 A | 2026-08-20 18:00 A |  | 100% |  |  | start no earlier than 2026-09-02 09:00 | Тимофеев В | 8h | 8h |
| 1234 | 2.228 | перенести светильник квадропака (на край мезонина) |  | 2h | 2026-04-13 09:00 A | 2026-04-13 11:00 A |  | 100% |  |  | start no earlier than 2026-04-13 09:00 | Труфанов А | 2h | 2h |
| 1235 | 2.229 | сделать или мусоросборник на лотке выхода экструдера, или обратный лоток в сторону охдадителя (обсудим по телефону) |  | 4h | 2026-08-31 09:00 A | 2026-08-31 13:00 A |  | 100% |  |  | start no earlier than 2026-08-31 09:00 | Макаревич А | 4h | 4h |
| 1236 | 2.230 | слить конденсат с компрессора, продуть радиаторы, чистка фильтров | manual | 2h | 2026-04-12 09:00 A | 2026-04-12 11:00 A |  | 100% |  |  | start no earlier than 2026-04-12 09:00 | Труфанов А | 2h | 2h |
| 1237 | 2.231 | добавить в систему отопления воды (зона экструдера, вход в мойку) | manual | 2h | 2026-04-12 09:00 A | 2026-04-12 11:00 A |  | 100% |  |  | start no earlier than 2026-04-12 09:00 | Труфанов А | 2h | 2h |
| 1238 | 2.232 | починить стул Шелепову (выстучать середину и посадить на хомут) |  | 1h | 2026-04-11 09:00 A | 2026-04-13 10:00 A |  | 100% |  |  | start no earlier than 2026-04-11 09:00 | Труфанов А | 1h | 1h |
| 1239 | 2.233 | не работает вентилятор третий справа, плохой контакт- прикрутить |  | 1h | 2026-04-10 08:00 A | 2026-04-10 10:00 A |  | 100% |  |  | start no earlier than 2026-04-10 08:00 | Бобренок В | 1h | 1h |
| 1240 | 2.234 | взять канистру со склада и сделать подачу снизу, взять сгон с канистры 2 линии (канистру я видел в гидрализатной 1 ц.) |  | 1h | 2026-04-26 09:00 A | 2026-04-27 10:00 A |  | 100% |  |  | start no earlier than 2026-04-26 09:00 | Макаревич А | 1h | 1h |
| 1241 | 2.235 | сделать лоток под канистру рыбий жир - подача в прекондиционер |  | 3h | 2026-04-11 09:00 A | 2026-04-13 12:00 A |  | 100% |  |  | start no earlier than 2026-04-11 09:00 | Макаревич А | 3h | 3h |
| 1242 | 2.236 | перескочила цепь на 2ом ярусе охладителя -поправить |  | 1h | 2026-04-10 08:00 A | 2026-04-10 10:00 A |  | 100% |  |  | start no earlier than 2026-04-10 08:00 | Макаревич А | 1h | 1h |

| ID | WBS | Task | Type | Duration | Start | Finish | Predecessors | Complete | Remaining | Total slack | Constraint | Resources | Work | Actual work |
| --- | --- | --- | --- | --- | --- | --- | --- | --- | --- | --- | --- | --- | --- | --- |
| 1243 | 2.237 | **установка фосунок - подача жира 2 линия** |  | 5d | 2026-04-24 09:00 A | 2026-04-30 18:00 A |  | 100% |  |  |  |  | 8.42h | 8.42h |
| 1244 | 2.237.1 | заявка краны 1/2 |  | 15min | 2026-04-24 09:00 A | 2026-04-24 09:15 A |  | 100% |  |  | start no earlier than 2026-04-24 08:00 | Зорькин В | 0.25h | 0.25h |
| 1245 | 2.237.2 | доставка контроль |  | 10min | 2026-04-30 09:15 A | 2026-04-30 09:25 A | 1244FS+5d | 100% |  |  | start no earlier than 2026-04-24 08:00 | Зорькин В | 0.17h | 0.17h |
| 1246 | 2.237.3 | сборка кронштейн для фильтров + счетчик |  | 4h | 2026-04-30 09:25 A | 2026-04-30 14:25 A | 1245 | 100% |  |  | start no earlier than 2026-04-24 08:00 | Тимофеев В | 4h | 4h |
| 1247 | 2.237.4 | монтаж на линию фильтры + кронштейн + форсунка |  | 4h | 2026-04-30 13:25 A | 2026-04-30 18:00 A | 1246 | 100% |  |  | start no earlier than 2026-04-24 08:00 | Тимофеев В | 4h | 4h |
| 1248 | 2.238 | вывести на синий склад старые цепи от печи зона навесок |  | 2h | 2026-05-22 09:00 A | 2026-05-22 11:00 A |  | 100% |  |  | start no earlier than 2026-04-09 08:00 | Тимофеев В | 2h | 2h |
| 1249 | 2.239 | прикрутить уголок снизу выхода охладителя, забивается кормом (фото скину) |  | 1h | 2026-04-08 09:00 A | 2026-04-08 10:00 A |  | 100% |  |  | start no earlier than 2026-04-08 08:00 | Бундин В | 1h | 1h |
| 1250 | 2.240 | закрыть шибер кондиционера над жировиком |  | 1h | 2026-04-09 09:00 A | 2026-04-09 10:00 A |  | 100% |  |  | start no earlier than 2026-04-09 09:00 | Бобренок В | 1h | 1h |
| 1251 | 2.241 | прикрутить оргстекло в аквариуме где забрасывают навески в смеситель |  | 1h | 2026-04-08 09:00 A | 2026-04-08 10:00 A |  | 100% |  |  | start no earlier than 2026-04-08 09:00 | Бундин В | 1h | 1h |
| 1252 | 2.242 | ревизия двигатель, контакты ножевого узла |  | 1h | 2026-04-09 09:00 A | 2026-04-09 10:00 A |  | 100% |  |  | start no earlier than 2026-04-09 09:00 | Тимофеев В | 1h | 1h |
| 1253 | 2.243 | земена сеток печи |  | 2h | 2026-05-04 09:00 A | 2026-05-04 11:00 A |  | 100% |  |  | start no earlier than 2026-05-04 09:00 | Макаревич А; Некрасов А; Тимофеев В | 4h | 4h |
| 1254 | 2.244 | получить метал-лоток 100х50, закрепить слева от двери выхода с зоны экструдера и уложить все провода | manual | 2h | 2026-04-11 09:00 A | 2026-04-11 11:00 A |  | 100% |  |  |  | Труфанов А | 2h | 2h |
| 1255 | 2.245 | получить аллюминевый скотч- замотать стыки циклона, улитки печек, место рычага шибера улитки | manual | 2h | 2026-04-05 09:00 A | 2026-04-05 11:00 A |  | 100% |  |  | start no earlier than 2026-04-05 09:00 | Труфанов А | 2h | 2h |
| 1256 | 2.246 | **установить водоподготовку на парогенератор** |  | 141d? | 2026-04-08 09:00 A | 2026-10-09 18:00 |  | 3% | 137.19d? | 107.59d |  |  | 17.25h | 0.25h |
| 1257 | 2.246.1 | планирование монтажа |  | 1h | 2026-10-05 09:00 | 2026-10-05 10:00 |  |  |  | 112.47d | start no earlier than 2026-10-05 09:00 | Домоводов К | 1h |  |
| 1258 | 2.246.2 | запрос КП | milestone | 0min | 2026-04-08 09:00 A | 2026-04-08 09:00 A |  | 100% |  |  | start no earlier than 2026-04-08 09:00 | Зорькин В |  |  |
| 1259 | 2.246.3 | решение о покупке | milestone | 0d | 2026-04-08 18:00 A | 2026-04-08 18:00 A | 1258FS+1d | 100% |  |  | start no earlier than 2026-04-03 08:00 | Домоводов К |  |  |
| 1260 | 2.246.4 | контроль поставки |  | 15min | 2026-04-27 09:00 A | 2026-04-27 09:15 A |  | 100% |  |  | start no earlier than 2026-04-27 09:00 | Зорькин В | 0.25h | 0.25h |
| 1261 | 2.246.5 | монтаж (установка) |  | 1d? | 2026-10-09 09:00 | 2026-10-09 18:00 |  |  |  | 107.59d | start no earlier than 2026-10-09 09:00 | Тимофеев В; Некрасов А | 16h |  |
| 1262 | 2.247 | **изготовить сетку перед фильерой экструдера от костей** |  | 11d | 2026-04-17 09:00 A | 2026-05-01 18:00 A |  | 100% |  |  |  |  | 83.25h | 83.25h |
| 1263 | 2.247.1 | составить чертеж |  | 2h | 2026-04-17 09:00 A | 2026-04-17 11:00 A |  | 100% |  |  | start no earlier than 2026-04-17 09:00 | Зорькин В | 2h | 2h |
| 1264 | 2.247.2 | разместить заказ |  | 1h | 2026-04-18 11:00 A | 2026-04-20 10:00 A | 1263FS+1d | 100% |  |  | start no earlier than 2026-04-03 08:00 | Зорькин В | 1h | 1h |
| 1265 | 2.247.3 | изготовление |  | 10d | 2026-04-18 12:00 A | 2026-05-01 18:00 A | 1264 | 100% |  |  | start no earlier than 2026-04-03 08:00 | Подрядчик | 80h | 80h |
| 1266 | 2.247.4 | контроль | milestone | 0d | 2026-04-30 12:00 A | 2026-04-30 12:00 A | 1265 | 100% |  |  | start no earlier than 2026-04-03 08:00 | Зорькин В |  |  |
| 1267 | 2.247.5 | орг забрать |  | 15min | 2026-05-01 12:00 A | 2026-05-01 12:15 A | 1266FS+1d | 100% |  |  | start no earlier than 2026-04-03 08:00 | Зорькин В | 0.25h | 0.25h |

| ID | WBS | Task | Type | Duration | Start | Finish | Predecessors | Complete | Actual start | Actual finish | Constraint | Resources | Work | Actual work |
| --- | --- | --- | --- | --- | --- | --- | --- | --- | --- | --- | --- | --- | --- | --- |
| 1268 | 2.248 | **вешалка для дамских сумочек в тамбур при надевании бахил** |  | 13.25d | 2026-05-04 09:00 | 2026-05-18 11:00 |  | 100% | 2026-04-17 09:00 | 2026-06-15 10:00 |  |  | 82h | 82h |
| 1269 | 2.248.1 | заявка |  | 1h | 2026-04-17 09:00 A | 2026-04-17 10:00 A |  | 100% |  |  | start no earlier than 2026-04-17 09:00 | Зорькин В | 1h | 1h |
| 1270 | 2.248.2 | доставка |  | 10d | 2026-04-17 10:00 A | 2026-05-01 10:00 A | 1269 | 100% |  |  | start no earlier than 2026-04-02 08:00 | Карабанов | 80h | 80h |
| 1271 | 2.248.3 | монтаж |  | 1h | 2026-06-13 09:00 A | 2026-06-15 10:00 A | 1270 | 100% |  |  | start no earlier than 2026-06-13 09:00 | Бобренок В | 1h | 1h |
| 1272 | 2.249 | Врезка фитинга 1/2х12мм в дверку прекондиционера 2 цех (созвон с Зорькиным) |  | 30min | 2026-04-09 09:00 A | 2026-04-09 09:30 A |  | 100% |  |  | start no earlier than 2026-04-09 09:00 | Тимофеев В | 0.5h | 0.5h |
| 1273 | 2.250 | проверить контур управления насосом ПГ |  | 1h | 2026-04-02 09:00 A | 2026-04-02 10:00 A |  | 100% |  |  | start no earlier than 2026-04-02 09:00 | Тимофеев В | 1h | 1h |
| 1274 | 2.251 | замена электродной группы или чистка до металла электродов |  | 1h | 2026-04-16 09:00 A | 2026-04-16 10:00 A |  | 100% |  |  | start no earlier than 2026-04-16 09:00 | Макаревич А | 1h | 1h |
| 1275 | 2.252 | закрепить шкаф управления приточной вентиляцией |  | 30min | 2026-04-01 08:00 A | 2026-04-01 09:30 A |  | 100% |  |  | start no earlier than 2026-04-01 08:00 | Бобренок В | 0.5h | 0.5h |
| 1276 | 2.253 | установить пневмо пистолеты на охладители с длинным носиком (у мастеров) |  | 1h | 2026-04-01 08:00 A | 2026-04-01 10:00 A |  | 100% |  |  | start no earlier than 2026-04-01 08:00 | Бобренок В | 1h | 1h |
| 1277 | 2.254 | утечка группа безопасности котел склад навесок устранить |  | 30min | 2026-03-31 08:00 A | 2026-03-31 09:30 A |  | 100% |  |  | start no earlier than 2026-03-31 08:00 | Бобренок В | 0.5h | 0.5h |
| 1278 | 2.255 | закрепить две трубы подачи воздуха в охладителе, пневмо шланг подачи в улитку крепим к стене |  | 2h | 2026-03-27 09:00 A | 2026-03-27 11:00 A |  | 100% |  |  | start no earlier than 2026-03-27 08:00 | Труфанов А | 2h | 2h |
| 1279 | 2.256 | изготовить 2 лотка 700х400х50 мм из нерж под транспортерную ленту транспортер №1 и №2 |  | 6h | 2026-04-04 09:00 A | 2026-04-06 16:00 A |  | 100% |  |  | start no earlier than 2026-04-04 09:00 | Макаревич А | 6h | 6h |
| 1280 | 2.257 | открутить вилку-розетку возле насоса подачи жиров в экструдер |  | 1h | 2026-04-01 09:00 A | 2026-04-01 10:00 A |  | 100% |  |  | start no earlier than 2026-04-01 09:00 | Бобренок В | 1h | 1h |
| 1281 | 2.258 | прикруть кусок металлопрофиля ,чтобы заделать отверстие куда проходит труба отопления (зона где привозят навески) фото скину | manual | 1h | 2026-03-29 09:00 A | 2026-03-29 10:00 A |  | 100% |  |  | start no earlier than 2026-03-29 09:00 | Бундин В | 1h | 1h |
| 1282 | 2.259 | **замена ленты нория** |  | 4.5d | 2026-03-27 08:00 A | 2026-04-02 13:00 A |  | 100% |  |  |  |  | 39.5h | 39.5h |
| 1283 | 2.259.1 | получить материал весь | manual | 30min | 2026-03-29 09:00 A | 2026-03-29 09:30 A |  | 100% |  |  | start no earlier than 2026-03-29 09:00 | Тимофеев В | 0.5h | 0.5h |
| 1284 | 2.259.2 | подготовка кондуктора |  | 2h | 2026-03-27 08:00 A | 2026-03-27 11:00 A |  | 100% |  |  | start no earlier than 2026-03-27 08:00 | Некрасов А; Тимофеев В | 4h | 4h |
| 1285 | 2.259.3 | подготовить к установке норийную ленту, ковши, болты |  | 15h | 2026-03-28 09:00 A | 2026-03-31 17:00 A |  | 100% |  |  | start no earlier than 2026-03-28 09:00 | Дедов В | 15h | 15h |
| 1286 | 2.259.4 | подготовка крепления лебедки для затягивания ленты |  | 4h | 2026-03-31 09:00 A | 2026-03-31 13:00 A |  | 100% |  |  | start no earlier than 2026-03-31 09:00 | Труфанов А; Некрасов А | 8h | 8h |
| 1287 | 2.259.5 | замена ленты |  | 4h | 2026-04-02 09:00 A | 2026-04-02 13:00 A |  | 100% |  |  | start no earlier than 2026-04-02 09:00 | Некрасов А; Макаревич А; Тимофеев В | 12h | 12h |
| 1288 | 2.260 | закрепить гофру на трос -рефрежераторы на территории |  | 1h | 2026-03-27 09:00 A | 2026-03-27 10:00 A |  | 100% |  |  | start no earlier than 2026-03-27 09:00 | Некрасов А | 1h | 1h |
| 1289 | 2.261 | монтаж розетки до канистры с жиром для подачи в экструдер (подключение весов) |  | 2h | 2026-03-26 09:00 A | 2026-03-26 11:00 A |  | 100% |  |  | start no earlier than 2026-03-26 09:00 | Дедов В | 2h | 2h |
| 1290 | 2.262 | заделать щели / маршпуты крыс . Зона хранения навесок (закрутить профлист и запенить отверстие под трубу) |  | 1h | 2026-03-26 09:00 A | 2026-03-26 10:00 A |  | 100% |  |  | start no earlier than 2026-03-26 09:00 | Некрасов А | 1h | 1h |
| 1291 | 2.263 | оперативная замена шнеков |  | 6h | 2026-03-23 09:00 A | 2026-03-23 16:00 A |  | 100% |  |  | start no earlier than 2026-03-23 09:00 | Бобренок В; Бундин В | 12h | 12h |
| 1292 | 2.264 | выдать шланг для продувки бестрома |  | 1h | 2026-03-23 09:00 A | 2026-03-23 10:00 A |  | 100% |  |  | start no earlier than 2026-03-23 09:00 | Бундин В | 1h | 1h |
| 1293 | 2.265 | приварить уголок на лотке в охладитель (фото скину) |  | 2h | 2026-03-24 09:00 A | 2026-03-24 11:00 A |  | 100% |  |  | start no earlier than 2026-03-24 09:00 | Бобренок В | 2h | 2h |
| 1294 | 2.266 | на транспортере с охладителя отрезать концы саморезов на оргстекле (зарапают руки) |  | 1h | 2026-03-23 09:00 A | 2026-03-23 10:00 A |  | 100% |  |  | start no earlier than 2026-03-23 08:00 | Бундин В | 1h | 1h |
| 1295 | 2.267 | насосная станция включить и проверить на кз (выбивало автомат) |  | 2h | 2026-03-31 09:00 A | 2026-03-31 11:00 A |  | 100% |  |  | start no earlier than 2026-03-31 09:00 | Тимофеев В | 2h | 2h |
| 1296 | 2.268 | закрепить трубу РР к стене в районе хранения кубов гидролизат |  | 1h | 2026-03-26 09:00 A | 2026-03-26 10:00 A |  | 100% |  |  | start no earlier than 2026-03-26 09:00 | Тимофеев В | 1h | 1h |
| 1297 | 2.269 | настройка продувка ПГ ч/з 30 мин |  | 30min | 2026-04-02 09:00 A | 2026-04-02 09:30 A |  | 100% |  |  | start no earlier than 2026-04-02 09:00 | Шуранов Ю | 0.5h | 0.5h |
| 1298 | 2.270 | на красном смесителе закусывает ручку шибера - разобраться |  | 2h | 2026-03-26 09:00 A | 2026-03-26 11:00 A |  | 100% |  |  | start no earlier than 2026-03-26 09:00 | Тимофеев В | 2h | 2h |
| 1299 | 2.271 | посмотреть эл. магнит на двери вход ц.2 |  | 1h | 2026-03-27 09:00 A | 2026-03-27 10:00 A |  | 100% |  |  | start no earlier than 2026-03-27 09:00 | Тимофеев В | 1h | 1h |
| 1300 | 2.272 | ящик возле нашего кабинета- прибить или прикрутить дно |  | 1h | 2026-03-22 09:00 A | 2026-03-23 10:00 A |  | 100% |  |  | start no earlier than 2026-03-22 09:00 | Бобренок В | 1h | 1h |
| 1301 | 2.273 | слить конденсат, почистить фильтры и продуть радиаторы |  | 1h | 2026-03-21 09:00 A | 2026-03-23 10:00 A |  | 100% |  |  | start no earlier than 2026-03-21 09:00 | Дедов В | 1h | 1h |
| 1302 | 2.274 | забрать кресло Сапелина на ремонт в слесарку с каб. Шелепова |  | 2h | 2026-03-23 09:00 A | 2026-03-23 11:00 A |  | 100% |  |  | start no earlier than 2026-03-23 09:00 | Тимофеев В | 2h | 2h |
| 1303 | 2.275 | закрепить кабель в гофре на клипсы от розетки слева от ворот жировика |  | 1h | 2026-03-26 09:00 A | 2026-03-26 10:00 A |  | 100% |  |  | start no earlier than 2026-03-26 09:00 | Труфанов А | 1h | 1h |
| 1304 | 2.276 | уложить выше подиума и красиво закрепить на клипсы кабель в гофре от ворот справа (фото вышлю) |  | 1h | 2026-04-16 09:00 A | 2026-04-16 10:00 A |  | 100% |  |  | start no earlier than 2026-04-10 09:00 | Тимофеев В | 1h | 1h |
| 1305 | 2.277 | монтаж отбойников по периметру |  | 4h | 2026-03-25 09:00 A | 2026-03-25 13:00 A |  | 100% |  |  | start no earlier than 2026-03-25 09:00 | Бундин В | 4h | 4h |
| 1306 | 2.278 | перенос отбойник ГП с стороны эл щита, что бы не входл палет |  | 2h | 2026-03-19 08:00 A | 2026-03-19 11:00 A |  | 100% |  |  | start no earlier than 2026-03-19 08:00 | Бобренок В | 2h | 2h |
| 1307 | 2.279 | установить лист сендвич панель на стену жир/экструдер с стороны мойки |  | 3h | 2026-04-07 09:00 A | 2026-04-07 12:00 A |  | 100% |  |  | start no earlier than 2026-04-07 09:00 | Некрасов А; Труфанов А | 6h | 6h |
| 1308 | 2.280 | подлючить пневмоулитку к воздуху в охладителе |  | 1h | 2026-03-31 09:00 A | 2026-03-31 10:00 A |  | 100% |  |  | start no earlier than 2026-03-31 09:00 | Бобренок В | 1h | 1h |
| 1309 | 2.281 | выдать уплотнение на крышки прекондиционера |  | 30min | 2026-03-19 08:00 A | 2026-03-19 09:30 A |  | 100% |  |  | start no earlier than 2026-03-19 08:00 | Бобренок В | 0.5h | 0.5h |

| ID | WBS | Task | Type | Duration | Start | Finish | Predecessors | Complete | Actual start | Actual finish | Constraint | Resources | Work | Actual work |
| --- | --- | --- | --- | --- | --- | --- | --- | --- | --- | --- | --- | --- | --- | --- |
| 1310 | 2.282 | **ворота фасовка** |  | 0.12d | 2026-03-26 09:00 A | 2026-03-26 10:00 A |  | 100% |  |  |  |  | 1h | 1h |
| 1311 | 2.282.1 | закрепить гофру до розетки слева от ворот и закрыть монтажную коробку |  | 1h | 2026-03-26 09:00 A | 2026-03-26 10:00 A |  | 100% |  |  | start no earlier than 2026-03-26 09:00 | Некрасов А | 1h | 1h |
| 1312 | 2.283 | **забивает лоток прекондиционер/экструдер, передалать** |  | 1.62d | 2026-08-31 09:00 A | 2026-09-01 15:00 A |  | 100% |  |  |  |  | 5h | 5h |
| 1313 | 2.283.1 | изготовить чертежи лекалы для воронки |  | 1h | 2026-08-31 09:00 A | 2026-08-31 10:00 A |  | 100% |  |  | start no earlier than 2026-08-31 09:00 | Шуранов Ю | 1h | 1h |
| 1314 | 2.283.2 | изготовление воронки |  | 4h | 2026-09-01 10:00 A | 2026-09-01 15:00 A | 1313FS+1d | 100% |  |  | start no earlier than 2026-09-01 09:00 | Макаревич А | 4h | 4h |
| 1315 | 2.284 | уложить в лоток пучек управления заслонками, отвязать от батареи |  | 1h | 2026-03-17 08:00 A | 2026-03-17 10:00 A |  | 100% |  |  | start no earlier than 2026-03-17 08:00 | Бобренок В | 1h | 1h |
| 1316 | 2.285 | распред коробка подкл вентилятора которого уже нет (кондиционер №3 жиры) - облогородить |  | 30min | 2026-03-17 08:00 A | 2026-03-17 09:30 A |  | 100% |  |  | start no earlier than 2026-03-17 08:00 | Бобренок В | 0.5h | 0.5h |
| 1317 | 2.286 | удалить лотаки с барана |  | 2h | 2026-03-19 09:00 A | 2026-03-19 11:00 A |  | 100% |  |  | start no earlier than 2026-03-19 08:00 | Труфанов А; Некрасов А | 4h | 4h |
| 1318 | 2.287 | упорядочить проводку регистратора данных - стянуть в пучек |  | 1h | 2026-03-20 09:00 A | 2026-03-20 10:00 A |  | 100% |  |  | start no earlier than 2026-03-20 09:00 | Дедов В | 1h | 1h |
| 1319 | 2.288 | **открыть люк у бестрома / ревизяия / закрыть на герметик** |  | 0.12d | 2026-03-19 09:00 A | 2026-03-19 10:00 A |  | 100% |  |  |  | Труфанов А | 2h | 2h |
| 1320 | 2.288.1 | хим. Лаборатория устранить течь с оборудования |  | 1h | 2026-03-19 09:00 A | 2026-03-19 10:00 A |  | 100% |  |  | start no earlier than 2026-03-19 08:00 | Труфанов А | 1h | 1h |
| 1321 | 2.289 | **изготовить 2 лотка из нерж. в зоне жиров по аналогии с первым цехом под транспортером тип 1 и тип 2** |  | 0.25d | 2026-03-16 09:00 A | 2026-03-16 11:00 A |  | 100% |  |  |  | Макаревич А | 4h | 4h |
| 1322 | 2.289.1 | установить отбойник в зону ХХХ, брать в 5А |  | 2h | 2026-03-16 09:00 A | 2026-03-16 11:00 A |  | 100% |  |  | start no earlier than 2026-03-16 09:00 | Бобренок В | 2h | 2h |
| 1323 | 2.290 | **сточить острый край лотка загрузки в охладитель** |  | 0.12d | 2026-03-15 09:00 A | 2026-03-16 10:00 A |  | 100% |  |  |  | Некрасов А | 3h | 3h |
| 1324 | 2.290.1 | вывезти люльку, вывезти бойлер, провода на жирах спрятать в коробку |  | 1h | 2026-03-15 09:00 A | 2026-03-16 10:00 A |  | 100% |  |  | start no earlier than 2026-03-15 09:00 | Бобренок В | 1h | 1h |
| 1325 | 2.290.2 | бойлер в душе - установить трубку на клапан сброса и смонтировать её по стене до канализ трубы |  | 1h | 2026-03-16 09:00 A | 2026-03-16 10:00 A |  | 100% |  |  | start no earlier than 2026-03-16 09:00 | Макаревич А | 1h | 1h |
| 1326 | 2.291 | облогородить кабельный пучек, сделать аккуратно/закрыить крышкой. Слева от двери экструдер/тамбур под лестницей |  | 6h | 2026-04-09 09:00 A | 2026-04-09 16:00 A |  | 100% |  |  | start no earlier than 2026-04-11 09:00 | Труфанов А | 6h | 6h |
| 1327 | 2.292 | **изготовить сетку после барабана по аналогии с сущ 10мм** |  | 2.5d | 2026-03-12 09:00 A | 2026-03-16 13:00 A |  | 100% |  |  |  | Макаревич А | 25.5h | 25.5h |
| 1328 | 2.292.1 | на лоток загрузки в охладитель - установить доп борт с левой стороны, такой же как с правой (съемный) |  | 4h | 2026-03-15 09:00 A | 2026-03-16 13:00 A |  | 100% |  |  | start no earlier than 2026-03-15 09:00 | Бобренок В | 4h | 4h |
| 1329 | 2.292.2 | квадропак стол подачи пакетов устновить кайки с барашком/приварить. + зафиксировать от бокового смещения |  | 1h | 2026-03-16 09:00 A | 2026-03-16 10:00 A |  | 100% |  |  | start no earlier than 2026-03-16 09:00 | Тимофеев В | 1h | 1h |
| 1330 | 2.292.3 | изменить время разгон/торожение привод барабана |  | 30min | 2026-03-12 09:00 A | 2026-03-12 09:30 A |  | 100% |  |  | start no earlier than 2026-03-13 09:00 | Дедов В | 0.5h | 0.5h |
| 1331 | 2.293 | изготовить кожух на шестерни прекондиционера |  | 6h | 2026-04-03 09:00 A | 2026-04-03 16:00 A |  | 100% |  |  | start no earlier than 2026-04-03 09:00 | Макаревич А | 6h | 6h |
| 1332 | 2.294 | **ремонт датчик давления линия 3** |  | 30.25d | 2026-03-26 09:00 | 2026-04-30 11:00 |  | 100% | 2026-05-14 09:00 | 2026-06-11 12:00 |  |  | 124.75h | 124.75h |
| 1333 | 2.294.1 | заявка переходник G1/4 /M20*1.5 токарю |  | 15min | 2026-05-14 09:00 A | 2026-05-14 09:15 A |  | 100% |  |  | start no earlier than 2026-05-14 09:00 | Зорькин В | 0.25h | 0.25h |
| 1334 | 2.294.2 | контроль изг/орг доставка | milestone | 0d | 2026-05-14 09:15 A | 2026-05-14 09:15 A | 1333 | 100% |  |  | start no earlier than 2026-03-20 08:00 |  |  |  |
| 1335 | 2.294.3 | заказ замена + в ЗИП |  | 15min | 2026-05-14 09:15 A | 2026-05-14 09:30 A | 1334 | 100% |  |  | start no earlier than 2026-03-13 09:00 | Зорькин В | 0.25h | 0.25h |
| 1336 | 2.294.4 | заявка на РВД удлинитель |  | 15min | 2026-05-14 09:30 A | 2026-05-14 09:45 A | 1335 | 100% |  |  | start no earlier than 2026-03-12 08:00 | Зорькин В | 0.25h | 0.25h |
| 1337 | 2.294.5 | доставка |  | 15d | 2026-05-14 09:45 A | 2026-06-04 09:45 A | 1336 | 100% |  |  | start no earlier than 2026-03-12 08:00 | Карабанов | 120h | 120h |
| 1338 | 2.294.6 | монтаж |  | 1h | 2026-06-04 09:00 A | 2026-06-04 10:00 A |  | 100% |  |  | start no earlier than 2026-06-04 09:00 | Тимофеев В | 1h | 1h |
| 1339 | 2.294.7 | датчик давления экструдера проверка подключения |  | 3h | 2026-06-11 09:00 A | 2026-06-11 12:00 A |  | 100% |  |  | start no earlier than 2026-06-11 09:00 | Дедов В | 3h | 3h |

| ID | WBS | Task | Duration | Start | Finish | Predecessors | Complete | Constraint | Resources | Work | Actual work |
| --- | --- | --- | --- | --- | --- | --- | --- | --- | --- | --- | --- |
| 1340 | 2.295 | **установить сирену при отключении автомата ПГ** | 28.12d | 2026-03-13 09:00 A | 2026-04-22 10:00 A |  | 100% |  |  | 81.5h | 81.5h |
| 1341 | 2.295.1 | заявка на реле / сирена | 30min | 2026-03-13 09:00 A | 2026-03-13 09:30 A |  | 100% | start no earlier than 2026-03-13 09:00 | Шуранов Ю | 0.5h | 0.5h |
| 1342 | 2.295.2 | доставка | 10d | 2026-03-13 09:30 A | 2026-03-27 09:30 A | 1341 | 100% | start no earlier than 2026-03-12 08:00 | Карабанов | 80h | 80h |
| 1343 | 2.295.3 | монтаж в схему (проверить почему не срабатывает) | 1h | 2026-04-22 09:00 A | 2026-04-22 10:00 A | 1342 | 100% | start no earlier than 2026-04-22 09:00 | Дедов В | 1h | 1h |
| 1344 | 2.296 | **установить сирену на отключение автоматов в печи** | 16d | 2026-03-11 09:00 A | 2026-04-01 18:00 A |  | 100% |  |  | 44.25h | 44.25h |
| 1345 | 2.296.1 | заявка сирена | 15min | 2026-03-13 09:30 A | 2026-03-13 09:45 A | 1341 | 100% | start no earlier than 2026-03-12 08:00 | Шуранов Ю | 0.25h | 0.25h |
| 1346 | 2.296.2 | доставка | 5d | 2026-03-13 09:45 A | 2026-03-20 09:45 A | 1345 | 100% | start no earlier than 2026-03-12 08:00 | Карабанов | 40h | 40h |
| 1347 | 2.296.3 | монтаж | 2h | 2026-03-19 09:00 A | 2026-03-19 11:00 A | 1346 | 100% | start no earlier than 2026-03-19 09:00 | Дедов В | 2h | 2h |
| 1348 | 2.296.4 | доставка сирены | 10d | 2026-03-19 09:00 A | 2026-04-01 18:00 A |  | 100% | start no earlier than 2026-03-19 08:00 |  |  |  |
| 1349 | 2.296.5 | монтаж сирены | 1h | 2026-03-31 09:00 A | 2026-03-31 10:00 A | 1348 | 100% | start no earlier than 2026-03-31 09:00 | Дедов В | 1h | 1h |
| 1350 | 2.296.6 | настройка доводчика дверь вход в зону экструдера | 1h | 2026-03-11 09:00 A | 2026-03-11 10:00 A |  | 100% | start no earlier than 2026-03-11 09:00 | Макаревич А | 1h | 1h |
| 1351 | 2.297 | **выпадает фильера с матрицы - делать стпор** | 0.5d | 2026-04-27 09:00 A | 2026-04-27 13:00 A |  | 100% |  |  | 4.5h | 4.5h |
| 1352 | 2.297.1 | подготовка сверла / метчика | 30min | 2026-04-27 09:00 A | 2026-04-27 09:30 A |  | 100% | start no earlier than 2026-04-27 09:00 | Шуранов Ю | 0.5h | 0.5h |
| 1353 | 2.297.2 | сверлить и резать резьбу для фикс болта | 4h | 2026-04-27 09:00 A | 2026-04-27 13:00 A |  | 100% | start no earlier than 2026-04-27 09:00 | Подрядчик | 4h | 4h |
| 1354 | 2.298 | **замена поликарбанат на перегородках металопрофилем** | 68.75d | 2026-03-11 09:00 A | 2026-06-15 16:00 A |  | 100% |  |  | 114h | 114h |
| 1355 | 2.298.1 | расчет материал стена охладитель | 1h | 2026-03-19 09:00 A | 2026-03-19 10:00 A |  | 100% | start no earlier than 2026-03-19 09:00 | Шуранов Ю | 1h | 1h |
| 1356 | 2.298.2 | заявка | 1h | 2026-03-19 10:00 A | 2026-03-19 11:00 A | 1355 | 100% | start no earlier than 2026-03-12 08:00 | Шуранов Ю | 1h | 1h |
| 1357 | 2.298.3 | доставка | 10d | 2026-03-19 11:00 A | 2026-04-02 11:00 A | 1356 | 100% | start no earlier than 2026-03-12 08:00 | Карабанов | 80h | 80h |
| 1358 | 2.298.4 | из металлопрофиля 3м. Обшиваем охладитель внутри и снаружи + утеплитель | 5h | 2026-05-29 09:00 A | 2026-05-29 15:00 A |  | 100% | start no earlier than 2026-05-29 09:00 | Некрасов А; Бобренок В | 10h | 10h |
| 1359 | 2.298.5 | продолжить монтаж (со стороны охладителя и со стороны жиров) | 6h | 2026-06-15 09:00 A | 2026-06-15 16:00 A | 1357 | 100% | start no earlier than 2026-06-15 09:00 | Некрасов А; Бундин В | 12h | 12h |
| 1360 | 2.298.6 | замена шланг реле давление и настройка. фильтр приточная офис | 1h | 2026-03-12 09:00 A | 2026-03-12 10:00 A |  | 100% | start no earlier than 2026-03-13 09:00 | Дедов В | 1h | 1h |
| 1361 | 2.298.7 | замена насос гидролизата | 1h | 2026-03-12 08:00 A | 2026-03-12 10:00 A |  | 100% | start no earlier than 2026-03-12 08:00 | Бундин В; Тимофеев В | 2h | 2h |
| 1362 | 2.298.8 | замена подшипник прекондиционер | 1h | 2026-03-12 09:00 A | 2026-03-12 10:00 A |  | 100% | start no earlier than 2026-03-12 08:00 | Бундин В | 1h | 1h |
| 1363 | 2.298.9 | ремонт вал охладитель | 4h | 2026-03-12 09:00 A | 2026-03-12 13:00 A |  | 100% | start no earlier than 2026-03-19 09:00 | Тимофеев В | 4h | 4h |
| 1364 | 2.298.10 | плохо закр дверь на фасовку. заменить личинку двери / выравнить напильником в коробке. | 1h | 2026-03-11 09:00 A | 2026-03-11 10:00 A |  | 100% | start no earlier than 2026-03-11 09:00 | Макаревич А | 1h | 1h |
| 1365 | 2.298.11 | крепить поликарбанат стена печь/жир длинная часть | 1h | 2026-03-11 09:00 A | 2026-03-11 10:00 A |  | 100% | start no earlier than 2026-03-11 09:00 | Макаревич А | 1h | 1h |
| 1366 | 2.299 | сетку на выходе барабана жир закрепить. Устр вспомогактельные крепжи операторам | 1h | 2026-03-19 09:00 A | 2026-03-19 10:00 A |  | 100% | start no earlier than 2026-03-19 09:00 | Тимофеев В | 1h | 1h |

| ID | WBS | Task | Duration | Start | Finish | Predecessors | Complete | Constraint | Resources | Work | Actual work |
| --- | --- | --- | --- | --- | --- | --- | --- | --- | --- | --- | --- |
| 1367 | 2.300 | **установить / снять трубу от ПГ для чистки сетки** | 0.25d | 2026-03-12 09:00 A | 2026-03-12 11:00 A |  | 100% |  | Тимофеев В | 7h | 7h |
| 1368 | 2.300.1 | чистка циклон снаружи от копоти. Средство для чистки выдаст Шелепов К | 2h | 2026-03-12 09:00 A | 2026-03-12 11:00 A |  | 100% | start no earlier than 2026-03-12 09:00 | Тимофеев В; Бундин В | 4h | 4h |
| 1369 | 2.300.2 | замена датчик расхода пара | 1h | 2026-03-12 09:00 A | 2026-03-12 10:00 A |  | 100% | start no earlier than 2026-03-12 09:00 | Некрасов А | 1h | 1h |
| 1370 | 2.301 | **замениь фитинги на жир** | 0.25d | 2026-03-10 09:00 A | 2026-03-10 11:00 A | 683 | 100% |  | Некрасов А | 4h | 4h |
| 1371 | 2.301.1 | замена бойлер в мойке экструдера на бойлер который весит за экструдером | 2h | 2026-03-10 09:00 A | 2026-03-10 11:00 A |  | 100% | start no earlier than 2026-03-10 09:00 | Дедов В | 2h | 2h |
| 1372 | 2.302 | **переключить освещение на автолномный выключатель, запитанный от системы освещения, а не от оборудования.** | 15.38d | 2026-03-05 09:00 A | 2026-03-26 12:00 A |  | 100% |  |  | 13h | 13h |
| 1373 | 2.302.1 | ножевой узел | 1.5h | 2026-03-26 09:00 A | 2026-03-26 10:30 A |  | 100% | start no earlier than 2026-03-26 09:00 | Дедов В; Некрасов А | 3h | 3h |
| 1374 | 2.302.2 | бестром | 1.5h | 2026-03-26 09:00 A | 2026-03-26 10:30 A |  | 100% | start no earlier than 2026-03-26 09:00 | Некрасов А; Дедов В | 3h | 3h |
| 1375 | 2.302.3 | выход с охладителя | 1.5h | 2026-03-26 10:30 A | 2026-03-26 12:00 A | 1373 | 100% | start no earlier than 2026-03-26 09:00 | Дедов В; Некрасов А | 3h | 3h |
| 1376 | 2.302.4 | переключить норию квадропака стационрно, без розетки | 2h | 2026-03-05 09:00 A | 2026-03-05 11:00 A |  | 100% | start no earlier than 2026-03-05 09:00 | Дедов В | 2h | 2h |
| 1377 | 2.302.5 | перемонтаж провода заземления нории квадропак эстетично и удобно для прохода и уборщицы | 2h | 2026-03-05 09:00 A | 2026-03-05 11:00 A |  | 100% | start no earlier than 2026-03-05 09:00 | Дедов В | 2h | 2h |
| 1378 | 2.303 | **сетки на дно печи в зип изготовить** | 10.5d | 2026-03-10 09:00 A | 2026-03-24 13:00 A |  | 100% |  |  | 85h | 85h |
| 1379 | 2.303.1 | заявка сетка уголки | 1h | 2026-03-10 09:00 A | 2026-03-10 10:00 A |  | 100% | start no earlier than 2026-03-10 09:00 | Шуранов Ю | 1h | 1h |
| 1380 | 2.303.2 | доставка | 10d | 2026-03-10 10:00 A | 2026-03-24 10:00 A | 1379 | 100% | start no earlier than 2026-03-06 08:00 | Карабанов | 80h | 80h |
| 1381 | 2.303.3 | изготовление | 4h | 2026-03-24 09:00 A | 2026-03-24 13:00 A | 1380 | 100% | start no earlier than 2026-03-24 09:00 | Тимофеев В | 4h | 4h |
| 1382 | 2.304 | закрепить лоток для совка с спиртом. Изготовить усилит косынку | 2h | 2026-03-07 09:00 A | 2026-03-09 11:00 A |  | 100% | start no earlier than 2026-03-07 09:00 | Бундин В | 2h | 2h |
| 1383 | 2.305 | **установить монтажную коробку квадропак. Инструктаж Шуранов по тлф** | 0.12d | 2026-03-06 08:00 A | 2026-03-06 10:00 A |  | 100% |  | Бундин В | 2h | 2h |
| 1384 | 2.305.1 | Не уходит вода в душевой кабине, посмотреть, устранить. | 1h | 2026-03-06 08:00 A | 2026-03-06 10:00 A |  | 100% | start no earlier than 2026-03-06 08:00 | Бобренок В | 1h | 1h |
| 1385 | 2.306 | ревизия вентиляторов охладителя, не закрываются крышки | 30min | 2026-03-05 09:00 A | 2026-03-05 09:30 A |  | 100% | start no earlier than 2026-03-05 09:00 | Тимофеев В | 0.5h | 0.5h |
| 1386 | 2.307 | **Квадропак** | 0.38d | 2026-03-05 09:00 A | 2026-03-05 12:00 A |  | 100% |  |  | 3h | 3h |
| 1387 | 2.307.1 | Уложить красиво провода на лестнице квадропака цех 2 (созвон с Шурановым) | 3h | 2026-03-05 09:00 A | 2026-03-05 12:00 A |  | 100% | start no earlier than 2026-03-05 09:00 | Дедов В | 3h | 3h |
| 1388 | 2.308 | **Сброс ошибо Н4 и Е9 на кондиционерах** | 0.08d | 2026-03-04 09:00 A | 2026-03-04 09:40 A |  | 100% |  |  | 0.67h | 0.67h |
| 1389 | 2.308.1 | Договориться с оплотом по решению | 30min | 2026-03-04 09:00 A | 2026-03-04 09:30 A |  | 100% | start no earlier than 2026-03-04 09:00 | Зорькин В | 0.5h | 0.5h |
| 1390 | 2.308.2 | устранить ошибки | 10min | 2026-03-04 09:30 A | 2026-03-04 09:40 A | 1389 | 100% | start no earlier than 2026-03-03 08:00 | Зорькин В | 0.17h | 0.17h |
| 1391 | 2.309 | закреить поликарбанат по периметру | 4h | 2026-03-08 09:00 A | 2026-03-09 13:00 A |  | 100% | start no earlier than 2026-03-08 09:00 | Макаревич А | 4h | 4h |
| 1392 | 2.310 | смазать ручки и шарниры дверей | 1h | 2026-03-08 09:00 A | 2026-03-09 10:00 A |  | 100% | start no earlier than 2026-03-08 09:00 | Макаревич А | 1h | 1h |

| ID | WBS | Task | Duration | Start | Finish | Predecessors | Complete | Constraint | Resources | Work | Actual work |
| --- | --- | --- | --- | --- | --- | --- | --- | --- | --- | --- | --- |
| 1393 | 2.311 | **сделать ровным порог вход в мойку экструдера** | 23.5d | 2026-03-03 09:00 A | 2026-04-03 13:00 A |  | 100% |  |  | 86.25h | 86.25h |
| 1394 | 2.311.1 | Показать Олегу порог | 30min | 2026-03-03 09:00 A | 2026-03-03 09:30 A |  | 100% | start no earlier than 2026-03-03 08:00 | Зорькин В; Олег лукас | 1h | 1h |
| 1395 | 2.311.2 | составить план ремонта | 15min | 2026-03-03 09:00 A | 2026-03-03 09:15 A |  | 100% | start no earlier than 2026-03-03 09:00 | Зорькин В; Некрасов А; Труфанов А | 0.75h | 0.75h |
| 1396 | 2.311.3 | составить заявку на материал | 30min | 2026-03-04 09:00 A | 2026-03-04 09:30 A | 1395 | 100% | start no earlier than 2026-03-04 09:00 | Зорькин В | 0.5h | 0.5h |
| 1397 | 2.311.4 | доставка | 10d | 2026-03-04 09:30 A | 2026-03-18 09:30 A | 1396 | 100% | start no earlier than 2026-03-03 08:00 | Карабанов | 80h | 80h |
| 1398 | 2.311.5 | реализация | 4h | 2026-04-03 09:00 A | 2026-04-03 13:00 A | 1397 | 100% | start no earlier than 2026-04-03 09:00 | Олег | 4h | 4h |
| 1399 | 2.312 | востановить профлист. Проход навески экструдер. Обрезками с 3ц, цвет любой | 5h | 2026-03-08 09:00 A | 2026-03-09 15:00 A |  | 100% | start no earlier than 2026-03-08 09:00 | Макаревич А | 5h | 5h |
| 1400 | 2.313 | установить отбойники в проход и углы проезд навесок. Барть с 5а | 4h | 2026-03-09 09:00 A | 2026-03-09 13:00 A |  | 100% | start no earlier than 2026-03-09 09:00 | Макаревич А | 4h | 4h |
| 1401 | 2.314 | **установить отбойники в углы проезд навесок** | 24.25d | 2026-03-13 09:00 A | 2026-04-16 11:00 A |  | 100% |  |  | 82.17h | 82.17h |
| 1402 | 2.314.1 | заявка 2 отбойника | 10min | 2026-03-13 09:00 A | 2026-03-13 09:10 A |  | 100% | start no earlier than 2026-03-13 09:00 | Зорькин В | 0.17h | 0.17h |
| 1403 | 2.314.2 | доставка | 10d | 2026-03-13 09:10 A | 2026-03-27 09:10 A | 1402 | 100% | start no earlier than 2026-03-12 08:00 | Карабанов | 80h | 80h |
| 1404 | 2.314.3 | монтаж | 2h | 2026-04-16 09:00 A | 2026-04-16 11:00 A | 1403 | 100% | start no earlier than 2026-04-16 09:00 | Бундин В | 2h | 2h |
| 1405 | 2.315 | **наростить ножки на бестроме бункер, вместо деревянной** | 3.38d | 2026-03-05 09:00 A | 2026-03-10 12:00 A |  | 100% |  | Макаревич А | 39h | 39h |
| 1406 | 2.315.1 | **мойка** | 0.38d | 2026-03-05 09:00 A | 2026-03-05 12:00 A |  | 100% |  |  | 6h | 6h |
| 1407 | 2.315.1.1 | ревизия вытяжка принудительная из печи (нерж вентилятор), очистка | 3h | 2026-03-05 09:00 A | 2026-03-05 12:00 A |  | 100% | start no earlier than 2026-03-05 09:00 | Некрасов А; Труфанов А | 6h | 6h |
| 1408 | 2.315.2 | ремонт колесо штабелер/замена подшипник | 3h | 2026-03-10 09:00 A | 2026-03-10 12:00 A |  | 100% | start no earlier than 2026-03-10 09:00 | Тимофеев В; Дедов В | 6h | 6h |
| 1409 | 2.316 | **увеличить освещение в зоне квадропака** | 41.88d | 2026-03-02 09:00 A | 2026-04-28 17:00 A |  | 100% |  |  | 101h | 101h |
| 1410 | 2.316.1 | составить список мматериал для монтажа | 30min | 2026-03-02 09:00 A | 2026-03-02 09:30 A |  | 100% | start no earlier than 2026-03-02 09:00 | Труфанов А; Некрасов А; Зорькин В | 1.5h | 1.5h |
| 1411 | 2.316.2 | заявка светильники | 30min | 2026-03-02 09:30 A | 2026-03-02 10:00 A | 1410 | 100% | start no earlier than 2026-02-27 08:00 | Зорькин В | 0.5h | 0.5h |
| 1412 | 2.316.3 | доставка | 10d | 2026-03-02 10:00 A | 2026-03-16 10:00 A | 1411 | 100% | start no earlier than 2026-02-27 08:00 | Карабанов | 80h | 80h |
| 1413 | 2.316.4 | монтаж светильников зона фасовки 8 светильников, операторы помогут | 15h | 2026-04-25 09:00 A | 2026-04-28 17:00 A |  | 100% | start no earlier than 2026-04-25 09:00 | Бобренок В | 15h | 15h |
| 1414 | 2.316.5 | монтаж светильников зона квадропак 1шт - перевесить светильник | 1h | 2026-04-16 09:00 A | 2026-04-16 10:00 A |  | 100% | start no earlier than 2026-04-16 09:00 | Тимофеев В | 1h | 1h |
| 1415 | 2.316.6 | монтаж | 2h | 2026-03-06 09:00 A | 2026-03-06 11:00 A |  | 100% | start no earlier than 2026-03-06 09:00 | Бобренок В | 2h | 2h |
| 1416 | 2.316.7 | **замена сетка печи на мелкую** | 0.12d | 2026-03-02 09:00 A | 2026-03-02 10:00 A |  | 100% |  |  | 1h | 1h |
| 1417 | 2.316.7.1 | согласовать спецификацию / оплата счет | 1h | 2026-03-02 09:00 A | 2026-03-02 10:00 A |  | 100% | start no earlier than 2026-03-02 09:00 | Домоводов К | 1h | 1h |

| ID | WBS | Task | Duration | Start | Finish | Predecessors | Complete | Remaining | Total slack | Free slack | Constraint | Resources | Work | Actual work |
| --- | --- | --- | --- | --- | --- | --- | --- | --- | --- | --- | --- | --- | --- | --- |
| 1418 | 2.317 | **монтаж дозации жира в экструдер** | 34.25d? | 2026-02-27 09:00 A | 2026-04-16 11:00 |  | 38% | 21.26d? | 242.34d |  |  |  | 25h | 15h |
| 1419 | 2.317.1 | монтаж частотного привода | 2h | 2026-02-27 09:00 A | 2026-02-27 11:00 A |  | 100% |  |  |  | start no earlier than 2026-02-27 09:00 | Тимофеев В | 2h | 2h |
| 1420 | 2.317.2 | монтаж трассы гидравлической | 2h | 2026-03-02 09:00 A | 2026-03-02 11:00 A | 1419 | 100% |  |  |  | start no earlier than 2026-03-02 09:00 | Тимофеев В | 2h | 2h |
| 1421 | 2.317.3 | сборка канистры с фитингом | 1h | 2026-03-02 11:00 A | 2026-03-02 12:00 A | 1420 | 100% |  |  |  | start no earlier than 2026-02-26 08:00 | Тимофеев В | 1h | 1h |
| 1422 | 2.317.4 | калибровка на нужный расход | 1h | 2026-03-03 09:00 A | 2026-03-03 10:00 A |  | 100% |  |  |  | start no earlier than 2026-03-03 09:00 | Зорькин В; Тимофеев В | 2h | 2h |
| 1423 | 2.317.5 | испытание | 1h | 2026-03-04 09:00 A | 2026-03-04 10:00 A |  | 100% |  |  |  | start no earlier than 2026-03-04 09:00 | Зорькин В | 1h | 1h |
| 1424 | 2.317.6 | подключить управление насосом синхронно с запуском ножей экструдера. Проложить кабель, изучить параметары, передать по смене что подключать | 4h | 2026-03-04 09:00 | 2026-03-04 13:00 |  |  |  | 273.09d |  | start no earlier than 2026-03-04 09:00 | Дедов В | 4h |  |
| 1425 | 2.317.7 | подключить кабель/ неастроить параметры, что передаст Дедов | 1h | 2026-03-05 09:00 | 2026-03-05 10:00 |  |  |  | 272.47d |  | start no earlier than 2026-03-05 09:00 | Труфанов А | 1h |  |
| 1426 | 2.317.8 | поставка контрллра | 1d? | 2026-03-11 09:00 | 2026-03-11 18:00 |  |  |  | 267.34d | 25d | start no earlier than 2026-03-11 09:00 |  |  |  |
| 1427 | 2.317.9 | подключить контрллера расходомер | 2h | 2026-04-16 09:00 | 2026-04-16 11:00 | 1426 |  |  | 242.34d |  | start no earlier than 2026-04-16 09:00 | Тимофеев В | 2h |  |
| 1428 | 2.317.10 | Прокинуть интерфейсный кабель от черной коробочки до нового частотника на синем бункере (проложить так чтоб ни где ничего не торчало) | 3h | 2026-03-05 09:00 | 2026-03-05 12:00 |  |  |  | 272.22d |  | start no earlier than 2026-03-05 08:00 | Дедов В | 3h |  |
| 1429 | 2.317.11 | сделать регулировку угла наклона приемная воронка конв в охладитель после жира | 3h | 2026-03-05 09:00 A | 2026-03-05 12:00 A |  | 100% |  |  |  | start no earlier than 2026-03-05 09:00 | Некрасов А; Труфанов А | 6h | 6h |
| 1430 | 2.317.12 | сборка и монтаж полка для дез раствора на охладитель | 1h | 2026-03-02 09:00 A | 2026-03-02 10:00 A |  | 100% |  |  |  | start no earlier than 2026-03-02 09:00 | Тимофеев В | 1h | 1h |
| 1431 | 2.318 | **настройка блокировок отключения котла, если отключена приточка** | 130.25d | 2026-03-03 09:00 A | 2026-09-01 11:00 |  | 7% | 120.93d | 144.34d |  |  |  | 86.17h | 6.17h |
| 1432 | 2.318.1 | внести в схему котла блокировку либо от трм 33 либо от частотника | 4h | 2026-03-03 09:00 A | 2026-03-03 13:00 A |  | 100% |  |  |  | start no earlier than 2026-03-03 09:00 | Дедов В | 4h | 4h |
| 1433 | 2.318.2 | Заявка на реле протока воды | 10min | 2026-03-10 09:00 A | 2026-03-10 09:10 A |  | 100% |  |  |  | start no earlier than 2026-03-10 09:00 | Зорькин В | 0.17h | 0.17h |
| 1434 | 2.318.3 | Доставка | 10d | 2026-03-10 09:10 | 2026-03-24 09:10 | 1433 |  |  | 259.57d |  | start no earlier than 2026-03-02 09:00 | Карабанов | 80h |  |
| 1435 | 2.318.4 | Замена | 2h | 2026-09-01 09:00 A | 2026-09-01 11:00 A | 1434 | 100% |  |  |  | start no earlier than 2026-09-01 09:00 | Дедов В | 2h | 2h |
| 1436 | 2.319 | Запрет работы вентилятора если низкая температура калорифера | 2h | 2026-03-12 09:00 A | 2026-03-12 11:00 A |  | 100% |  |  |  | start no earlier than 2026-03-12 09:00 | Дедов В | 2h | 2h |
| 1437 | 2.320 | **установить на охладитель ролики + скольжение трубы** | 33d? | 2026-09-01 09:00 | 2026-10-05 18:00 |  |  |  | 111.59d |  |  |  | 10h |  |
| 1438 | 2.320.1 | печать кронштейнов | 2h | 2026-09-01 09:00 | 2026-09-01 11:00 |  |  |  | 144.34d |  | start no earlier than 2026-09-01 09:00 | Домоводов К | 2h |  |
| 1439 | 2.320.2 | установить держатели труб | 1d? | 2026-10-05 09:00 | 2026-10-05 18:00 |  |  |  | 111.59d |  | start no earlier than 2026-10-05 09:00 | Тимофеев В | 8h |  |
| 1440 | 2.321 | **установить паровопровод для очистки сетки печи на мойке парогенератором** | 8.75d | 2026-03-02 09:00 A | 2026-03-12 16:00 A |  | 100% |  |  |  |  |  | 18.5h | 18.5h |
| 1441 | 2.321.1 | проверка фитингов | 30min | 2026-03-02 09:00 A | 2026-03-02 09:30 A |  | 100% |  |  |  | start no earlier than 2026-03-02 09:00 | Зорькин В | 0.5h | 0.5h |
| 1442 | 2.321.2 | монтаж | 2h | 2026-03-05 09:00 A | 2026-03-05 11:00 A | 1441 | 100% |  |  |  | start no earlier than 2026-03-05 09:00 | Тимофеев В | 2h | 2h |

| ID | WBS | Task | Type | Duration | Start | Finish | Predecessors | Complete | Total slack | Free slack | Constraint | Resources | Work | Actual work |
| --- | --- | --- | --- | --- | --- | --- | --- | --- | --- | --- | --- | --- | --- | --- |
| 1443 | 2.321.3 | **лоток с транспортера в барабан. Большой** |  | 2.75d | 2026-03-10 09:00 A | 2026-03-12 16:00 A |  | 100% |  |  |  |  | 16h | 16h |
| 1444 | 2.321.3.1 | изготовить из листа лоток. Заготовку 612*965 с пропилами для сгиба по чертежу |  | 4h | 2026-03-10 09:00 A | 2026-03-10 13:00 A |  | 100% |  |  | start no earlier than 2026-03-10 09:00 | Макаревич А | 4h | 4h |
| 1445 | 2.321.3.2 | подготовить раму крепежа |  | 4h | 2026-03-12 09:00 A | 2026-03-12 13:00 A | 1444 | 100% |  |  | start no earlier than 2026-03-12 09:00 | Некрасов А; Труфанов А | 8h | 8h |
| 1446 | 2.321.3.3 | монтаж |  | 2h | 2026-03-12 14:00 A | 2026-03-12 16:00 A | 1445 | 100% |  |  | start no earlier than 2026-02-27 08:00 | Некрасов А; Труфанов А | 4h | 4h |
| 1447 | 2.322 | **установка ворот шлюз в проходе вент камеры** |  | 119d? | 2026-02-24 09:00 A | 2026-08-09 13:00 A |  | 100% |  |  |  |  | 163.5h | 163.5h |
| 1448 | 2.322.1 | изготовить и установить шпингалеты |  | 4h | 2026-02-27 09:00 A | 2026-02-27 13:00 A |  | 100% |  |  | start no earlier than 2026-02-27 09:00 | Некрасов А; Бобренок В | 8h | 8h |
| 1449 | 2.322.2 | установка петель, транспортировка, монтаж |  | 1d? | 2026-02-24 09:00 A | 2026-02-24 18:00 A |  | 100% |  |  | start no earlier than 2026-02-24 09:00 | Труфанов А; Некрасов А | 16h | 16h |
| 1450 | 2.322.3 | установить полосу притвора |  | 3h | 2026-02-27 09:00 A | 2026-02-27 12:00 A |  | 100% |  |  | start no earlier than 2026-02-28 09:00 | Бобренок В | 3h | 3h |
| 1451 | 2.322.4 | установить силиконовые уплотнители на пол |  | 2h | 2026-02-26 09:00 A | 2026-02-26 11:00 A |  | 100% |  |  | start no earlier than 2026-02-26 08:00 | Некрасов А | 2h | 2h |
| 1452 | 2.322.5 | заявка доводчики, шпингалеты |  | 30min | 2026-03-02 09:00 A | 2026-03-02 09:30 A |  | 100% |  |  | start no earlier than 2026-03-02 09:00 | Зорькин В | 0.5h | 0.5h |
| 1453 | 2.322.6 | доставка |  | 10d | 2026-03-02 09:30 A | 2026-03-16 09:30 A | 1452 | 100% |  |  | start no earlier than 2026-02-27 08:00 | Карабанов | 80h | 80h |
| 1454 | 2.322.7 | монтаж шпингалетов |  | 2h | 2026-03-25 09:00 A | 2026-03-25 11:00 A | 1453 | 100% |  |  | start no earlier than 2026-03-25 09:00 | Бобренок В | 2h | 2h |
| 1455 | 2.322.8 | **установить концевики блокировки открывания роль ворот, если не закрыты шлюз** |  | 109d | 2026-03-10 09:00 A | 2026-08-09 13:00 A |  | 100% |  |  |  |  | 52h | 52h |
| 1456 | 2.322.8.1 | **установить доводчики на ворота в зоне навесок** |  | 0.25d | 2026-06-14 09:00 A | 2026-06-15 11:00 A |  | 100% |  |  |  |  | 2h | 2h |
| 1457 | 2.322.8.1.1 | пробурить для задвижек ворот в полу отверстия -фиксация для проезда штабелера |  | 2h | 2026-06-14 09:00 A | 2026-06-15 11:00 A |  | 100% |  |  | start no earlier than 2026-06-14 09:00 | Бобренок В | 2h | 2h |
| 1458 | 2.322.8.2 | составить список материалов |  | 30min | 2026-03-10 09:00 A | 2026-03-10 09:30 A |  | 100% |  |  | start no earlier than 2026-03-10 09:00 | Дедов В | 0.5h | 0.5h |
| 1459 | 2.322.8.3 | заявка |  | 30min | 2026-03-10 09:30 A | 2026-03-10 10:00 A | 1458 | 100% |  |  | start no earlier than 2026-03-03 09:00 | Зорькин В | 0.5h | 0.5h |
| 1460 | 2.322.8.4 | доставка |  | 5d | 2026-03-10 10:00 A | 2026-03-17 10:00 A | 1459 | 100% |  |  | start no earlier than 2026-02-27 08:00 | Карабанов | 40h | 40h |
| 1461 | 2.322.8.5 | монтаж датчиков на двери / доводчиков. | manual | 4h | 2026-08-09 09:00 A | 2026-08-09 13:00 A | 1460 | 100% |  |  | start no earlier than 2026-08-09 09:00 | Бундин В | 4h | 4h |
| 1462 | 2.322.8.6 | монтаж кабеля от датчиков до блока рольворот, не подключать | manual | 4h | 2026-08-09 09:00 A | 2026-08-09 13:00 A | 1461 | 100% |  |  | start no earlier than 2026-08-09 09:00 | Бундин В | 4h | 4h |
| 1463 | 2.322.8.7 | установить концевики на ворота - установить закладные под них | manual | 1h | 2026-08-08 09:00 A | 2026-08-08 10:00 A |  | 100% |  |  | start no earlier than 2026-08-08 09:00 | Бундин В | 1h | 1h |
| 1464 | 2.323 | **схема блокировки роль ворот при открытым шлюзе + авт закрытие + датчик препятствия** |  | 35.5d | 2026-09-09 09:00 | 2026-10-19 13:00 |  |  | 102.09d |  |  |  | 8h |  |
| 1465 | 2.323.1 | разработка схемы |  | 4h | 2026-09-09 09:00 | 2026-09-09 13:00 |  |  | 135.59d | 33.5d | start no earlier than 2026-09-09 09:00 | Домоводов К | 4h |  |
| 1466 | 2.323.2 | монтаж |  | 4h | 2026-10-19 09:00 | 2026-10-19 13:00 | 1465FS+1d |  | 102.09d |  | start no earlier than 2026-10-19 09:00 | Труфанов А | 4h |  |
| 1467 | 2.324 | ремонт нижних сеток печи просева гранулы |  | 4h | 2025-01-23 09:00 A | 2025-01-23 13:00 A |  | 100% |  |  | start no earlier than 2025-01-23 09:00 | Черепанов И | 4h | 4h |

| ID | WBS | Task | Type | Duration | Start | Finish | Predecessors | Complete | Remaining | Total slack | Free slack | Constraint | Resources | Work | Actual work |
| --- | --- | --- | --- | --- | --- | --- | --- | --- | --- | --- | --- | --- | --- | --- | --- |
| 1468 | 2.325 | **замена реле безопасности бойлер ж** |  | 91.12d | 2024-10-16 09:00 A | 2025-02-20 10:00 A |  | 100% |  |  |  |  |  | 82h | 82h |
| 1469 | 2.325.1 | заЯВка |  | 1h | 2024-10-16 09:00 A | 2024-10-16 10:00 A |  | 100% |  |  |  | start no earlier than 2024-10-16 09:00 | Зорькин В | 1h | 1h |
| 1470 | 2.325.2 | доставка |  | 10d | 2024-10-16 10:00 A | 2024-10-30 10:00 A | 1469 | 100% |  |  |  | start no earlier than 2024-10-16 09:00 | Мультан | 80h | 80h |
| 1471 | 2.325.3 | замена |  | 1h | 2025-02-20 09:00 A | 2025-02-20 10:00 A | 1470 | 100% |  |  |  | start no earlier than 2025-02-20 09:00 | Некрасов А | 1h | 1h |
| 1472 | 2.326 | **установить пульты на регулировку шибиров вентиляции** |  | 48d? | 2026-08-31 09:00 | 2026-10-23 18:00 |  |  |  | 97.59d |  |  |  | 90h |  |
| 1473 | 2.326.1 | заявка на блок питания, шкаф управления, кабель |  | 2h | 2026-08-31 09:00 | 2026-08-31 11:00 |  |  |  | 134.34d | 0d | start no earlier than 2026-08-31 09:00 | Домоводов К | 2h |  |
| 1474 | 2.326.2 | доставка |  | 10d | 2026-08-31 11:00 | 2026-09-11 11:00 | 1473 |  |  | 134.34d | 36.75d | start no earlier than 2024-05-08 08:00 | Мультан | 80h |  |
| 1475 | 2.326.3 | монтаж |  | 1d? | 2026-10-23 09:00 | 2026-10-23 18:00 | 1474 |  |  | 97.59d |  | start no earlier than 2026-10-23 09:00 | Некрасов А | 8h |  |
| 1476 | 2.327 | заменить местами 2 зеркала маленький и большой бункер |  | 4h | 2024-10-03 09:00 | 2024-10-03 13:00 |  |  |  | 642.09d |  | start no earlier than 2024-10-03 09:00 | Черепанов И | 4h |  |
| 1477 | 2.328 | установить провод заземления на дверь шкафа упр сушки |  | 1h | 2024-01-08 09:00 | 2024-01-08 10:00 |  |  |  | 835.47d |  | start no earlier than 2024-01-06 09:00 | Тимофеев В | 1h |  |
| 1478 | 2.329 | **Палетообмотчик** |  | 50.06d | 2026-05-19 09:00 A | 2026-07-28 09:30 A |  | 100% |  |  |  |  |  | 80.67h | 80.67h |
| 1479 | 2.329.1 | заказать цепь |  | 10min | 2026-05-19 09:00 A | 2026-05-19 09:10 A |  | 100% |  |  |  | start no earlier than 2026-05-19 08:00 | Зорькин В | 0.17h | 0.17h |
| 1480 | 2.329.2 | доставка |  | 10d | 2026-05-29 09:00 A | 2026-06-11 18:00 A |  | 100% |  |  |  | start no earlier than 2026-05-29 09:00 | Карабанов | 80h | 80h |
| 1481 | 2.329.3 | замена цепи на вход в зону палетирования на складе взять 10М оцинкованная 3мм | manual | 30min | 2026-07-28 09:00 A | 2026-07-28 09:30 A |  | 100% |  |  |  | start no earlier than 2026-07-28 09:00 | Макаревич А | 0.5h | 0.5h |
| 1482 | 2.330 | Изготовить полочки из нержавейки по образцу на 18 баночек еще 2 шт |  | 3h | 2026-07-24 09:00 A | 2026-07-24 12:00 A |  | 100% |  |  |  | start no earlier than 2026-07-24 09:00 | Бундин В | 3h | 3h |
| 1483 | 2.331 | **разделить воду на ПГ и экструдер** |  | 0.25d | 2026-10-05 09:00 | 2026-10-05 11:00 |  |  |  | 0d |  |  |  | 2h |  |
| 1484 | 2.331.1 | изготовить промежуточную емкость для прекондера, подача воды, сделать по аналогу 3 цеха | manual | 2h | 2026-10-05 09:00 | 2026-10-05 11:00 |  |  |  |  |  | start no earlier than 2026-10-05 09:00 | Тимофеев В | 2h |  |
| 1485 | 2.332 | **отмена** |  | 85.31d? | 2026-08-11 09:00 A | 2026-11-26 11:30 |  | 2% | 83.37d? | 74.28d |  |  |  | 11h | 0.25h |
| 1486 | 2.332.1 | **найти места утечки тепла под потолком- перемерзает труба подачи воды в 3 цех** |  | 85.31d? | 2026-08-11 09:00 A | 2026-11-26 11:30 |  | 2% | 83.37d? | 74.28d |  |  |  | 11h | 0.25h |
| 1487 | 2.332.1.1 | вспомнить из-за чего холод под потолком? Какие нужны мероприятия?- никто не помнит |  | 15min | 2026-08-11 09:00 A | 2026-08-11 09:15 A |  | 100% |  |  |  | start no earlier than 2026-08-11 09:00 | Некрасов А | 0.25h | 0.25h |
| 1488 | 2.332.1.2 | подать олегу заявку |  | 15min | 2026-08-31 09:00 | 2026-08-31 09:15 |  |  |  | 145.56d |  | start no earlier than 2026-08-31 09:00 | Зорькин В | 0.25h |  |
| 1489 | 2.332.1.3 | проверка пирометром / тепловизором |  | 2h | 2026-11-11 09:00 | 2026-11-11 11:00 |  |  |  | 74.28d | 0d | start no earlier than 2026-11-11 09:00 | Некрасов А | 2h |  |
| 1490 | 2.332.1.4 | заявка (подумать материал) |  | 15min | 2026-11-11 11:00 | 2026-11-11 11:15 | 1489 |  |  | 74.28d | 0d | start no earlier than 2026-08-13 09:00 | Зорькин В | 0.25h |  |
| 1491 | 2.332.1.5 | доставка- контроль |  | 15min | 2026-11-25 11:15 | 2026-11-25 11:30 | 1490FS+10d |  |  | 74.28d | 0d | start no earlier than 2026-08-12 09:00 | Зорькин В | 0.25h |  |
| 1492 | 2.332.1.6 | монтаж |  | 1d? | 2026-11-25 11:30 | 2026-11-26 11:30 | 1491 |  |  | 74.28d |  | start no earlier than 2026-08-11 09:00 | Тимофеев В | 8h |  |

| ID | WBS | Task | Type | Duration | Start | Finish | Predecessors | Complete | Remaining | Total slack | Constraint | Resources | Work | Actual work |
| --- | --- | --- | --- | --- | --- | --- | --- | --- | --- | --- | --- | --- | --- | --- |
| 1493 | 2.333 | **вентиляция** |  | 11.25d | 2026-08-13 09:00 A | 2026-08-28 11:00 A |  | 100% |  |  |  |  | 4h | 4h |
| 1494 | 2.333.1 | Монтаж частотников на ШУ | manual | 2h | 2026-08-13 09:00 A | 2026-08-13 11:00 A |  | 100% |  |  | start no earlier than 2026-08-13 09:00 | Труфанов А | 2h | 2h |
| 1495 | 2.333.2 | В ШУ вырезать окна для частотников в двери, закрыть оргстеклом. Желательно на шарниры. |  | 2h | 2026-08-28 09:00 A | 2026-08-28 11:00 A |  | 100% |  |  | start no earlier than 2026-08-31 09:00 | Бундин В | 2h | 2h |
| 1496 | 2.334 | **Синий бункер** |  | 0.25d | 2026-07-30 09:00 A | 2026-07-30 11:00 A |  | 100% |  |  |  |  | 4h | 4h |
| 1497 | 2.334.1 | Ремонт синего бункера в зоне вибратора |  | 2h | 2026-07-30 09:00 A | 2026-07-30 11:00 A |  | 100% |  |  | start no earlier than 2026-07-30 09:00 | Труфанов А; Бундин В | 4h | 4h |
| 1498 | 2.335 | **Охладитель** |  | 0.38d | 2026-07-30 09:00 A | 2026-07-30 12:00 A |  | 100% |  |  |  |  | 3h | 3h |
| 1499 | 2.335.1 | Установка защиты сетки на полозья/направляющие, спросить Зорькина |  | 3h | 2026-07-30 09:00 A | 2026-07-30 12:00 A |  | 100% |  |  | start no earlier than 2026-07-30 09:00 | Тимофеев В | 3h | 3h |
| 1500 | 2.336 | Осмотреть/устранить течь раковины возле туалета |  | 1h | 2026-07-29 08:00 A | 2026-07-29 10:00 A |  | 100% |  |  | start no earlier than 2026-07-29 08:00 | Дедов В | 1h | 1h |
| 1501 | 3 | **3 цех** |  | 309.5d? | 2025-09-01 09:00 A | 2026-10-27 13:00 |  | 80% | 62.47d? | 96.09d |  |  | 1199.58h | 962.58h |
| 1502 | 3.1 | Подписать на шкафу управления нории обозначения кнопок (на малярный скотч) |  | 1h | 2026-10-09 09:00 A | 2026-10-09 10:00 A |  | 100% |  |  | start no earlier than 2026-10-09 08:00 | Дедов В | 1h | 1h |
| 1503 | 3.2 | Закрыть все входа в производственную зону. Со стороны склада, гидролизата, со стороны фасовки, со стороны пандуса. Ключи взять у нас в кабинете в ящике. Ключи подписать | manual | 2h | 2026-10-03 09:00 A | 2026-10-03 11:00 A |  | 100% |  |  | start no earlier than 2026-10-03 09:00 | Бобренок В | 2h | 2h |
| 1504 | 3.3 | Сделать перила на лестницу между фасовкой и жирами, высота по образцу лестницы, которая на загрузке смесителей в 3 цеху. Делать минимальный габарит, чтоб рука пролазила между стеной и при этом сильно не сужало пространство. Делаем из 40 уголка | manual | 5h | 2026-10-09 09:00 A | 2026-10-09 15:00 A |  | 100% |  |  | start no earlier than 2026-10-09 09:00 | Бундин В | 5h | 5h |
| 1505 | 3.4 | Сделать окно из орг стекла монолитного, на жирах сверху, чтоб было видно печку. Размер примерно 300х200 | manual | 2h | 2026-10-07 09:00 A | 2026-10-07 11:00 A |  | 100% |  |  | start no earlier than 2026-10-07 09:00 | Бундин В | 2h | 2h |
| 1506 | 3.5 | Доделать закрепление окна из орг стекла, на жирах на заклепки вытяжные м6 | manual | 1h | 2026-10-10 09:00 A | 2026-10-10 10:00 A |  | 100% |  |  | start no earlier than 2026-10-10 09:00 | Бундин В | 1h | 1h |
| 1507 | 3.6 | **насос** |  | 5.5d | 2026-10-13 09:00 | 2026-10-20 13:00 |  |  |  | 5d |  |  | 9h |  |
| 1509 | 3.6.1 | Заказать необходимые комплектующие, переходники |  | 1h | 2026-10-13 09:00 | 2026-10-13 10:00 |  |  |  | 106.47d | start no earlier than 2026-10-13 09:00 | Зорькин В | 1h |  |
| 1510 | 3.6.2 | Установить насос с ножами в 3 цех под раковину мойки на жирах | manual | 4h | 2026-10-20 09:00 | 2026-10-20 13:00 |  |  |  |  | start no earlier than 2026-10-20 09:00 | Бобренок В; Труфанов А | 8h |  |
| 1511 | 3.7 | сопряжение круглой входной воронки в экструдер с квадратом выхода прекондиционера как в 2ц |  | 5h | 2026-09-29 09:00 A | 2026-09-29 15:00 A |  | 100% |  |  | start no earlier than 2026-09-29 09:00 | Бундин В | 5h | 5h |
| 1512 | 3.8 | **обеспечить быстрое переключение продукта из барабана годен/брак - охладитель/тазик** |  | 3.06d | 2026-09-19 09:00 A | 2026-09-22 09:30 A |  | 100% |  |  |  |  | 21h | 21h |
| 1513 | 3.8.1 | Модернизация лотка для удаления брака из барабанов, а именно: | milestone | 0h | 2026-09-19 09:00 A | 2026-09-19 09:00 A |  | 100% |  |  | start no earlier than 2026-09-19 09:00 | Макаревич А |  |  |
| 1514 | 3.8.2 | демонтировать отбойник, направляющий продукт в центр |  | 2h | 2026-09-19 09:00 A | 2026-09-19 11:00 A |  | 100% |  |  | start no earlier than 2026-09-19 09:00 | Макаревич А | 2h | 2h |
| 1515 | 3.8.3 | сделать торцевую стенку на шарнире с наклоном под барабан. Шарнир на высоте кронштейнов сетки. Шарнир дверной / как от печей |  | 4h | 2026-09-19 11:00 A | 2026-09-19 16:00 A | 1514 | 100% |  |  | start no earlier than 2026-09-18 08:00 | Макаревич А | 4h | 4h |
| 1516 | 3.8.4 | сделать фиксатор стенки в положении закрыто в виде щеколды. Безопасный быстрый |  | 2h | 2026-09-20 09:00 A | 2026-09-20 11:00 A | 1515 | 100% |  |  | start no earlier than 2026-09-20 09:00 | Макаревич А | 2h | 2h |
| 1517 | 3.8.5 | сделать "притвор", закрывающий щель после разрезания стенки. Все края защита от пореза либо зачистить либо лента |  | 4h | 2026-09-20 11:00 A | 2026-09-20 16:00 A | 1516 | 100% |  |  | start no earlier than 2026-09-18 08:00 | Макаревич А | 4h | 4h |
| 1518 | 3.8.6 | изготовить новый отбойник, направляющий продукт в центр, ниже опущенной стенки на сброс, не широкий, что бы удобно былоо менять сетку |  | 2h | 2026-09-20 16:00 A | 2026-09-20 18:00 A | 1517 | 100% |  |  | start no earlier than 2026-09-18 08:00 | Макаревич А | 2h | 2h |
| 1519 | 3.8.7 | Доработка короба после барабанов для ссыпки в емкость, установка ограничителей, язычка. Подробности у Труфанова |  | 6h | 2026-09-21 09:00 A | 2026-09-21 16:00 A |  | 100% |  |  | start no earlier than 2026-09-21 08:00 | Макаревич А | 6h | 6h |
| 1520 | 3.8.8 | установить на место, испытание |  | 30min | 2026-09-22 09:00 A | 2026-09-22 09:30 A |  | 100% |  |  | start no earlier than 2026-09-22 09:00 | Некрасов А; Труфанов А | 1h | 1h |

| ID | WBS | Task | Type | Duration | Start | Finish | Predecessors | Complete | Remaining | Total slack | Free slack | Constraint | Resources | Work | Actual work |
| --- | --- | --- | --- | --- | --- | --- | --- | --- | --- | --- | --- | --- | --- | --- | --- |
| 1521 | 3.9 | **Дражжировка** |  | 13.25d | 2026-09-17 09:00 A | 2026-09-30 11:00 A |  | 100% |  |  |  |  |  | 14h | 14h |
| 1522 | 3.9.1 | Повесить мощную цепь, за которую можно опускать и поднимать защиту |  | 1h | 2026-09-18 09:00 A | 2026-09-18 10:00 A |  | 100% |  |  |  | start no earlier than 2026-09-18 09:00 | Бундин В | 1h | 1h |
| 1523 | 3.9.2 | Сделать ограничитель, когда опускаешь защиту на себя, на уровне перил |  | 1h | 2026-09-17 09:00 A | 2026-09-17 10:00 A |  | 100% |  |  |  | start no earlier than 2026-09-17 08:00 | Бундин В | 1h | 1h |
| 1524 | 3.9.3 | Сделать из отбойников рессор уаз отбойники на защите паллет, чтоб не било когда падает (позвони, обьясню) |  | 2h | 2026-09-17 09:00 A | 2026-09-17 11:00 A |  | 100% |  |  |  | start no earlier than 2026-09-17 08:00 | Бундин В | 2h | 2h |
| 1525 | 3.9.4 | Перенести частотник со стены ближе к барабанам, смонтировать на раму барабанов |  | 2h | 2026-09-30 09:00 A | 2026-09-30 11:00 A |  | 100% |  |  |  | start no earlier than 2026-09-30 09:00 | Дедов В | 2h | 2h |
| 1526 | 3.9.5 | на коневейер циклон-барабан установить полосу сбоку ленты не дающую грануле скатываться обратно, примеры посмотреть в 1 цеху |  | 1h | 2026-09-22 09:00 A | 2026-09-22 10:00 A |  | 100% |  |  |  | start no earlier than 2026-09-22 09:00 | Тимофеев В | 1h | 1h |
| 1527 | 3.9.6 | Изготовить и установить уши на конце конвейера в барабан (чтоб гранула не попадала внутрь ленты) |  | 2h | 2026-09-21 09:00 A | 2026-09-21 11:00 A |  | 100% |  |  |  | start no earlier than 2026-09-21 09:00 | Тимофеев В | 2h | 2h |
| 1528 | 3.9.7 | Доделать и установить язык между барабанами |  | 1h | 2026-09-21 09:00 A | 2026-09-21 10:00 A |  | 100% |  |  |  | start no earlier than 2026-09-21 09:00 | Тимофеев В | 1h | 1h |
| 1529 | 3.9.8 | Увеличить «язычек» между барабанами на жирах (просыпается много гранулы |  | 4h | 2026-09-17 09:00 A | 2026-09-17 13:00 A |  | 100% |  |  |  | start no earlier than 2026-09-17 09:00 | Тимофеев В | 4h | 4h |
| 1530 | 3.10 | **Разобрать регулировку ножевого узла, достать вал на котором установлен штурвал** |  | 18d | 2026-09-21 09:00 A | 2026-10-11 11:00 A |  | 100% |  |  |  |  |  | 3.5h | 3.5h |
| 1531 | 3.10.1 | Снять вал, передать Зорькину |  | 1h | 2026-09-22 09:00 A | 2026-09-22 10:00 A |  | 100% |  |  |  | start no earlier than 2026-09-22 09:00 | Тимофеев В | 1h | 1h |
| 1532 | 3.10.2 | Заявка по образцу |  | 20min | 2026-09-21 09:00 A | 2026-09-21 09:20 A |  | 100% |  |  |  | start no earlier than 2026-09-21 09:00 | Зорькин В | 0.33h | 0.33h |
| 1533 | 3.10.3 | контроль |  | 10min | 2026-09-28 09:00 A | 2026-09-28 09:10 A | 1532SF+7d | 100% |  |  |  | start no earlier than 2026-09-28 09:00 | Зорькин В | 0.17h | 0.17h |
| 1534 | 3.10.4 | установка, получить на складе, лежат 2 вала один новый, другой образец, забрать оба | manual | 2h | 2026-10-11 09:00 A | 2026-10-11 11:00 A | 1533FS+1d | 100% |  |  |  | start no earlier than 2026-10-11 09:00 | Бобренок В | 2h | 2h |
| 1535 | 3.11 | Между шлюзовым питателем и конвейером на жирах сделать ограничение, чтоб не разлеталась гранула и не мешало двигать конвейер |  | 3h | 2026-09-15 09:00 A | 2026-09-15 12:00 A |  | 100% |  |  |  | start no earlier than 2026-09-15 09:00 | Тимофеев В | 3h | 3h |
| 1536 | 3.12 | **Найти и установить жироуловитель с синего склада на жирах мойка** |  | 15.12d | 2026-09-16 09:00 A | 2026-10-01 10:00 |  | 54% | 7.02d | 115.47d |  |  |  | 3.33h | 2.25h |
| 1537 | 3.12.1 | Составить список необходимых материлов для подключения (передать зорькину) |  | 1h | 2026-09-16 09:00 A | 2026-09-16 10:00 A |  | 100% |  |  |  | start no earlier than 2026-09-16 08:00 | Тимофеев В; Зорькин В | 2h | 2h |
| 1538 | 3.12.2 | Заявка |  | 15min | 2026-09-16 10:00 A | 2026-09-16 10:15 A | 1537 | 100% |  |  |  | start no earlier than 2026-09-16 08:00 | Зорькин В | 0.25h | 0.25h |
| 1539 | 3.12.3 | Контроль |  | 5min | 2026-09-24 09:00 | 2026-09-24 09:05 | 1538FS+7d |  |  | 122.46d | 6.99d | start no earlier than 2026-09-24 09:00 | Зорькин В | 0.08h |  |
| 1540 | 3.12.4 | Монтаж |  | 1h | 2026-10-01 09:00 | 2026-10-01 10:00 | 1539 |  |  | 115.47d |  | start no earlier than 2026-10-01 09:00 | Тимофеев В | 1h |  |
| 1541 | 3.13 | монтаж оконечные кожухи на конвейер после охладителя, что бы гранула не разлеталась при перевороте ленты |  | 4h | 2026-09-21 09:00 A | 2026-09-21 13:00 A |  | 100% |  |  |  | start no earlier than 2026-09-22 09:00 | Тимофеев В | 4h | 4h |
| 1542 | 3.14 | Перенести регулировку подачи жира, ближе к барабанам. Перенос частотник на раму барабанов |  | 4h | 2026-10-06 09:00 | 2026-10-06 13:00 |  |  |  | 111.09d |  | start no earlier than 2026-10-06 09:00 | Тимофеев В | 4h |  |
| 1543 | 3.15 | Проблема с закрыванием дверцы привода ножей (шарнир с мотором ножей при закрывании теряет соосность, сделать упор) |  | 1h | 2026-09-15 09:00 A | 2026-09-15 10:00 A |  | 100% |  |  |  | start no earlier than 2026-09-15 09:00 | Тимофеев В | 1h | 1h |
| 1544 | 3.16 | Разобраться почему закусывает резьбу прижима ножей к фильере (испытывать после установки штурвала) |  | 1h | 2026-09-15 09:00 A | 2026-09-15 10:00 A |  | 100% |  |  |  | start no earlier than 2026-09-15 09:00 | Тимофеев В | 1h | 1h |
| 1545 | 3.17 | Регулировка ножей на экструдере — сделать «штурвал»; |  | 2h | 2026-09-15 09:00 A | 2026-09-15 11:00 A |  | 100% |  |  |  | start no earlier than 2026-09-15 09:00 | Тимофеев В | 2h | 2h |

| ID | WBS | Task | Type | Duration | Start | Finish | Predecessors | Complete | Remaining | Total slack | Free slack | Constraint | Resources | Work | Actual work |
| --- | --- | --- | --- | --- | --- | --- | --- | --- | --- | --- | --- | --- | --- | --- | --- |
| 1546 | 3.18 | **Гранулы выходили из печи со следами смазки** |  | 0.5d | 2026-10-01 09:00 A | 2026-10-01 13:00 A |  | 100% |  |  |  |  |  | 4h | 4h |
| 1547 | 3.18.1 | (сделать направляющие в печи); |  | 4h | 2026-10-01 09:00 A | 2026-10-01 13:00 A |  | 100% |  |  |  | start no earlier than 2026-10-02 09:00 | Тимофеев В | 4h | 4h |
| 1548 | 3.19 | **С двигателя экструдера выдавило много масла;** |  | 32.5d | 2026-09-18 09:00 A | 2026-10-27 13:00 |  | 36% | 20.94d |  |  |  |  | 11.25h | 4h |
| 1549 | 3.19.1 | установить поплавок на верхний уровень для блокировки насоса- осмотр |  | 4h | 2026-09-18 09:00 A | 2026-09-18 13:00 A |  | 100% |  |  |  | start no earlier than 2026-09-18 09:00 | Бобренок В | 4h | 4h |
| 1550 | 3.19.2 | заявка на датчики |  | 1h | 2026-09-18 14:00 | 2026-09-18 15:00 | 1549 |  |  | 118.19d | 0d | start no earlier than 2026-09-18 08:00 | Зорькин В | 1h |  |
| 1551 | 3.19.3 | контроль достачки |  | 15min | 2026-09-25 15:00 | 2026-09-25 15:15 | 1550FS+7d |  |  | 118.19d | 4.34d | start no earlier than 2026-09-18 08:00 | Зорькин В | 0.25h |  |
| 1552 | 3.19.4 | монтаж датчик в редуктор |  | 2h | 2026-10-01 09:00 | 2026-10-01 11:00 | 1551FS+1d |  |  | 113.84d | 17.75d | start no earlier than 2026-10-01 09:00 | Бобренок В | 2h |  |
| 1553 | 3.19.5 | подключение датчика в схему - блокировка по уровню |  | 4h | 2026-10-27 09:00 | 2026-10-27 13:00 | 1552FS+1d |  |  | 96.09d |  | start no earlier than 2026-10-27 09:00 | Дедов В | 4h |  |
| 1554 | 3.20 | Заменить кран подачи воды (второй слева) на втором предкондиционере — |  | 1h | 2026-09-14 09:00 A | 2026-09-14 10:00 A |  | 100% |  |  |  | start no earlier than 2026-09-14 09:00 | Тимофеев В | 1h | 1h |
| 1555 | 3.21 | **По схемам Труфанова разобраться с автоматикой шкафа и подключить 3 датчика уровня и подписать, где и что находится +кнопки и переключатели на шкафу тоже подписать** |  | 1.06d | 2026-09-07 09:00 A | 2026-09-08 09:30 A |  | 100% |  |  |  |  |  | 8.5h | 8.5h |
| 1556 | 3.21.1 | изучение схему |  | 8h | 2026-09-07 09:00 A | 2026-09-07 18:00 A |  | 100% |  |  |  | start no earlier than 2026-09-07 09:00 | Дедов В | 8h | 8h |
| 1557 | 3.21.2 | подкл 2я нория по датчику уровня |  | 30min | 2026-09-08 09:00 A | 2026-09-08 09:30 A |  | 100% |  |  |  | start no earlier than 2026-09-08 08:00 | Дедов В | 0.5h | 0.5h |
| 1558 | 3.22 | **установить ограничитель на дверь что бы попадала под движение рольворот** |  | 21.12d | 2026-09-22 09:00 | 2026-10-16 10:00 |  |  |  | 103.47d |  |  |  | 1.5h |  |
| 1559 | 3.22.1 | заявка |  | 15min | 2026-09-22 09:00 | 2026-09-22 09:15 |  |  |  | 118.41d | 0.97d | start no earlier than 2026-09-22 09:00 | Зорькин В | 0.25h |  |
| 1560 | 3.22.2 | контроль доставки |  | 15min | 2026-09-28 09:00 | 2026-09-28 09:15 | 1559FS+5d |  |  | 117.44d | 13.97d | start no earlier than 2026-09-28 09:00 | Зорькин В | 0.25h |  |
| 1561 | 3.22.3 | монтаж |  | 1h | 2026-10-16 09:00 | 2026-10-16 10:00 | 1560FS+1d |  |  | 103.47d |  | start no earlier than 2026-10-16 09:00 | Бундин В | 1h |  |
| 1562 | 3.23 | приварить к люку сливной ямы вспомогательную ручку (ручка весит на стеллаже в слесарке) | manual | 2h | 2026-08-30 09:00 | 2026-08-30 11:00 |  |  |  |  |  | start no earlier than 2026-08-30 09:00 | Бундин В | 2h |  |
| 1563 | 3.24 | **монтаж унитаз, получить на складе** |  | 0d | 2026-08-17 09:00 A | 2026-08-17 09:00 A |  | 100% |  |  |  |  |  |  |  |
| 1564 | 3.24.1 | крышка бачка лопнувшая- поменять по гарантии | milestone | 0d | 2026-08-17 09:00 A | 2026-08-17 09:00 A |  | 100% |  |  |  | start no earlier than 2026-08-17 09:00 | Зорькин В |  |  |
| 1565 | 3.25 | закрыить металлом 1.5мм щель стена / площадка загрузки муки. Между рольворотой и стеной с окнами |  | 2h | 2026-08-15 09:00 A | 2026-08-17 11:00 A |  | 100% |  |  |  | start no earlier than 2026-08-15 09:00 | Бундин В | 2h | 2h |
| 1566 | 3.26 | закрыть щель битумной лентой стык площадка-профлист стенка. Полоску клеить из нутри, обезжирить. |  | 2h | 2026-08-16 09:00 A | 2026-08-17 11:00 A |  | 100% |  |  |  | start no earlier than 2026-08-16 09:00 | Бундин В | 2h | 2h |
| 1567 | 3.27 | монтаж светильник в корридор / лестница на площадку жиров |  | 3h | 2026-08-16 09:00 A | 2026-08-17 12:00 A |  | 100% |  |  |  | start no earlier than 2026-08-16 09:00 | Бундин В | 3h | 3h |
| 1568 | 3.28 | **ломает гранулу после печи** |  | 17.12d? | 2026-08-18 09:00 A | 2026-09-09 10:00 A |  | 100% |  |  |  |  |  | 18.5h | 18.5h |
| 1569 | 3.28.1 | тест на ручной загрузке |  | 2h | 2026-08-18 09:00 A | 2026-08-18 11:00 A |  | 100% |  |  |  | start no earlier than 2026-08-18 09:00 | Шуранов Ю | 2h | 2h |
| 1570 | 3.28.2 | полная раборка трассы на ревизию острых граней? |  | 2h | 2026-08-19 09:00 A | 2026-08-19 11:00 A |  | 100% |  |  |  | start no earlier than 2026-08-19 09:00 | Тимофеев В | 2h | 2h |
| 1571 | 3.28.3 | определить параметры нории для запроса цены |  | 2h | 2026-08-18 09:00 A | 2026-08-18 11:00 A |  | 100% |  |  |  | start no earlier than 2026-08-18 09:00 | Шуранов Ю | 2h | 2h |
| 1572 | 3.28.4 | контроль отвта |  | 15min | 2026-09-03 09:00 A | 2026-09-03 09:15 A | 1571FS+5d | 100% |  |  |  | start no earlier than 2026-09-03 09:00 | Зорькин В | 0.25h | 0.25h |
| 1573 | 3.28.5 | изготовить новый отвод 90 с фланцем, учесть степеньку |  | 1h | 2026-09-02 09:00 A | 2026-09-02 10:00 A |  | 100% |  |  |  | start no earlier than 2026-09-09 09:00 | Макаревич А | 1h | 1h |
| 1574 | 3.28.6 | тест |  | 1h | 2026-08-19 09:00 A | 2026-08-19 10:00 A |  | 100% |  |  |  | start no earlier than 2026-08-19 09:00 | Тимофеев В; Шуранов Ю | 2h | 2h |
| 1575 | 3.28.7 | переварить фланец на угловом соединении (объясню по телефону). То же самое | milestone | 0h | 2026-09-04 09:00 A | 2026-09-04 09:00 A |  | 100% |  |  |  | start no earlier than 2026-09-04 09:00 | Макаревич А |  |  |
| 1576 | 3.28.8 | печать переходника на 3д принтере |  | 1d? | 2026-08-31 09:00 A | 2026-08-31 18:00 A |  | 100% |  |  |  | start no earlier than 2026-08-31 09:00 | Домоводов К | 8h | 8h |
| 1577 | 3.28.9 | проверка размещения нории от квадропака |  | 15min | 2026-08-18 09:00 A | 2026-08-18 09:15 A |  | 100% |  |  |  | start no earlier than 2026-08-18 09:00 | Шуранов Ю | 0.25h | 0.25h |
| 1578 | 3.28.10 | установить угловой фланец на пневмотрассу |  | 1h | 2026-09-09 09:00 A | 2026-09-09 10:00 A |  | 100% |  |  |  | start no earlier than 2026-09-09 09:00 | Тимофеев В | 1h | 1h |

| ID | WBS | Task | Type | Duration | Start | Finish | Predecessors | Complete | Remaining | Total slack | Free slack | Constraint | Resources | Work | Actual work |
| --- | --- | --- | --- | --- | --- | --- | --- | --- | --- | --- | --- | --- | --- | --- | --- |
| 1579 | 3.29 | **доп мощности для приточной вентиляции** |  | 34d? | 2026-08-21 09:00 A | 2026-09-28 18:00 |  | 16% | 28.63d? | 117.59d |  |  |  | 152h | 24h |
| 1580 | 3.29.1 | проект автоматика ограничения мощности в автомате |  | 1d? | 2026-08-31 09:00 | 2026-08-31 18:00 |  |  |  | 117.59d | 0d | start no earlier than 2026-08-31 09:00 | Домоводов К | 8h |  |
| 1581 | 3.29.2 | составить ТЗ на монтаж кабеля |  | 3d | 2026-08-21 09:00 A | 2026-08-25 18:00 A |  | 100% |  |  |  | start no earlier than 2026-08-21 09:00 | Домоводов К | 24h | 24h |
| 1582 | 3.29.3 | получить КП / счет договор | milestone | 0d | 2026-09-01 18:00 | 2026-09-01 18:00 | 1580FS+1d, 1581FS+2d |  |  | 117.59d | 0d | start no earlier than 2026-08-27 09:00 | Домоводов К |  |  |
| 1583 | 3.29.4 | предоплата | milestone | 0d | 2026-09-02 18:00 | 2026-09-02 18:00 | 1582FS+1d |  |  | 117.59d | 0d | start no earlier than 2026-08-10 08:00 | Домоводов К |  |  |
| 1584 | 3.29.5 | монтаж |  | 15d | 2026-09-14 09:00 | 2026-09-28 18:00 | 1583FS+10d |  |  | 117.59d |  | start no earlier than 2026-08-10 08:00 | Подрядчик | 120h |  |
| 1585 | 3.30 | сделать перемычку на нижней части системы загрузки палет подачи жиров и гидрализата | manual | 3h | 2026-08-15 09:00 | 2026-08-15 12:00 |  |  |  |  |  | start no earlier than 2026-08-15 09:00 | Бундин В | 3h |  |
| 1586 | 3.31 | **сборка квадропака 3 цех** |  | 53.5d | 2026-08-14 09:00 A | 2026-10-16 13:00 |  | 85% | 7.93d | 103.09d |  |  |  | 37h | 29h |
| 1587 | 3.31.1 | Монтаж/позиционирование квадропака |  | 5h | 2026-09-02 09:00 A | 2026-09-02 15:00 A |  | 100% |  |  |  | start no earlier than 2026-09-02 09:00 | Труфанов А | 5h | 5h |
| 1588 | 3.31.2 | перестановка норий, задействовать бункер |  | 2h | 2026-08-17 09:00 A | 2026-08-17 11:00 A |  | 100% |  |  |  | start no earlier than 2026-08-17 09:00 | Тимофеев В; Некрасов А | 4h | 4h |
| 1589 | 3.31.3 | сборка накопительный стол |  | 2h | 2026-08-19 09:00 A | 2026-08-19 11:00 A | 1588 | 100% |  |  |  | start no earlier than 2026-08-19 09:00 | Тимофеев В | 2h | 2h |
| 1590 | 3.31.4 | подключение дозатор |  | 1h | 2026-08-14 09:00 A | 2026-08-14 10:00 A |  | 100% |  |  |  | start no earlier than 2026-08-14 09:00 | Труфанов А | 1h | 1h |
| 1591 | 3.31.5 | зарисовка схема ШУ нория - понять управление бункером |  | 4h | 2026-08-14 09:00 A | 2026-08-14 13:00 A |  | 100% |  |  |  | start no earlier than 2026-08-14 09:00 | Труфанов А | 4h | 4h |
| 1592 | 3.31.6 | подключение нория к упаковке |  | 2h | 2026-08-14 14:00 A | 2026-08-14 16:00 A | 1591 | 100% |  |  |  | start no earlier than 2026-08-14 09:00 | Труфанов А | 2h | 2h |
| 1593 | 3.31.7 | подключение вводный кабель (питание) информация у Труфанова |  | 2h | 2026-09-04 09:00 A | 2026-09-04 11:00 A | 1592 | 100% |  |  |  | start no earlier than 2026-09-04 09:00 | Бундин В; Труфанов А | 4h | 4h |
| 1594 | 3.31.8 | тест на пакетах |  | 4h | 2026-10-16 09:00 | 2026-10-16 13:00 |  |  |  | 103.09d |  | start no earlier than 2026-10-16 09:00 | Труфанов А; Зорькин В | 8h |  |
| 1595 | 3.31.9 | подключениекомпрессор |  | 1h | 2026-09-03 09:00 A | 2026-09-03 10:00 A | 1593 | 100% |  |  |  | start no earlier than 2026-09-03 09:00 | Бобренок В | 1h | 1h |
| 1596 | 3.31.10 | Установка квадропака (позиционирование нижней машины) информация у Труфанова |  | 2h | 2026-09-02 09:00 A | 2026-09-02 11:00 A |  | 100% |  |  |  | start no earlier than 2026-09-02 09:00 | Труфанов А; Бундин В | 4h | 4h |
| 1597 | 3.31.11 | Выставить опоры верхней рамы и лестницы по уровню |  | 1h | 2026-09-02 09:00 A | 2026-09-02 10:00 A |  | 100% |  |  |  | start no earlier than 2026-09-02 08:00 | Бундин В | 1h | 1h |
| 1598 | 3.31.12 | Редуктор стола повернуть кабелем к электрощиту (на столе) |  | 30min | 2026-09-02 09:00 A | 2026-09-02 09:30 A |  | 100% |  |  |  | start no earlier than 2026-09-02 08:00 | Бундин В | 0.5h | 0.5h |
| 1599 | 3.31.13 | Провод от редуктора и кнопки в гофре закрепить по раме стола завести в шкаф |  | 30min | 2026-09-02 09:00 A | 2026-09-02 09:30 A |  | 100% |  |  |  | start no earlier than 2026-09-02 08:00 | Бундин В | 0.5h | 0.5h |
| 1600 | 3.32 | сделать ручку и зацепной крюк для открытия люка сливной ямы | manual | 2h | 2026-08-08 09:00 A | 2026-08-08 11:00 A |  | 100% |  |  |  | start no earlier than 2026-08-08 09:00 | Бобренок В | 2h | 2h |
| 1601 | 3.33 | **карусель добавить перемычку снизу, чтобы не выпал мешок** |  | 30.25d | 2026-08-18 09:00 A | 2026-09-22 11:00 |  | 93% | 2.16d | 124.34d |  |  |  | 2.33h | 2.17h |
| 1602 | 3.33.1 | заказать краску |  | 10min | 2026-08-18 09:00 A | 2026-08-18 09:10 A |  | 100% |  |  |  | start no earlier than 2026-08-18 09:00 | Шуранов Ю | 0.17h | 0.17h |
| 1603 | 3.33.2 | контроль доставки |  | 10min | 2026-08-31 09:00 | 2026-08-31 09:10 | 1602FS+5d |  |  | 145.57d |  | start no earlier than 2026-08-31 09:00 | Зорькин В | 0.17h |  |
| 1604 | 3.33.3 | покрасить перемычки система безопасности) |  | 2h | 2026-09-22 09:00 A | 2026-09-22 11:00 A | 1603FS+1d | 100% |  |  |  | start no earlier than 2026-09-22 09:00 | Тимофеев В | 2h | 2h |
| 1605 | 3.34 | убрать битумную ленту снаружи мезонина |  | 1h | 2026-08-04 08:00 A | 2026-08-04 10:00 A |  | 100% |  |  |  | start no earlier than 2026-08-04 08:00 | Макаревич А | 1h | 1h |
| 1606 | 3.35 | хорошо закрепить шланг подачи воды в прекондеционер |  | 2h | 2026-08-04 08:00 A | 2026-08-04 11:00 A |  | 100% |  |  |  | start no earlier than 2026-08-04 08:00 | Макаревич А | 2h | 2h |
| 1607 | 3.36 | на выходе ротаметра поменять шланг большего диаметра |  | 1h | 2026-07-31 08:00 A | 2026-07-31 10:00 A |  | 100% |  |  |  | start no earlier than 2026-07-31 08:00 | Тимофеев В | 1h | 1h |
| 1608 | 3.37 | покрасить кронштейн крепления ротаметра |  | 1h | 2026-07-31 09:00 A | 2026-07-31 10:00 A |  | 100% |  |  |  | start no earlier than 2026-07-31 09:00 | Бундин В | 1h | 1h |
| 1609 | 3.38 | не набирает заданную температуру 4 зона экструдера- разобраться |  | 2h | 2026-07-30 08:00 A | 2026-07-30 11:00 A |  | 100% |  |  |  | start no earlier than 2026-07-30 08:00 | Дедов В | 2h | 2h |
| 1610 | 3.39 | сборка кожухи на печи |  | 2h | 2026-07-15 09:00 A | 2026-07-15 11:00 A |  | 100% |  |  |  | start no earlier than 2026-07-15 09:00 | Бундин В | 2h | 2h |

| ID | WBS | Task | Type | Duration | Start | Finish | Predecessors | Complete | Actual start | Actual finish | Constraint | Resources | Work | Actual work |
| --- | --- | --- | --- | --- | --- | --- | --- | --- | --- | --- | --- | --- | --- | --- |
| 1611 | 3.40 | **установить зеркало сферическое на бункер** |  | 15.5d | 2026-07-07 09:00 A | 2026-07-28 13:00 A |  | 100% |  |  |  |  | 5h | 5h |
| 1612 | 3.40.1 | заявка |  | 1h | 2026-07-07 09:00 A | 2026-07-07 10:00 A |  | 100% |  |  | start no earlier than 2026-07-07 09:00 | Зорькин В | 1h | 1h |
| 1613 | 3.40.2 | контроль доставки | milestone | 0d | 2026-07-17 10:00 A | 2026-07-17 10:00 A | 1612FS+10d | 100% |  |  | start no earlier than 2026-07-14 08:00 | Зорькин В |  |  |
| 1614 | 3.40.3 | монтаж |  | 4h | 2026-07-28 09:00 A | 2026-07-28 13:00 A | 1613FS+1d | 100% |  |  | start no earlier than 2026-07-28 09:00 | Макаревич А | 4h | 4h |
| 1615 | 3.41 | поиск след от смазки на охладителе |  | 1h | 2026-07-10 09:00 A | 2026-07-10 10:00 A |  | 100% |  |  | start no earlier than 2026-07-10 09:00 | Тимофеев В; Зорькин В | 2h | 2h |
| 1616 | 3.42 | **установить наосос центробежный на бочку слив с парогенератора, врезать штуцер в бочку** |  | 0.25d | 2026-07-15 09:00 A | 2026-07-15 11:00 A |  | 100% |  |  |  |  | 4h | 4h |
| 1617 | 3.42.1 | орг закуп с курьером |  | 2h | 2026-07-15 09:00 A | 2026-07-15 11:00 A |  | 100% |  |  | start no earlier than 2026-07-15 09:00 | Зорькин В | 2h | 2h |
| 1618 | 3.42.2 | монтаж штуцер |  | 2h | 2026-07-15 09:00 A | 2026-07-15 11:00 A |  | 100% |  |  | start no earlier than 2026-07-15 09:00 | Бобренок В | 2h | 2h |
| 1619 | 3.43 | **вода идет не стабильно** |  | 4.38d | 2026-07-09 09:00 A | 2026-07-15 12:00 A |  | 100% |  |  |  |  | 8h | 8h |
| 1620 | 3.43.1 | Поставить гидроаккумулятор на насос между выходом насосной станции и 3-х ходомым краном подачи воды в экструдер и заменить трубки на шланги |  | 3h | 2026-07-09 09:00 A | 2026-07-09 12:00 A |  | 100% |  |  | start no earlier than 2026-07-09 09:00 | Тимофеев В | 3h | 3h |
| 1621 | 3.43.2 | тест работы воды с ПГ на давлении питательного насоса 3+ |  | 1h | 2026-07-10 09:00 A | 2026-07-10 10:00 A |  | 100% |  |  | start no earlier than 2026-07-10 09:00 | Зорькин В; Тимофеев В | 2h | 2h |
| 1622 | 3.43.3 | орг закуп с курьером |  | 2h | 2026-07-15 09:00 A | 2026-07-15 11:00 A | 1617SS | 100% |  |  | start no earlier than 2026-07-13 09:00 | Зорькин В | 2h | 2h |
| 1623 | 3.43.4 | замена шланг напорный с насоса до ротаметра |  | 1h | 2026-07-15 11:00 A | 2026-07-15 12:00 A | 1622 | 100% |  |  | start no earlier than 2026-07-13 09:00 | Бобренок В | 1h | 1h |
| 1624 | 3.44 | Доработать крутилку ссыпа гранулы, прихватить на сварку |  | 1h | 2026-07-09 09:00 A | 2026-07-09 10:00 A |  | 100% |  |  | start no earlier than 2026-07-09 09:00 | Макаревич А | 1h | 1h |
| 1625 | 3.45 | удлинить лоток ножевого узла, до кромки загрузки применик пневмотранспорта |  | 3h | 2026-07-09 09:00 A | 2026-07-09 12:00 A |  | 100% |  |  | start no earlier than 2026-07-09 09:00 | Макаревич А | 3h | 3h |
| 1626 | 3.46 | Снять торцевые дверцы на печи для доступа к сетке |  | 1h | 2026-07-08 09:00 A | 2026-07-08 10:00 A |  | 100% |  |  | start no earlier than 2026-07-08 08:00 | Бундин В | 1h | 1h |
| 1627 | 3.47 | Снять кожухи на редукторах на цепях |  | 1h | 2026-07-08 09:00 A | 2026-07-08 10:00 A |  | 100% |  |  | start no earlier than 2026-07-08 08:00 | Бундин В | 1h | 1h |
| 1628 | 3.48 | Установка раковины,унитаза в 3 цеху 2 этаж |  | 4h | 2026-07-07 09:00 A | 2026-07-07 13:00 A |  | 100% |  |  | start no earlier than 2026-07-07 09:00 | Бундин В | 4h | 4h |
| 1629 | 3.49 | Установить тройник на компрессор маленький, на входе. (тройни пришел сегодня на склад) |  | 1h | 2026-07-08 09:00 A | 2026-07-08 10:00 A |  | 100% |  |  | start no earlier than 2026-07-08 08:00 | Бундин В | 1h | 1h |
| 1630 | 3.50 | Вернуть упакованный унитаз на склад |  | 30min | 2026-07-08 09:00 A | 2026-07-08 09:30 A |  | 100% |  |  | start no earlier than 2026-07-08 08:00 | Бундин В | 0.5h | 0.5h |
| 1631 | 3.51 | **на тепловых реле 1 и 2 смесителя добавить порог выключения** |  | 1h? | 2026-07-11 09:00 | 2026-07-11 10:00 |  | 100% | 2026-07-14 09:00 | 2026-09-03 10:00 |  |  | 1.5h | 1.5h |
| 1632 | 3.51.1 | заявка на тепловые реле с большим номинолом |  | 15min | 2026-07-14 09:00 A | 2026-07-14 09:15 A |  | 100% |  |  | start no earlier than 2026-07-14 08:00 | Зорькин В | 0.25h | 0.25h |
| 1633 | 3.51.2 | доставка контроль |  | 15min | 2026-08-28 09:00 A | 2026-08-28 09:15 A | 1632FS+5d | 100% |  |  | start no earlier than 2026-08-28 09:00 | Зорькин В | 0.25h | 0.25h |
| 1634 | 3.51.3 | замена тепловых реле, получить на складе |  | 1h | 2026-09-03 09:00 A | 2026-09-03 10:00 A | 1633FS+1d | 100% |  |  | start no earlier than 2026-09-03 09:00 | Бобренок В | 1h | 1h |
| 1635 | 3.52 | сделать ручки с резьбой для снятия матрицы экструдера |  | 2h | 2026-07-04 09:00 A | 2026-07-06 11:00 A |  | 100% |  |  | start no earlier than 2026-07-04 09:00 | Макаревич А | 2h | 2h |
| 1636 | 3.53 | сделать противоудары головы на циклоне в зоне жиров | manual | 1h | 2026-07-26 09:00 A | 2026-07-26 10:00 A |  | 100% |  |  | start no earlier than 2026-07-26 09:00 | Макаревич А | 1h | 1h |
| 1637 | 3.54 | сделать откидную крышку на ножевом узле (расскажу как) |  | 8h | 2026-07-04 09:00 A | 2026-07-06 18:00 A |  | 100% |  |  | start no earlier than 2026-07-04 09:00 | Макаревич А | 8h | 8h |
| 1638 | 3.55 | подклинивает охладитель (все ярусы)- разобраться почему |  | 2h | 2026-07-11 09:00 A | 2026-07-13 11:00 A |  | 100% |  |  | start no earlier than 2026-07-11 09:00 | Макаревич А | 2h | 2h |

| ID | WBS | Task | Type | Duration | Start | Finish | Complete | Actual finish | Total slack | Constraint | Resources | Work | Actual work |
| --- | --- | --- | --- | --- | --- | --- | --- | --- | --- | --- | --- | --- | --- |
| 1639 | 3.56 | **откалибровать весы красных смесителей, муку с контрольным весом обеспечит 5ц** |  | 2h? | 2026-07-29 09:00 A | 2026-07-29 11:00 | 100% | 2026-08-03 18:00 |  |  | Дедов В | 10h | 10h |
| 1640 | 3.56.1 | вызвать специалистов |  | 1d? | 2026-08-03 09:00 A | 2026-08-03 18:00 A | 100% |  |  | start no earlier than 2026-08-03 09:00 | Шуранов Ю | 8h | 8h |
| 1641 | 3.57 | **установка частотника на шнек подачи со смесителей на ногу опоры шнека в разрыв питания шнека** |  | 0.12d | 2026-07-04 09:00 A | 2026-07-06 10:00 A | 100% |  |  |  |  | 1h | 1h |
| 1642 | 3.57.1 | демонтировать частотник шнека (в слесарку) |  | 1h | 2026-07-04 09:00 A | 2026-07-06 10:00 A | 100% |  |  | start no earlier than 2026-07-04 09:00 | Дедов В | 1h | 1h |
| 1643 | 3.58 | щель запенить выход из цеха |  | 1d? | 2026-07-02 09:00 A | 2026-07-02 18:00 A | 100% |  |  | start no earlier than 2026-07-02 09:00 | Олег | 8h | 8h |
| 1644 | 3.59 | силиконим двери прекондиционера (одну эксперимент) |  | 2h | 2026-07-02 09:00 A | 2026-07-02 11:00 A | 100% |  |  | start no earlier than 2026-07-03 09:00 | Дедов В | 2h | 2h |
| 1645 | 3.60 | наростить лопатку датчика переполнения на приемном лотке прекондиционера |  | 1h | 2026-06-30 09:00 A | 2026-06-30 10:00 A | 100% |  |  | start no earlier than 2026-06-30 09:00 | Бундин В | 1h | 1h |
| 1646 | 3.61 | установка бака стабилизации на подачу воды в прекондеционер (подключение) |  | 2h | 2026-07-02 09:00 A | 2026-07-02 11:00 A | 100% |  |  | start no earlier than 2026-07-02 09:00 | Тимофеев В | 2h | 2h |
| 1647 | 3.62 | изготовить фильтры на установки охлаждения |  | 1d? | 2026-07-06 09:00 | 2026-07-06 18:00 |  |  | 184.59d | start no earlier than 2026-07-06 09:00 | Тимофеев В | 8h |  |
| 1648 | 3.63 | удлинить горловину для второго красного смесителя |  | 2h | 2026-06-29 09:00 A | 2026-06-29 11:00 A | 100% |  |  | start no earlier than 2026-06-29 09:00 | Бундин В | 2h | 2h |
| 1649 | 3.64 | закрепить датчик сырья лопаткой в горке, под магнитом. Бункер экструдера |  | 4h | 2026-06-27 09:00 A | 2026-06-29 13:00 A | 100% |  |  | start no earlier than 2026-06-27 09:00 | Бундин В | 4h | 4h |
| 1650 | 3.65 | над магнитом сделать приемную воронку, борта, чтобы не пересыпалось сырье |  | 4h | 2026-06-27 09:00 A | 2026-06-29 13:00 A | 100% |  |  | start no earlier than 2026-06-27 09:00 | Бундин В | 4h | 4h |
| 1651 | 3.66 | удлинить воронку смесителя до горловины шнека. Приготовить сварщику, обяснить что нужно сделать. Вместо вибратора |  | 4h | 2026-06-27 09:00 A | 2026-06-29 13:00 A | 100% |  |  | start no earlier than 2026-06-27 09:00 | Дедов В; Бундин В | 8h | 8h |
| 1652 | 3.67 | байпас для масленной станции |  | 2h | 2026-07-01 09:00 A | 2026-07-01 11:00 A | 100% |  |  | start no earlier than 2026-07-01 09:00 | Тимофеев В | 2h | 2h |
| 1653 | 3.68 | **площадка для операторов для доступа к бункеру, что бы не наступали на краны** |  | 0.12d | 2026-07-02 09:00 A | 2026-07-02 10:00 A | 100% |  |  |  | Макаревич А; Некрасов А | 4h | 4h |
| 1654 | 3.68.1 | убрать заусенцы болгаркой |  | 1h | 2026-07-02 09:00 A | 2026-07-02 10:00 A | 100% |  |  | start no earlier than 2026-07-02 09:00 | Макаревич А; Тимофеев В | 2h | 2h |
| 1655 | 3.69 | **монтаж второй площадки с другой стороны (лестницу берем у 5 цеха -белую)** |  | 0.12d | 2026-07-03 09:00 A | 2026-07-03 10:00 A | 100% |  |  |  | Макаревич А; Некрасов А | 3h | 3h |
| 1656 | 3.69.1 | покрасить лестницу (мастер ц.1 даст людей- контроль) |  | 1h | 2026-07-03 09:00 A | 2026-07-03 10:00 A | 100% |  |  | start no earlier than 2026-07-03 09:00 | Макаревич А | 1h | 1h |
| 1657 | 3.70 | закрутить крышку двигателя улитки на циклоне жиров |  | 1h | 2026-06-25 09:00 A | 2026-06-25 10:00 A | 100% |  |  | start no earlier than 2026-06-25 09:00 | Дедов В | 1h | 1h |
| 1658 | 3.71 | укоротить шланг подачи масла | manual | 1h | 2026-06-25 08:00 A | 2026-06-25 09:00 A | 100% |  |  | start no earlier than 2026-06-25 08:00 | Макаревич А | 1h | 1h |
| 1659 | 3.72 | проверка подачи воды на парогенератор и прекондиционер, почему клапан подачи в бак заблокирован. |  | 2h | 2026-06-25 09:00 A | 2026-06-25 11:00 A | 100% |  |  | start no earlier than 2026-06-25 09:00 | Дедов В | 2h | 2h |
| 1660 | 3.73 | проверить парогенератор |  | 0.5h | 2026-06-25 09:00 A | 2026-06-25 09:30 A | 100% |  |  | start no earlier than 2026-06-25 09:00 | Дедов В | 0.5h | 0.5h |
| 1661 | 3.74 | вскрыть парогенератор, чистка электродов- фото |  | 3h | 2026-06-25 08:00 A | 2026-06-25 12:00 A | 100% |  |  | start no earlier than 2026-06-25 08:00 | Макаревич А | 3h | 3h |
| 1662 | 3.75 | подключить ролеты на охладителе |  | 1h | 2026-06-25 09:00 A | 2026-06-25 10:00 A | 100% |  |  | start no earlier than 2026-06-25 09:00 | Дедов В | 1h | 1h |
| 1663 | 3.76 | изготовление и установка шибера в лоток |  | 2h | 2026-06-25 09:00 A | 2026-06-25 11:00 A | 100% |  |  | start no earlier than 2026-06-25 09:00 | Дедов В | 2h | 2h |
| 1664 | 3.77 | контроль печи, будет включена пока не перестанет дымить |  | 1h | 2026-06-24 09:00 A | 2026-06-24 10:00 A | 100% |  |  | start no earlier than 2026-06-24 09:00 | Труфанов А; Макаревич А | 2h | 2h |

| ID | WBS | Task | Type | Duration | Start | Finish | Predecessors | Complete | Constraint | Resources | Work | Actual work |
| --- | --- | --- | --- | --- | --- | --- | --- | --- | --- | --- | --- | --- |
| 1665 | 3.78 | **взять на складе у Веры кронштейн под щетку, закрепить на него саму щетку и прикрутить на мезонине навесок в сторону ворот** |  | 28.38d | 2026-07-07 09:00 A | 2026-08-14 12:00 A |  | 100% |  |  | 3.5h | 3.5h |
| 1666 | 3.78.1 | заказать профиль 5мм |  | 15min | 2026-07-07 09:00 A | 2026-07-07 09:15 A |  | 100% | start no earlier than 2026-07-07 09:00 | Зорькин В | 0.25h | 0.25h |
| 1667 | 3.78.2 | контроль досставки |  | 15min | 2026-07-17 09:15 A | 2026-07-17 09:30 A | 1666FS+10d | 100% | start no earlier than 2026-07-07 09:00 | Зорькин В | 0.25h | 0.25h |
| 1668 | 3.78.3 | прикрепить на клепки/ саморезу щетку и установить на мезонине где ворота (все это находиться в 3 ц. справа на входе) Еще одна щетка есть у веры на складе, висела на кабинке | manual | 3h | 2026-08-14 09:00 A | 2026-08-14 12:00 A | 1667 | 100% |  | Макаревич А | 3h | 3h |
| 1669 | 3.79 | кабель трется о дверь, уложить в лоток, приподнять -закрепить к воздуховоду |  | 3h | 2026-06-24 09:00 A | 2026-06-24 12:00 A |  | 100% | start no earlier than 2026-06-24 09:00 | Труфанов А | 3h | 3h |
| 1670 | 3.80 | на частотнике пневмоулитки на жирах- увеличить время разгона и торможения |  | 1h | 2026-06-23 09:00 A | 2026-06-23 10:00 A |  | 100% | start no earlier than 2026-06-23 09:00 | Труфанов А | 1h | 1h |
| 1671 | 3.81 | проверить редукторы на печи (утечка есть или нет) |  | 1h | 2026-06-23 09:00 A | 2026-06-23 10:00 A |  | 100% | start no earlier than 2026-06-23 09:00 | Труфанов А | 1h | 1h |
| 1672 | 3.82 | убрать трубу нерж в коридоре возле охладителя в комнату на выходе из цеха | manual | 1h | 2026-06-20 09:00 A | 2026-06-20 10:00 A |  | 100% | start no earlier than 2026-06-20 09:00 | Бундин В | 1h | 1h |
| 1673 | 3.83 | капает с улитки вытяжки печи- просверлить сверло 6мм |  | 1h | 2026-06-20 09:00 A | 2026-06-22 10:00 A |  | 100% | start no earlier than 2026-06-20 09:00 | Дедов В | 1h | 1h |
| 1674 | 3.84 | герметизация всех стыков вневмотрубы аллюминевым скотчем (улитка с печи на жиры) | manual | 1h | 2026-06-21 09:00 A | 2026-06-21 10:00 A |  | 100% | start no earlier than 2026-06-21 09:00 | Труфанов А | 1h | 1h |
| 1675 | 3.85 | отпилить одну перекладину опоры вентиляции, чтобы открывалась дверь печи | manual | 3h | 2026-06-21 09:00 A | 2026-06-21 12:00 A |  | 100% | start no earlier than 2026-06-21 09:00 | Бундин В | 3h | 3h |
| 1676 | 3.86 | проверка подачи воды в прекондиционер | manual | 1h | 2026-06-21 09:00 A | 2026-06-21 10:00 A |  | 100% | start no earlier than 2026-06-21 09:00 | Труфанов А | 1h | 1h |
| 1677 | 3.87 | включаем печь, прожигаем масло- чтобы вагорело и не дымило… контроль |  | 1h | 2026-06-23 09:00 A | 2026-06-23 10:00 A |  | 100% | start no earlier than 2026-06-23 09:00 | Шуранов Ю | 1h | 1h |
| 1678 | 3.88 | прикрутить горловину прекондиционера (находиться в комнате на выходе из цеха) | manual | 1h | 2026-06-20 09:00 A | 2026-06-20 10:00 A |  | 100% | start no earlier than 2026-06-20 09:00 | Бундин В | 1h | 1h |
| 1679 | 3.89 | на 1 и 2 зоне температура растет больше факта- проверить |  | 1h | 2026-06-23 09:00 A | 2026-06-23 10:00 A |  | 100% | start no earlier than 2026-06-23 09:00 | Труфанов А | 1h | 1h |
| 1680 | 3.90 | собрать парогенератор (насос+ вход вода в парик) |  | 1h | 2026-06-19 09:00 A | 2026-06-19 10:00 A |  | 100% | start no earlier than 2026-06-19 09:00 | Дедов В | 1h | 1h |
| 1681 | 3.91 | увеличить частоту на пневмоулитку с печи в жиры |  | 1h | 2026-06-19 09:00 A | 2026-06-19 10:00 A |  | 100% | start no earlier than 2026-06-19 09:00 | Дедов В | 1h | 1h |
| 1682 | 3.92 | трубу жиротопки утеплить |  | 2h | 2026-06-18 09:00 A | 2026-06-18 11:00 A |  | 100% | start no earlier than 2026-06-18 08:00 | Труфанов А | 2h | 2h |
| 1683 | 3.93 | установка смесителя душа 2 этаж продолжить |  | 4h | 2026-07-07 09:00 A | 2026-07-07 13:00 A |  | 100% | start no earlier than 2026-07-07 09:00 | Бундин В | 4h | 4h |
| 1684 | 3.94 | на прекондеционере настроить премыкание на всех дверцах | manual | 3h | 2026-06-21 09:00 A | 2026-06-21 12:00 A |  | 100% | start no earlier than 2026-06-21 09:00 | Труфанов А | 3h | 3h |
| 1685 | 3.95 | обрезить шпильки, которые торчат, на воздуховодах вентиляции (зона навесок и жиров) |  | 2h | 2026-06-18 09:00 A | 2026-06-18 11:00 A |  | 100% | start no earlier than 2026-06-18 08:00 | Труфанов А | 2h | 2h |
| 1686 | 3.96 | **модернизация схема ШУ жиротопки - отключается циркуляц насос при достжении температуры** |  | 5.5d | 2026-06-07 09:00 A | 2026-06-15 13:00 A |  | 100% |  |  | 5h | 5h |
| 1687 | 3.96.1 | изучить схему, согласовать предложения модернизации |  | 1h | 2026-06-07 09:00 A | 2026-06-08 10:00 A |  | 100% | start no earlier than 2026-06-07 09:00 | Дедов В | 1h | 1h |
| 1688 | 3.96.2 | реализации модернизации |  | 4h | 2026-06-15 09:00 A | 2026-06-15 13:00 A | 1687 | 100% | start no earlier than 2026-06-15 09:00 | Дедов В | 4h | 4h |

| ID | WBS | Task | Type | Duration | Start | Finish | Predecessors | Complete | Remaining | Actual start | Actual finish | Total slack | Constraint | Resources | Work | Actual work |
| --- | --- | --- | --- | --- | --- | --- | --- | --- | --- | --- | --- | --- | --- | --- | --- | --- |
| 1689 | 3.97 | **сборка квадропак с системой дозации** |  | 56.5d | 2026-06-18 09:00 A | 2026-09-04 13:00 |  | 86% | 7.79d |  |  | 141.09d |  |  | 67h | 59h |
| 1690 | 3.97.1 | сборка нория |  | 8h | 2026-07-17 09:00 A | 2026-07-17 18:00 A |  | 100% |  |  |  |  | start no earlier than 2026-07-17 09:00 | Некрасов А; Тимофеев В | 15h | 15h |
| 1691 | 3.97.2 | сборка площадка |  | 4h | 2026-07-20 09:00 A | 2026-07-20 13:00 A | 1690 | 100% |  |  |  |  | start no earlier than 2026-07-09 08:00 | Некрасов А; Тимофеев В | 8h | 8h |
| 1692 | 3.97.3 | монтаж весы |  | 4h | 2026-07-20 14:00 | 2026-07-20 18:00 | 1691 |  |  |  |  | 174.59d | start no earlier than 2026-07-09 08:00 | Некрасов А; Тимофеев В | 8h |  |
| 1693 | 3.97.4 | подключить квадропак / пусконаладка |  | 4h | 2026-09-04 09:00 A | 2026-09-04 13:00 A |  | 100% |  |  |  |  | start no earlier than 2026-09-04 09:00 | Зорькин В; Труфанов А | 8h | 8h |
| 1694 | 3.97.5 | разгрузка / распаковка |  | 1h | 2026-06-18 09:00 A | 2026-06-18 10:00 A |  | 100% |  |  |  |  | start no earlier than 2026-06-18 09:00 | Некрасов А; Тимофеев В | 1h | 1h |
| 1695 | 3.97.6 | сборка рама в 1ц над столом выгрузки пакетов. Примерка/доработка рамы по месту |  | 4h | 2026-07-09 09:00 A | 2026-07-09 13:00 A |  | 100% |  |  |  |  | start no earlier than 2026-07-09 09:00 | Некрасов А; Макаревич А; Тимофеев В | 11h | 11h |
| 1696 | 3.97.7 | сборка дозатор |  | 4h | 2026-07-09 09:00 A | 2026-07-09 13:00 A |  | 100% |  |  |  |  | start no earlier than 2026-07-09 09:00 | Зорькин В; Макаревич А; Некрасов А; Тимофеев В | 16h | 16h |
| 1697 | 3.98 | устранить заусенцы пол площадки жиротопки. Рвет тряпку уборщица. |  | 4h | 2026-05-31 09:00 A | 2026-06-01 13:00 A |  | 100% |  |  |  |  | start no earlier than 2026-05-31 09:00 | Макаревич А | 4h | 4h |
| 1698 | 3.99 | **востановить насос циркуляция воды на жиротопке** |  | 8.32d | 2026-06-06 09:00 A | 2026-06-18 11:35 A |  | 100% |  |  |  |  |  |  | 3.58h | 3.58h |
| 1699 | 3.99.1 | разборка насос / выяснить причину заклинивания |  | 1h | 2026-06-06 09:00 A | 2026-06-08 10:00 A |  | 100% |  |  |  |  | start no earlier than 2026-06-06 09:00 | Бундин В | 1h | 1h |
| 1700 | 3.99.2 | заявка аналог |  | 20min | 2026-06-08 09:00 A | 2026-06-08 09:20 A | 1699 | 100% |  |  |  |  | start no earlier than 2026-06-08 09:00 | Шуранов Ю | 0.33h | 0.33h |
| 1701 | 3.99.3 | контроль доставка |  | 15min | 2026-06-17 09:20 A | 2026-06-17 09:35 A | 1700FS+7d | 100% |  |  |  |  | start no earlier than 2026-06-05 08:00 | Шуранов Ю | 0.25h | 0.25h |
| 1702 | 3.99.4 | замена |  | 2h | 2026-06-18 09:35 A | 2026-06-18 11:35 A | 1701FS+1d | 100% |  |  |  |  | start no earlier than 2026-06-05 08:00 | Тимофеев В | 2h | 2h |
| 1703 | 3.100 | **жиротопка** |  | 9.5d | 2026-06-09 09:00 A | 2026-06-22 13:00 A |  | 100% |  |  |  |  |  |  | 9h | 9h |
| 1704 | 3.100.1 | (проверить двигатель и сам насос) |  | 1h | 2026-06-09 09:00 A | 2026-06-09 10:00 A |  | 100% |  |  |  |  | start no earlier than 2026-06-09 09:00 | Тимофеев В | 1h | 1h |
| 1705 | 3.100.2 | ремонт заклинившего насоса жиров (сняли сегодя голову ) |  | 1h | 2026-06-18 09:00 A | 2026-06-18 10:00 A | 1704 | 100% |  |  |  |  | start no earlier than 2026-06-18 09:00 | Труфанов А | 1h | 1h |
| 1706 | 3.100.3 | установить насос, который перебрал Труфанов поставить на штатное место / если не заработает ставим новый | manual | 1h | 2026-06-21 09:00 A | 2026-06-21 10:00 A | 1705 | 100% |  |  |  |  | start no earlier than 2026-06-21 09:00 | Бундин В | 1h | 1h |
| 1707 | 3.100.4 | восстановить работу пускателя на насос перекачки с бака в бак |  | 4h | 2026-06-20 09:00 A | 2026-06-22 13:00 A |  | 100% |  |  |  |  | start no earlier than 2026-06-20 09:00 | Дедов В | 4h | 4h |
| 1708 | 3.100.5 | подключить все шланги подачи жира в баки | manual | 2h | 2026-06-22 09:00 A | 2026-06-22 11:00 A |  | 100% |  |  |  |  | start no earlier than 2026-06-22 09:00 | Труфанов А | 2h | 2h |
| 1709 | 3.101 | **трасса нерж жиротопка- баки, найти утечки устранить** |  | 0.75d | 2026-05-23 09:00 A | 2026-05-25 16:00 A |  | 100% |  |  |  |  |  |  | 6h | 6h |
| 1710 | 3.101.1 | заварить места утечки и восстановить утеплитель + греющий кабель |  | 6h | 2026-05-23 09:00 A | 2026-05-25 16:00 A |  | 100% |  |  |  |  | start no earlier than 2026-05-23 09:00 | Макаревич А | 6h | 6h |
| 1711 | 3.102 | **защита ворот на мезонине загрузки** |  | 8h? | 2026-05-22 09:00 | 2026-05-22 18:00 |  | 100% |  | 2026-05-29 09:00 | 2026-08-13 13:00 |  |  |  | 27h | 27h |
| 1712 | 3.102.1 | покрасить конструкцию |  | 2h | 2026-05-31 09:00 A | 2026-06-01 11:00 A |  | 100% |  |  |  |  | start no earlier than 2026-05-31 09:00 | Макаревич А | 2h | 2h |
| 1713 | 3.102.2 | приварить дополнительную перекладину на защиту воротины |  | 2h | 2026-07-07 09:00 A | 2026-07-07 11:00 A |  | 100% |  |  |  |  | start no earlier than 2026-07-07 09:00 | Труфанов А; Тимофеев В | 4h | 4h |
| 1714 | 3.102.3 | заказать щетку и битумную ленту |  | 1h | 2026-05-31 11:00 A | 2026-06-01 10:00 A | 1712 | 100% |  |  |  |  | start no earlier than 2026-05-22 09:00 | Шуранов Ю | 1h | 1h |
| 1715 | 3.102.4 | контроль доставки |  | 1d? | 2026-05-31 12:00 A | 2026-06-01 18:00 A | 1714 | 100% |  |  |  |  | start no earlier than 2026-05-29 09:00 | Шуранов Ю | 8h | 8h |
| 1716 | 3.102.5 | установка щетки |  | 4h | 2026-08-13 09:00 A | 2026-08-13 13:00 A |  | 100% |  |  |  |  | start no earlier than 2026-08-13 09:00 | Макаревич А | 4h | 4h |
| 1717 | 3.102.6 | монтаж |  | 1d? | 2026-05-29 09:00 A | 2026-05-29 18:00 A |  | 100% |  |  |  |  | start no earlier than 2026-05-29 09:00 | Некрасов А | 8h | 8h |
| 1718 | 3.103 | установить щетку на поломоечную машину (щетка на складе) |  | 2h | 2026-05-21 09:00 A | 2026-05-21 11:00 A |  | 100% |  |  |  |  | start no earlier than 2026-05-21 08:00 | Бундин В | 2h | 2h |
| 1719 | 3.104 | площадка мезонина зона фасовки- убрать щели профиля битумной лентой |  | 2h | 2026-05-21 09:00 A | 2026-05-21 11:00 A |  | 100% |  |  |  |  | start no earlier than 2026-05-21 09:00 | Бундин В | 2h | 2h |
| 1720 | 3.105 | прикрутить дюзы форсунок подачи воды в прекондиционер, взять у меня на столе. |  | 1h | 2026-05-22 09:00 A | 2026-05-22 10:00 A |  | 100% |  |  |  |  | start no earlier than 2026-05-22 09:00 | Тимофеев В | 1h | 1h |
| 1721 | 3.106 | проверить насос подачи жира со 2 бака на барабаны, Викторович его разобрал |  | 2h | 2026-05-19 08:00 A | 2026-05-19 11:00 A |  | 100% |  |  |  |  | start no earlier than 2026-05-19 08:00 | Дедов В | 2h | 2h |
| 1722 | 3.107 | проверить рабочий или нет циркуляционный насос для змеевика на жиротопке |  | 1h | 2026-05-19 08:00 A | 2026-05-19 10:00 A |  | 100% |  |  |  |  | start no earlier than 2026-05-19 08:00 | Дедов В | 1h | 1h |
| 1723 | 3.108 | проверка оборудования на жирах водой |  | 3h | 2026-05-19 09:00 A | 2026-05-19 12:00 A |  | 100% |  |  |  |  | start no earlier than 2026-05-20 09:00 | Тимофеев В | 3h | 3h |
| 1724 | 3.109 | покраска пол под лотком барабан-охладитель |  | 1h | 2026-05-15 09:00 A | 2026-05-15 10:00 A |  | 100% |  |  |  |  | start no earlier than 2026-05-15 09:00 | Бобренок В | 1h | 1h |

| ID | WBS | Task | Type | Duration | Start | Finish | Complete | Remaining | Total slack | Constraint | Resources | Work | Actual work |
| --- | --- | --- | --- | --- | --- | --- | --- | --- | --- | --- | --- | --- | --- |
| 1725 | 3.110 | **ремонт ворот рольставня** |  | 4.12d | 2026-05-14 09:00 A | 2026-05-20 10:00 A | 100% |  |  |  |  | 2h | 2h |
| 1726 | 3.110.1 | вызывать сервис |  | 1h | 2026-05-14 09:00 A | 2026-05-14 10:00 A | 100% |  |  | start no earlier than 2026-05-14 09:00 | Зорькин В | 1h | 1h |
| 1727 | 3.110.2 | контроль работ |  | 1h | 2026-05-20 09:00 A | 2026-05-20 10:00 A | 100% |  |  | start no earlier than 2026-05-20 09:00 | Зорькин В | 1h | 1h |
| 1728 | 3.111 | вырезать косая пластина в воронку пневмотранспорта на подачу жиров |  | 2h | 2026-05-14 09:00 A | 2026-05-14 11:00 A | 100% |  |  | start no earlier than 2026-05-14 09:00 | Макаревич А | 2h | 2h |
| 1729 | 3.112 | убрать бороду от вентиляторов |  | 4h | 2026-05-12 09:00 A | 2026-05-12 13:00 A | 100% |  |  | start no earlier than 2026-05-12 09:00 | Некрасов А; Труфанов А | 8h | 8h |
| 1730 | 3.113 | монтаж кабель управления заслонками вентиляторы окно |  | 4h | 2026-05-20 09:00 A | 2026-05-20 13:00 A | 100% |  |  | start no earlier than 2026-05-22 09:00 | Некрасов А; Бундин В | 8h | 8h |
| 1731 | 3.114 | **автоматика управления смесителями** |  | 80.38d | 2026-05-04 09:00 A | 2026-08-24 12:00 | 91% | 6.89d | 150.22d |  |  | 35h | 32h |
| 1732 | 3.114.1 | поменять местами переключатели управления смесителями левый что бы включал поперечный смеситель |  | 2h | 2026-07-12 09:00 A | 2026-07-13 11:00 A | 100% |  |  | start no earlier than 2026-07-12 09:00 | Дедов В | 2h | 2h |
| 1733 | 3.114.2 | сделать подключение красных смесителей по схеме Домоводова |  | 22h | 2026-05-18 09:00 A | 2026-05-20 16:00 A | 100% |  |  | start no earlier than 2026-05-19 09:00 | Дедов В | 22h | 22h |
| 1734 | 3.114.3 | доработка схемы управления смесителями по логике ТЗ, упорядочить монтаж, промаркировать соденения |  | 8h | 2026-05-04 09:00 A | 2026-05-04 18:00 A | 100% |  |  | start no earlier than 2026-05-04 09:00 | Дедов В | 8h | 8h |
| 1735 | 3.114.4 | уложить красиво все провода в шкафу управления смесителями |  | 3h | 2026-08-24 09:00 | 2026-08-24 12:00 |  |  | 150.22d | start no earlier than 2026-08-24 09:00 | Дедов В | 3h |  |
| 1736 | 3.115 | **установить воздуховод на 300мм на красные смесители** |  | 6.25d | 2026-05-08 08:00 A | 2026-05-18 11:00 A | 100% |  |  |  |  | 4h | 4h |
| 1737 | 3.115.1 | заказать другой диаметр | milestone | 0d | 2026-05-08 08:00 A | 2026-05-08 08:00 A | 100% |  |  | start no earlier than 2026-05-08 08:00 | Зорькин В |  |  |
| 1738 | 3.115.2 | установить ф300 | milestone | 0h | 2026-05-13 09:00 A | 2026-05-13 09:00 A | 100% |  |  | start no earlier than 2026-05-13 09:00 | Тимофеев В; Зорькин В |  |  |
| 1739 | 3.115.3 | красные смесители вернуть воздуховоды (доработать рукав пересыпки воронка-смеситель) |  | 2h | 2026-05-13 09:00 A | 2026-05-13 11:00 A | 100% |  |  | start no earlier than 2026-05-13 09:00 | Тимофеев В | 2h | 2h |
| 1740 | 3.115.4 | сборка рукав на второй смеситель. Сшить по образцу |  | 2h | 2026-05-18 09:00 A | 2026-05-18 11:00 A | 100% |  |  | start no earlier than 2026-05-18 09:00 | Тимофеев В | 2h | 2h |
| 1741 | 3.116 | проверить почему не запускается приточная вентиляция в вент. Камере 7,5кВт |  | 1h | 2026-04-29 08:00 A | 2026-04-29 10:00 A | 100% |  |  | start no earlier than 2026-04-29 08:00 | Дедов В | 1h | 1h |
| 1742 | 3.117 | прозвонить кнопку индикации водителя под сиденьем (позвони объясню) |  | 2h | 2026-04-15 09:00 A | 2026-04-15 11:00 A | 100% |  |  | start no earlier than 2026-04-15 08:00 | Бундин В | 2h | 2h |
| 1743 | 3.118 | проверить приход с Китая по шнекам и гильзам |  | 1h | 2026-04-09 09:00 A | 2026-04-09 10:00 A | 100% |  |  | start no earlier than 2026-04-09 08:00 | Шуранов Ю | 1h | 1h |
| 1744 | 3.119 | собрать и установить мойку (со старой прикрутить смеситель) мойка у Веры на складе на 2 верхнем ярусе стеллажей | manual | 2h | 2026-04-05 09:00 A | 2026-04-05 11:00 A | 100% |  |  | start no earlier than 2026-04-05 09:00 | Труфанов А | 2h | 2h |
| 1745 | 3.120 | вывоз 3 поддона с мусором |  | 30min | 2026-03-24 09:00 A | 2026-03-24 09:30 A | 100% |  |  | start no earlier than 2026-03-24 09:00 | Некрасов А; Труфанов А | 1h | 1h |
| 1746 | 3.121 | установить отбойники на стеллажи | manual | 8h | 2026-03-29 09:00 A | 2026-03-29 18:00 A | 100% |  |  | start no earlier than 2026-03-29 09:00 | Бундин В | 8h | 8h |
| 1747 | 3.122 | установить отбойники на стеллажи | manual | 6h | 2026-04-18 09:00 A | 2026-04-18 16:00 A | 100% |  |  | start no earlier than 2026-04-18 09:00 | Бобренок В | 6h | 6h |
| 1748 | 3.123 | уборка зона курилка / венткамера |  | 4h | 2026-03-17 09:00 A | 2026-03-17 13:00 A | 100% |  |  | start no earlier than 2026-03-17 09:00 | Тимофеев В; Некрасов А; Макаревич А; Труфанов А | 16h | 16h |

| ID | WBS | Task | Duration | Start | Finish | Predecessors | Complete | Actual start | Actual finish | Total slack | Constraint | Resources | Work | Actual work |
| --- | --- | --- | --- | --- | --- | --- | --- | --- | --- | --- | --- | --- | --- | --- |
| 1749 | 3.124 | **сборка квадропак** | 13.25d | 2026-05-06 09:00 A | 2026-05-25 11:00 A |  | 100% |  |  |  |  |  | 14h | 14h |
| 1750 | 3.124.1 | подвести воздух к квадропаку | 4h | 2026-05-22 09:00 A | 2026-05-22 13:00 A |  | 100% |  |  |  | start no earlier than 2026-05-22 09:00 | Тимофеев В | 4h | 4h |
| 1751 | 3.124.2 | установить перед пневмораспределителями влагоотделитель | 2h | 2026-05-24 09:00 A | 2026-05-25 11:00 A |  | 100% |  |  |  | start no earlier than 2026-05-24 09:00 | Дедов В | 2h | 2h |
| 1752 | 3.124.3 | подключить квадропак к щитку кабель 5х2,5 | 4h | 2026-05-06 09:00 A | 2026-05-06 13:00 A |  | 100% |  |  |  | start no earlier than 2026-05-06 09:00 | Труфанов А; Тимофеев В | 8h | 8h |
| 1753 | 3.125 | крепление магистрали компрессора. Зона дрожировки | 1h | 2026-03-08 09:00 A | 2026-03-09 10:00 A |  | 100% |  |  |  | start no earlier than 2026-03-08 09:00 | Бундин В | 1h | 1h |
| 1754 | 3.126 | Собрать транспортер тип2 (уточнить у Шуранова)/ доделать | 3h | 2026-03-08 09:00 A | 2026-03-09 12:00 A |  | 100% |  |  |  | start no earlier than 2026-03-08 09:00 | Бобренок В | 3h | 3h |
| 1755 | 3.127 | **Покраска лестницы** | 43d | 2026-03-04 09:00 A | 2026-05-01 18:00 A |  | 100% |  |  |  |  |  | 116.33h | 116.33h |
| 1756 | 3.127.1 | Заявка на краску | 20min | 2026-03-04 09:00 A | 2026-03-04 09:20 A |  | 100% |  |  |  | start no earlier than 2026-03-04 09:00 | Зорькин В | 0.33h | 0.33h |
| 1757 | 3.127.2 | Доставка | 10d | 2026-03-04 09:20 A | 2026-03-18 09:20 A | 1756 | 100% |  |  |  | start no earlier than 2026-03-03 08:00 | Карабанов | 80h | 80h |
| 1758 | 3.127.3 | Работа по покраске | 6h | 2026-04-28 09:00 A | 2026-04-28 16:00 A | 1757 | 100% |  |  |  | start no earlier than 2026-04-28 09:00 | оперторы2; Олег | 12h | 12h |
| 1759 | 3.127.4 | покраска колонны в коридоре | 4h | 2026-04-28 09:00 A | 2026-04-28 13:00 A |  | 100% |  |  |  | start no earlier than 2026-04-28 08:00 | оперторы2; Олег | 8h | 8h |
| 1760 | 3.127.5 | покарска потолок в корридоре | 2d | 2026-04-30 09:00 A | 2026-05-01 18:00 A |  | 100% |  |  |  | start no earlier than 2026-04-30 09:00 | оператор2 | 16h | 16h |
| 1761 | 3.128 | **доработка лотка барабан-охладитель - снизить скорость падения, установить сетку** | 1.5d? | 2026-04-14 09:00 | 2026-04-15 13:00 |  | 100% | 2026-05-13 09:00 | 2026-06-17 18:00 |  |  |  | 46.75h | 46.75h |
| 1762 | 3.128.1 | сборка кронштейны + стека | 5h | 2026-05-13 09:00 A | 2026-05-13 15:00 A |  | 100% |  |  |  | start no earlier than 2026-05-13 09:00 | Труфанов А; Некрасов А | 10h | 10h |
| 1763 | 3.128.2 | сборка ручки, установка. Фотоотчет | 2h | 2026-05-15 09:00 A | 2026-05-15 11:00 A |  | 100% |  |  |  | start no earlier than 2026-05-15 09:00 | Некрасов А; Труфанов А | 4h | 4h |
| 1764 | 3.128.3 | сборка вращающаяся заслонка | 4h | 2026-05-15 11:00 A | 2026-05-15 16:00 A | 1763 | 100% |  |  |  | start no earlier than 2026-05-15 09:00 | Некрасов А; Труфанов А | 8h | 8h |
| 1765 | 3.128.4 | доработка пластины, что бы не клинила | 1h | 2026-05-21 09:00 A | 2026-05-21 10:00 A |  | 100% |  |  |  | start no earlier than 2026-05-22 09:00 | Некрасов А; Бундин В | 2h | 2h |
| 1766 | 3.128.5 | заказ на лазере пластину для регулировки шибера | 1d? | 2026-05-25 09:00 A | 2026-05-25 18:00 A |  | 100% |  |  |  | start no earlier than 2026-05-25 09:00 | Зорькин В | 8h | 8h |
| 1767 | 3.128.6 | чертеж пластина фиксации рычага | 2h | 2026-05-19 09:00 A | 2026-05-19 11:00 A | 1764 | 100% |  |  |  | start no earlier than 2026-05-19 09:00 | Зорькин В | 2h | 2h |
| 1768 | 3.128.7 | заявка на изготвление на лазер | 15min | 2026-05-20 11:00 A | 2026-05-20 11:15 A | 1767FS+1d | 100% |  |  |  | start no earlier than 2026-05-15 08:00 | Зорькин В | 0.25h | 0.25h |
| 1769 | 3.128.8 | контроль изг | 15min | 2026-06-01 09:00 A | 2026-06-01 09:15 A | 1768FS+5d | 100% |  |  |  | start no earlier than 2026-06-01 09:00 | Зорькин В | 0.25h | 0.25h |
| 1770 | 3.128.9 | доставка орг | 15min | 2026-06-05 09:00 A | 2026-06-05 09:15 A | 1769FS+1d | 100% |  |  |  | start no earlier than 2026-06-05 09:00 | Зорькин В | 0.25h | 0.25h |
| 1771 | 3.128.10 | сборка рычага | 4h | 2026-06-08 09:15 A | 2026-06-08 14:15 A | 1770FS+1d | 100% |  |  |  | start no earlier than 2026-06-06 09:00 | Бундин В | 4h | 4h |
| 1772 | 3.128.11 | сделать напраляшку на шибере регулируемую- сыпит в одну сторону | 1d? | 2026-06-17 09:00 A | 2026-06-17 18:00 A |  | 100% |  |  |  | start no earlier than 2026-06-23 09:00 | Тимофеев В | 8h | 8h |
| 1773 | 3.129 | сборка система отопления 2 этаж | 1d? | 2026-06-15 09:00 | 2026-06-15 18:00 |  |  |  |  | 199.59d | start no earlier than 2026-06-15 09:00 | Труфанов А; Некрасов А; Олег | 24h |  |

| ID | WBS | Task | Duration | Start | Finish | Predecessors | Complete | Remaining | Total slack | Constraint | Resources | Work | Actual work |
| --- | --- | --- | --- | --- | --- | --- | --- | --- | --- | --- | --- | --- | --- |
| 1774 | 3.130 | **заменить сопряжение смесителей на гибк вставку** | 29.25d | 2026-03-19 09:00 A | 2026-04-29 11:00 A |  | 100% |  |  |  |  | 122.5h | 122.5h |
| 1775 | 3.130.1 | заявка | 30min | 2026-03-19 09:00 A | 2026-03-19 09:30 A |  | 100% |  |  | start no earlier than 2026-03-19 09:00 | Зорькин В | 0.5h | 0.5h |
| 1776 | 3.130.2 | доставка | 15d | 2026-03-19 09:30 A | 2026-04-09 09:30 A | 1775 | 100% |  |  | start no earlier than 2026-02-27 08:00 | Карабанов | 120h | 120h |
| 1777 | 3.130.3 | замена | 2h | 2026-04-29 09:00 A | 2026-04-29 11:00 A | 1776 | 100% |  |  | start no earlier than 2026-04-29 09:00 | Тимофеев В | 2h | 2h |
| 1778 | 3.131 | **приточная вентиляция** | 154.25d | 2026-03-06 09:00 A | 2026-09-29 11:00 |  | 85% | 22.85d | 117.34d |  |  | 13.5h | 11.5h |
| 1779 | 3.131.1 | визит Евгения. Контроль монтажа | 30min | 2026-03-06 09:00 A | 2026-03-06 09:30 A |  | 100% |  |  | start no earlier than 2026-03-06 09:00 | Домоводов К | 0.5h | 0.5h |
| 1780 | 3.131.2 | подключить силовой кабель в ШУ (лежит в лотке) | 3h | 2026-03-13 09:00 A | 2026-03-13 12:00 A |  | 100% |  |  | start no earlier than 2026-03-13 09:00 | Подрядчик | 3h | 3h |
| 1781 | 3.131.3 | монтаж изоляционных прокладок вводный автомат между фазами | 2h | 2026-09-24 09:00 A | 2026-09-24 11:00 A |  | 100% |  |  | start no earlier than 2026-09-24 09:00 | Дедов В | 2h | 2h |
| 1782 | 3.131.4 | подключить нулевой провод шкаф управления | 2h | 2026-09-24 09:00 A | 2026-09-24 11:00 A |  | 100% |  |  | start no earlier than 2026-09-24 09:00 | Дедов В | 2h | 2h |
| 1783 | 3.131.5 | монтаж перемычек от автомата на ТВ реле . Звонить Дедову | 2h | 2026-09-24 09:00 A | 2026-09-24 11:00 A |  | 100% |  |  | start no earlier than 2026-09-24 09:00 | Дедов В | 2h | 2h |
| 1784 | 3.131.6 | замена схемы включения вентилятор вытяжка / приточка | 2h | 2026-05-04 09:00 A | 2026-05-04 11:00 A |  | 100% |  |  | start no earlier than 2026-05-04 09:00 | Дедов В | 2h | 2h |
| 1785 | 3.131.7 | проверить все подключения / тест | 2h | 2026-09-29 09:00 | 2026-09-29 11:00 |  |  |  | 117.34d | start no earlier than 2026-09-29 09:00 | Дедов В | 2h |  |
| 1786 | 3.132 | установить гидроаккумулятор | 2h | 2026-03-03 09:00 A | 2026-03-03 11:00 A |  | 100% |  |  | start no earlier than 2026-03-03 09:00 | Тимофеев В | 2h | 2h |
| 1787 | 3.133 | тест герметичности. жиропровод нерж оборудовать греющим кабелем + утеплитель. | 2h | 2026-06-01 09:00 | 2026-06-01 11:00 |  |  |  | 210.34d | start no earlier than 2026-05-31 09:00 | Макаревич А | 2h |  |
| 1788 | 3.134 | **установить перила площадка загрузки навески** | 0.25d | 2026-05-27 09:00 A | 2026-05-27 11:00 A |  | 100% |  |  |  |  | 2h | 2h |
| 1789 | 3.134.1 | покрасить перила | 2h | 2026-05-27 09:00 A | 2026-05-27 11:00 A |  | 100% |  |  | start no earlier than 2026-05-27 09:00 | оператор2 | 2h | 2h |
| 1790 | 3.135 | дорабать качелю безопасности на площадке загрузки навески что бы не задевала за вентиляцию | 2h | 2026-05-12 09:00 A | 2026-05-12 11:00 A |  | 100% |  |  | start no earlier than 2026-05-12 09:00 | Некрасов А | 2h | 2h |
| 1791 | 3.136 | подготовить отражатели тепла на подшипники печи линия 4 | 8h | 2025-09-01 09:00 | 2025-09-01 18:00 |  |  |  | 404.59d | start no earlier than 2025-08-30 09:00 | Тимофеев В | 8h |  |
| 1792 | 3.137 | усилить раму прекондиционера | 1d? | 2026-04-28 08:00 A | 2026-04-28 18:00 A |  | 100% |  |  | start no earlier than 2026-04-28 08:00 | Тимофеев В | 8h | 8h |
| 1793 | 3.138 | переместить магнит загрузки сырья | 2h | 2026-05-07 09:00 A | 2026-05-07 11:00 A |  | 100% |  |  | start no earlier than 2026-05-07 09:00 | Тимофеев В | 2h | 2h |
| 1794 | 3.139 | труба выход пара греет шнек - переместить | 1d? | 2026-06-19 09:00 | 2026-06-19 18:00 |  |  |  | 195.59d | start no earlier than 2026-06-19 09:00 | Тимофеев В | 8h |  |
| 1795 | 3.140 | герметизация примыкание на выходе из печи | 2d | 2026-05-18 09:00 A | 2026-05-19 18:00 A |  | 100% |  |  | start no earlier than 2026-05-18 09:00 | Олег | 16h | 16h |
| 1796 | 3.141 | обшить стены курилки | 2d | 2026-04-30 09:00 A | 2026-05-01 18:00 A |  | 100% |  |  | start no earlier than 2026-04-30 09:00 | Олег; Некрасов А | 32h | 32h |
| 1797 | 3.142 | покраска рамы воздуховодов уличные | 4h | 2026-05-27 09:00 | 2026-05-27 13:00 |  |  |  | 213.09d | start no earlier than 2026-05-27 09:00 | оператор2 | 4h |  |
| 1798 | 3.143 | Выяснить количество теплопотерь с печи на входе | 1h | 2026-08-28 09:00 | 2026-08-28 10:00 |  |  |  | 146.47d | start no earlier than 2026-08-28 09:00 | Зорькин В; Бобренок В | 2h |  |
| 1799 | 3.144 | Переделка входа пневмотрассы с печи на жиры, сделать плавный переход из двух углов по 45 | 4h | 2026-07-24 09:00 | 2026-07-24 13:00 |  |  |  | 171.09d | start no earlier than 2026-07-24 09:00 | Бундин В | 4h |  |

| ID | WBS | Task | Type | Duration | Start | Finish | Predecessors | Complete | Remaining | Actual finish | Total slack | Constraint | Resources | Work | Actual work |
| --- | --- | --- | --- | --- | --- | --- | --- | --- | --- | --- | --- | --- | --- | --- | --- |
| 1800 | 3.145 | **Печь** |  | 0d | 2026-07-25 09:00 A | 2026-07-26 11:00 A |  | 100% |  |  |  |  |  | 6h | 6h |
| 1801 | 3.145.1 | Переделка входа пневмотрассы с печи на жиры, сделать плавный переход из двух углов по 45, закончить если Валентин не доделал или взять в работу если Валентин не начал. Уточнить у него как он хотел сделать. | manual | 4h | 2026-07-25 09:00 A | 2026-07-25 13:00 A |  | 100% |  |  |  | start no earlier than 2026-07-25 09:00 | Макаревич А | 4h | 4h |
| 1802 | 3.145.2 | 4 зона шкаф управления не набирает заданную температуру, выяснить причину/устранить | manual | 2h | 2026-07-26 09:00 A | 2026-07-26 11:00 A |  | 100% |  |  |  | start no earlier than 2026-07-26 09:00 | Бобренок В | 2h | 2h |
| 1803 | 3.146 | **розетки** |  | 0.25d | 2026-07-25 09:00 A | 2026-07-27 11:00 A |  | 100% |  |  |  |  |  | 6h | 6h |
| 1804 | 3.146.1 | Монтаж розетки для болера, где мойка экструдера, подключиться к резерву ШУ на экструдере | manual | 2h | 2026-07-25 09:00 A | 2026-07-25 11:00 A |  | 100% |  |  |  | start no earlier than 2026-07-25 09:00 | Бобренок В | 2h | 2h |
| 1805 | 3.146.2 | Монтаж розетки, где ворота выхода готовой продукции | manual | 2h | 2026-07-27 09:00 A | 2026-07-27 11:00 A |  | 100% |  |  |  |  | Некрасов А; Труфанов А | 4h | 4h |
| 1806 | 3.147 | **Дражжировка** |  | 0d | 2026-07-26 09:00 A | 2026-07-26 11:00 A |  | 100% |  |  |  |  |  | 2h | 2h |
| 1807 | 3.147.1 | Устранить течь за раковиной. Вода перекрывается на потолке возле главной вентилляции | manual | 2h | 2026-07-26 09:00 A | 2026-07-26 11:00 A |  | 100% |  |  |  | start no earlier than 2026-07-26 09:00 | Бобренок В | 2h | 2h |
| 1808 | 3.148 | обшить стены вент камеры |  | 2d | 2026-05-06 09:00 A | 2026-05-07 18:00 A |  | 100% |  |  |  | start no earlier than 2026-05-06 09:00 | Олег; Некрасов А | 32h | 32h |
| 1809 | 3.149 | убрать металл 100*100 в зону охладителя или корридор |  | 1h | 2026-03-02 09:00 A | 2026-03-02 10:00 A |  | 100% |  |  |  | start no earlier than 2026-03-02 09:00 | Некрасов А; Труфанов А | 2h | 2h |
| 1810 | 4 | **4 склад** |  | 109.75d | 2026-03-13 09:00 A | 2026-07-15 16:00 |  | 100% |  | 2026-07-29 11:00 |  |  |  | 93.25h | 93.25h |
| 1811 | 4.1 | реверс направления кнопок движения вперед-назад ричтрака |  | 2h | 2026-07-14 08:00 A | 2026-07-14 11:00 A |  | 100% |  |  |  | start no earlier than 2026-07-14 08:00 | Дедов В | 2h | 2h |
| 1812 | 4.2 | 2 ветки не работают светильники -разобраться |  | 1h | 2026-07-02 09:00 A | 2026-07-02 10:00 A |  | 100% |  |  |  | start no earlier than 2026-07-02 09:00 | Тимофеев В | 1h | 1h |
| 1813 | 4.3 | Выяснить почему перегорают светильники |  | 2h | 2026-07-29 08:00 A | 2026-07-29 11:00 A |  | 100% |  |  |  | start no earlier than 2026-07-29 08:00 | Дедов В | 2h | 2h |
| 1814 | 4.4 | замена светильников |  | 8h | 2026-04-17 09:00 A | 2026-04-17 18:00 A |  | 100% |  |  |  | start no earlier than 2026-04-17 08:00 | Некрасов А; Труфанов А | 16h | 16h |
| 1815 | 4.5 | сборка рохли 1шт |  | 1h | 2026-03-13 09:00 A | 2026-03-13 10:00 A |  | 100% |  |  |  | start no earlier than 2026-03-13 09:00 | Тимофеев В | 1h | 1h |
| 1816 | 4.6 | ремонт обрамление погрузочной рампы |  | 4h | 2026-05-28 09:00 A | 2026-05-28 13:00 A |  | 100% |  |  |  | start no earlier than 2026-05-28 09:00 | Олег | 4h | 4h |
| 1817 | 4.7 | замена неисправных светильников |  | 1d | 2026-03-14 09:00 A | 2026-03-16 18:00 A |  | 100% |  |  |  | start no earlier than 2026-03-14 09:00 | Некрасов А; Бобренок В | 15h | 15h |
| 1818 | 4.8 | **замена неисправных светильников** |  | 87.75d | 2026-03-16 09:00 A | 2026-07-15 16:00 A |  | 100% |  |  |  |  |  | 52.25h | 52.25h |
| 1819 | 4.8.1 | заявка светильники |  | 15min | 2026-03-16 09:00 A | 2026-03-16 09:15 A |  | 100% |  |  |  | start no earlier than 2026-03-16 09:00 | Шуранов Ю | 0.25h | 0.25h |
| 1820 | 4.8.2 | доставка |  | 5d | 2026-03-16 09:15 A | 2026-03-23 09:15 A | 1819 | 100% |  |  |  | start no earlier than 2026-03-12 08:00 | Карабанов | 40h | 40h |
| 1821 | 4.8.3 | замена |  | 6h | 2026-07-15 09:00 A | 2026-07-15 16:00 A | 1820 | 100% |  |  |  | start no earlier than 2026-07-15 09:00 | Некрасов А; Труфанов А | 12h | 12h |
| 1822 | 5 | **5 цех** |  | 969.25d? | 2023-05-29 09:00 A | 2027-02-02 11:00 |  | 62% | 370.27d? |  | 26.34d |  |  | 1873.75h | 1144.25h |
| 1823 | 5.1 | Закрепить табличку с графиком работы цеха, взять в кабинете у мастеров, можно присверлить, но аккуратно, посмотреть варианты крепляния на других цехах |  | 1h | 2026-10-12 09:00 | 2026-10-12 10:00 |  |  |  |  | 107.47d | start no earlier than 2026-10-12 08:00 | Бундин В | 1h |  |
| 1824 | 5.2 | Выбрать болеменее нормальные балки 2 шт для стеллажей лежат рядом с 5а в углу и закрепить их по аналогу других балок |  | 2h | 2026-10-13 09:00 | 2026-10-13 11:00 |  |  |  |  | 106.34d | start no earlier than 2026-10-13 09:00 | Макаревич А; Труфанов А | 4h |  |
| 1825 | 5.3 | сборка полок для стеллажей архив бухгалтерии |  | 1d? | 2026-10-16 09:00 | 2026-10-16 18:00 |  |  |  |  | 102.59d | start no earlier than 2026-10-16 09:00 | Тимофеев В; Бундин В | 16h |  |
| 1826 | 5.4 | на 2 этаж раковина Установка смесителей (краны) с гибкой подводкой, получить на складе |  | 1h | 2026-09-21 09:00 A | 2026-09-21 10:00 A |  | 100% |  |  |  | start no earlier than 2026-09-21 09:00 | Некрасов А | 1h | 1h |
| 1827 | 5.5 | ремонт дека от вибросито |  | 3h | 2026-09-12 09:00 A | 2026-09-12 12:00 A |  | 100% |  |  |  | start no earlier than 2026-09-12 09:00 | Макаревич А | 3h | 3h |

| ID | WBS | Task | Type | Duration | Start | Finish | Predecessors | Complete | Remaining | Total slack | Free slack | Constraint | Resources | Work | Actual work |
| --- | --- | --- | --- | --- | --- | --- | --- | --- | --- | --- | --- | --- | --- | --- | --- |
| 1828 | 5.6 | **установить зажим троса на тельфер** |  | 28d? | 2026-09-03 09:00 A | 2026-10-01 18:00 |  | 3% | 27.18d? | 114.59d |  |  |  | 8.5h | 0.25h |
| 1829 | 5.6.1 | заявка |  | 15min | 2026-09-03 09:00 A | 2026-09-03 09:15 A |  | 100% |  |  |  | start no earlier than 2026-09-03 09:00 | Зорькин В | 0.25h | 0.25h |
| 1830 | 5.6.2 | контроль доставки |  | 15min | 2026-09-24 11:00 | 2026-09-24 11:15 | 1105FS+5d |  |  | 121.31d | 6.72d | start no earlier than 2026-09-11 09:00 | Зорькин В | 0.25h |  |
| 1831 | 5.6.3 | монтаж |  | 1d? | 2026-10-01 09:00 | 2026-10-01 18:00 | 1106FS+1d, 1830 |  |  | 114.59d |  | start no earlier than 2026-10-01 09:00 | Тимофеев В | 8h |  |
| 1832 | 5.7 | **ремонт насос водоснабжения** |  | 68.25d | 2026-09-03 09:00 A | 2026-11-26 11:00 A |  | 100% |  |  |  |  |  | 4.5h | 4.5h |
| 1833 | 5.7.1 | перекрутить американку для удобного обслуживания |  | 2h | 2026-11-26 09:00 A | 2026-11-26 11:00 A |  | 100% |  |  |  | start no earlier than 2026-11-26 09:00 | Макаревич А | 2h | 2h |
| 1834 | 5.7.2 | Сказать параметры, шильдик насосной станции передать зорькину |  | 15min | 2026-09-03 09:00 A | 2026-09-03 09:15 A |  | 100% |  |  |  | start no earlier than 2026-09-03 09:00 | Тимофеев В | 0.25h | 0.25h |
| 1835 | 5.7.3 | конртроль поставки |  | 15min | 2026-09-10 09:00 A | 2026-09-10 09:15 A | 1834 | 100% |  |  |  | start no earlier than 2026-09-10 09:00 | Зорькин В | 0.25h | 0.25h |
| 1836 | 5.7.4 | замена |  | 1h | 2026-09-11 09:15 A | 2026-09-11 10:15 A | 1835FS+1d | 100% |  |  |  | start no earlier than 2026-09-11 09:00 | Некрасов А; Макаревич А | 2h | 2h |
| 1837 | 5.8 | воставноить заземление на обоих ситах |  | 2h | 2026-09-04 09:00 A | 2026-09-04 11:00 A |  | 100% |  |  |  | start no earlier than 2026-09-04 09:00 | Бобренок В | 2h | 2h |
| 1838 | 5.9 | востановить контакт пульт тельфера у стены (переменный контакт при движении кабеля у пульта) |  | 1h | 2026-09-03 09:00 A | 2026-09-03 10:00 A |  | 100% |  |  |  | start no earlier than 2026-09-03 08:00 | Бобренок В | 1h | 1h |
| 1839 | 5.10 | подключить Олегу сварочный автомат |  | 1h | 2026-08-31 09:00 A | 2026-08-31 10:00 A |  | 100% |  |  |  | start no earlier than 2026-08-31 09:00 | Тимофеев В | 1h | 1h |
| 1840 | 5.11 | **подготовить сетку на мал дробилку 3 и 4мм** |  | 11.12d | 2026-09-12 09:00 A | 2026-09-23 10:00 A |  | 100% |  |  |  |  |  | 1.5h | 1.5h |
| 1841 | 5.11.1 | проверка отстатков сетки на складах |  | 30min | 2026-09-12 09:00 A | 2026-09-12 09:30 A |  | 100% |  |  |  | start no earlier than 2026-09-12 09:00 | Макаревич А | 0.5h | 0.5h |
| 1842 | 5.11.2 | вырезатиь сетку в размер |  | 1h | 2026-09-23 09:00 A | 2026-09-23 10:00 A | 1841FS+1d | 100% |  |  |  | start no earlier than 2026-09-29 09:00 | Тимофеев В | 1h | 1h |
| 1843 | 5.12 | ревизия шнека |  | 3h | 2026-08-17 09:00 A | 2026-08-17 12:00 A |  | 100% |  |  |  | start no earlier than 2026-08-17 09:00 | Бобренок В; Некрасов А | 6h | 6h |
| 1844 | 5.13 | **свет в туалет передать крепление светильника** |  | 1.12d | 2026-08-14 09:00 A | 2026-08-17 10:00 A |  | 100% |  |  |  |  |  | 2.25h | 2.25h |
| 1845 | 5.13.1 | проверить наличие светильника с боковым монтажем |  | 15min | 2026-08-14 09:00 A | 2026-08-14 09:15 A |  | 100% |  |  |  | start no earlier than 2026-08-14 09:00 | Домоводов К | 0.25h | 0.25h |
| 1846 | 5.13.2 | замена светильника / или закрепить |  | 1h | 2026-08-17 09:00 A | 2026-08-17 10:00 A | 1845 | 100% |  |  |  | start no earlier than 2026-08-15 09:00 | Бундин В | 1h | 1h |
| 1847 | 5.13.3 | закрепить светильник в коридоре -вход в туалет |  | 1h | 2026-08-17 09:00 A | 2026-08-17 10:00 A |  | 100% |  |  |  | start no earlier than 2026-08-17 09:00 | Бундин В | 1h | 1h |
| 1848 | 5.14 | трещина вибросито №2 1см ремонт |  | 6h | 2026-08-27 09:00 A | 2026-08-27 16:00 A |  | 100% |  |  |  | start no earlier than 2026-08-27 09:00 | Макаревич А | 6h | 6h |
| 1849 | 5.15 | трещина вибросито №1 кольцо. ремонт |  | 4h | 2026-08-28 09:00 A | 2026-08-28 13:00 A |  | 100% |  |  |  | start no earlier than 2026-08-28 09:00 | Макаревич А | 4h | 4h |
| 1850 | 5.16 | **проект новая дробилка** |  | 40.03d | 2026-08-21 09:00 A | 2026-10-06 09:15 |  | 17% | 33.37d | 111.56d |  |  |  | 144.25h | 24h |
| 1851 | 5.16.1 | **кабель для доп мощности** |  | 40.03d | 2026-08-21 09:00 A | 2026-10-06 09:15 |  | 17% | 33.37d | 111.56d |  |  |  | 144.25h | 24h |
| 1852 | 5.16.1.1 | составить ТЗ на монтаж кабеля |  | 3d | 2026-08-21 09:00 A | 2026-08-25 18:00 A |  | 100% |  |  |  | start no earlier than 2026-08-21 09:00 | Домоводов К | 24h | 24h |
| 1853 | 5.16.1.2 | получить КП / счет договор | milestone | 0d | 2026-09-09 09:00 | 2026-09-09 09:00 | 1852FS+2d |  |  | 111.56d | 0d | start no earlier than 2026-09-09 09:00 | Домоводов К |  |  |
| 1854 | 5.16.1.3 | предоплата |  | 15min | 2026-09-10 09:00 | 2026-09-10 09:15 | 1853FS+1d |  |  | 111.56d | 0d | start no earlier than 2026-08-10 08:00 | Домоводов К | 0.25h |  |
| 1855 | 5.16.1.4 | монтаж |  | 15d | 2026-09-20 09:15 | 2026-10-06 09:15 | 1854FS+10d |  |  | 111.56d |  | start no earlier than 2026-08-10 08:00 | Подрядчик | 120h |  |

| ID | WBS | Task | Type | Duration | Start | Finish | Predecessors | Complete | Remaining | Total slack | Free slack | Constraint | Resources | Work | Actual work |
| --- | --- | --- | --- | --- | --- | --- | --- | --- | --- | --- | --- | --- | --- | --- | --- |
| 1856 | 5.17 | **монтаж вода в 5ц** |  | 36.75d | 2026-08-10 08:00 A | 2026-09-22 16:00 |  | 80% | 7.18d | 123.84d |  |  |  | 128.08h | 106h |
| 1857 | 5.17.1 | Подключение греющего кабеля |  | 3h | 2026-09-16 09:00 A | 2026-09-16 12:00 A |  | 100% |  |  |  | start no earlier than 2026-09-16 09:00 | Некрасов А; Труфанов А | 6h | 6h |
| 1858 | 5.17.2 | подклюючить воду на прямую |  | 2h | 2026-09-14 09:00 A | 2026-09-14 11:00 A |  | 100% |  |  |  | start no earlier than 2026-09-15 09:00 | Тимофеев В | 2h | 2h |
| 1859 | 5.17.3 | Все доделать/подключить |  | 6h | 2026-09-18 09:00 A | 2026-09-18 16:00 A |  | 100% |  |  |  | start no earlier than 2026-09-18 09:00 | Труфанов А; Некрасов А | 12h | 12h |
| 1860 | 5.17.4 | установить в конце линии расширительный бак / защита от гидроудара |  | 2h | 2026-09-21 09:00 A | 2026-09-21 11:00 A |  | 100% |  |  |  | start no earlier than 2026-09-21 09:00 | Труфанов А; Некрасов А | 4h | 4h |
| 1861 | 5.17.5 | Установка точек воды для пожврного гидранта и набора воды для поломоечной машинки цех 3,4,5а и 5 |  | 6h | 2026-09-22 09:00 A | 2026-09-22 16:00 A |  | 100% |  |  |  | start no earlier than 2026-09-22 09:00 | Труфанов А; Некрасов А | 12h | 12h |
| 1862 | 5.17.6 | переключение линии "без бачка" |  | 2h | 2026-09-22 09:00 A | 2026-09-22 11:00 A | 1860 | 100% |  |  |  | start no earlier than 2026-09-22 09:00 | Труфанов А; Некрасов А | 4h | 4h |
| 1863 | 5.17.7 | тестирование системы |  | 2h | 2026-09-21 09:00 A | 2026-09-21 11:00 A | 1862 | 100% |  |  |  | start no earlier than 2026-09-18 08:00 | Труфанов А; Некрасов А | 4h | 4h |
| 1864 | 5.17.8 | выяснить возможность обмена тройников 1+1/4-1/2 на 3/4-1/2 |  | 15min | 2026-09-21 09:00 A | 2026-09-21 09:15 A |  | 100% |  |  |  | start no earlier than 2026-09-21 09:00 | Зорькин В | 0.25h | 0.25h |
| 1865 | 5.17.9 | Прокнуть греющий кабель | manual | 3h | 2026-09-16 09:00 A | 2026-09-16 12:00 A |  | 100% |  |  |  |  | Некрасов А; Труфанов А | 6h | 6h |
| 1866 | 5.17.10 | **монтаж трассы по 3ц** |  | 4.5d | 2026-08-11 09:00 A | 2026-08-17 13:00 A |  | 100% |  |  |  |  |  | 16.5h | 16.5h |
| 1867 | 5.17.10.1 | заявка хомуты сантех - получить дату поставки |  | 15min | 2026-08-11 09:00 A | 2026-08-11 09:15 A |  | 100% |  |  |  | start no earlier than 2026-08-11 09:00 | Домоводов К | 0.25h | 0.25h |
| 1868 | 5.17.10.2 | контроль доставки |  | 15min | 2026-08-14 09:15 A | 2026-08-14 09:30 A | 1867FS+3d | 100% |  |  |  | start no earlier than 2026-08-10 08:00 | Зорькин В | 0.25h | 0.25h |
| 1869 | 5.17.10.3 | монтаж продложть |  | 4h | 2026-08-14 09:30 A | 2026-08-14 14:30 A | 1868 | 100% |  |  |  | start no earlier than 2026-08-10 08:00 | Некрасов А; Бундин В | 8h | 8h |
| 1870 | 5.17.10.4 | монтаж продложть |  | 4h | 2026-08-17 09:00 A | 2026-08-17 13:00 A | 1868 | 100% |  |  |  | start no earlier than 2026-08-17 09:00 | Некрасов А; Бобренок В | 8h | 8h |
| 1871 | 5.17.11 | **монтаж труба в земле между 3 и 4ц** |  | 30.75d | 2026-08-10 08:00 A | 2026-09-16 16:00 |  | 66% | 10.39d | 129.84d |  |  |  | 19.08h | 15h |
| 1872 | 5.17.11.1 | монтаж ф32 в ф40 |  | 4h | 2026-08-10 08:00 A | 2026-08-10 13:00 A |  | 100% |  |  |  | start no earlier than 2026-08-10 08:00 | Некрасов А; Макаревич А | 8h | 8h |
| 1873 | 5.17.11.2 | заявка греющий кабель внтуреннего монтажа + |  | 1h | 2026-08-11 09:00 A | 2026-08-11 10:00 A | 1872 | 100% |  |  |  | start no earlier than 2026-08-11 09:00 | Домоводов К | 1h | 1h |
| 1874 | 5.17.11.3 | заявка защита УЗО |  | 1h | 2026-08-24 09:00 | 2026-08-24 10:00 |  |  |  | 150.46d | 4.88d | start no earlier than 2026-08-24 09:00 | Зорькин В | 1h |  |
| 1875 | 5.17.11.4 | контоль доставка |  | 5min | 2026-08-31 09:00 | 2026-08-31 09:05 | 1873FS+5d, 1874 |  |  | 145.58d |  | start no earlier than 2026-08-31 09:00 | Зорькин В | 0.08h |  |
| 1876 | 5.17.11.5 | монтаж кабеля |  | 3h | 2026-09-16 12:00 A | 2026-09-16 16:00 A | 1875FS+1d, 1857 | 100% |  |  |  | start no earlier than 2026-09-16 09:00 | Некрасов А; Макаревич А | 6h | 6h |
| 1877 | 5.17.11.6 | монтаж щиток кабеля с УЗО |  | 3h | 2026-09-14 09:00 | 2026-09-14 12:00 |  |  |  | 132.22d |  | start no earlier than 2026-09-14 09:00 | Дедов В | 3h |  |
| 1878 | 5.17.12 | **монтаж трассы по воздуху м/д 4 и 5А** |  | 9.5d | 2026-08-11 09:00 A | 2026-08-24 13:00 |  | 24% | 7.24d | 150.09d |  |  |  | 9.25h | 1.25h |
| 1879 | 5.17.12.1 | подготовка материал |  | 1h | 2026-08-11 09:00 A | 2026-08-11 10:00 A |  | 100% |  |  |  | start no earlier than 2026-08-11 09:00 | Некрасов А; Макаревич А | 1h | 1h |
| 1880 | 5.17.12.2 | контроль поставки рым 10 |  | 15min | 2026-08-21 09:00 A | 2026-08-21 09:15 A |  | 100% |  |  |  | start no earlier than 2026-08-21 09:00 | Зорькин В | 0.25h | 0.25h |
| 1881 | 5.17.12.3 | монтаж |  | 4h | 2026-08-24 09:00 | 2026-08-24 13:00 | 1880 |  |  | 150.09d |  | start no earlier than 2026-08-24 09:00 | Некрасов А; Тимофеев В | 8h |  |
| 1882 | 5.17.13 | монтаж щиток греющего кабеля по воздуху |  | 4h | 2026-09-16 09:00 A | 2026-09-16 13:00 A |  | 100% |  |  |  | start no earlier than 2026-09-16 09:00 | Труфанов А | 4h | 4h |
| 1883 | 5.17.14 | монтаж трассы по 4ц |  | 6h | 2026-08-18 09:00 A | 2026-08-18 16:00 A | 1868 | 100% |  |  |  | start no earlier than 2026-08-18 09:00 | Некрасов А; Макаревич А | 11h | 11h |
| 1884 | 5.17.15 | монтаж трассы по 5ц |  | 4h | 2026-08-19 09:00 A | 2026-08-19 13:00 A | 1883 | 100% |  |  |  | start no earlier than 2026-08-19 09:00 | Некрасов А; Макаревич А | 8h | 8h |
| 1885 | 5.17.16 | монтаж трассы по 5ц |  | 6h | 2026-08-24 09:00 | 2026-08-24 16:00 | 1883 |  |  | 149.84d |  | start no earlier than 2026-08-24 09:00 | Некрасов А; Макаревич А | 10h |  |

| ID | WBS | Task | Type | Duration | Start | Finish | Predecessors | Complete | Remaining | Actual finish | Total slack | Constraint | Resources | Work | Actual work |
| --- | --- | --- | --- | --- | --- | --- | --- | --- | --- | --- | --- | --- | --- | --- | --- |
| 1886 | 5.18 | **монтаж тепловые пушки подвесные 5 цех** |  | 51d | 2026-08-21 09:00 A | 2026-10-20 18:00 |  | 36% | 32.64d |  | 100.59d |  |  | 41h | 9h |
| 1887 | 5.18.1 | составить схему монтажа |  | 4h | 2026-08-26 09:00 A | 2026-08-26 13:00 A |  | 100% |  |  |  | start no earlier than 2026-08-26 09:00 | Зорькин В | 4h | 4h |
| 1888 | 5.18.2 | заявка на тепловые пушки вулкан |  | 2h | 2026-08-21 09:00 A | 2026-08-21 11:00 A |  | 100% |  |  |  | start no earlier than 2026-08-21 09:00 | Зорькин В | 2h | 2h |
| 1889 | 5.18.3 | контроль остатки нерж труба, фтинги |  | 2h | 2026-09-07 09:00 A | 2026-09-07 11:00 A | 1888 | 100% |  |  |  | start no earlier than 2026-09-07 09:00 | Зорькин В | 2h | 2h |
| 1890 | 5.18.4 | контроль доставки |  | 1h | 2026-09-21 09:00 A | 2026-09-21 10:00 A | 1889FS+7d | 100% |  |  |  | start no earlier than 2026-09-21 09:00 | Зорькин В | 1h | 1h |
| 1891 | 5.18.5 | монтаж |  | 2d | 2026-10-19 09:00 | 2026-10-20 18:00 | 1890FS+1d |  |  |  | 100.59d | start no earlier than 2026-10-19 09:00 | Некрасов А; Труфанов А | 32h |  |
| 1892 | 5.19 | замена светильника перегоревшего у Большакова в кабинете |  | 2h | 2026-08-06 09:00 A | 2026-08-06 11:00 A |  | 100% |  |  |  | start no earlier than 2026-08-07 09:00 | Труфанов А | 2h | 2h |
| 1893 | 5.20 | устранить утечку воды в душе |  | 1h | 2026-08-06 09:00 A | 2026-08-06 10:00 A |  | 100% |  |  |  | start no earlier than 2026-08-06 08:00 | Бундин В | 1h | 1h |
| 1894 | 5.21 | **установить унитаз на 3 этаже** |  | 3.38d? | 2026-08-04 09:00 A | 2026-08-07 12:00 A |  | 100% |  |  |  |  | Бобренок В | 38h | 38h |
| 1895 | 5.21.1 | заказать гофру и гибкую вставку |  | 1d? | 2026-08-04 09:00 A | 2026-08-04 18:00 A |  | 100% |  |  |  | start no earlier than 2026-08-04 08:00 | Шуранов Ю | 8h | 8h |
| 1896 | 5.21.2 | установка унитаза (гофротруба и гибкая подводка и коронка у Большакова) коронку вернуть Большакову |  | 3h | 2026-08-07 09:00 A | 2026-08-07 12:00 A |  | 100% |  |  |  | start no earlier than 2026-08-07 09:00 | Труфанов А | 3h | 3h |
| 1897 | 5.22 | монтаж свет в туалете 3 этаж (оператора дадут в помощь) | manual | 6h | 2026-08-09 09:00 A | 2026-08-09 16:00 A |  | 100% |  |  |  | start no earlier than 2026-08-09 09:00 | Бобренок В | 6h | 6h |
| 1898 | 5.23 | прикрутить смотровые окна на дробилке, не хватает саморезов- просыпается сырье |  | 1h | 2026-08-02 09:00 A | 2026-08-03 10:00 A |  | 100% |  |  |  | start no earlier than 2026-08-02 09:00 | Макаревич А | 1h | 1h |
| 1899 | 5.24 | сборка ограничиетелей на сетку №2 для сито из лазера |  | 4h | 2026-07-17 09:00 A | 2026-07-17 13:00 A |  | 100% |  |  |  | start no earlier than 2026-07-17 09:00 | Макаревич А | 4h | 4h |
| 1900 | 5.25 | ремонт сетки, хомуты с 5ц |  | 2h | 2026-07-15 09:00 A | 2026-07-15 11:00 A |  | 100% |  |  |  | start no earlier than 2026-07-15 09:00 | Бундин В | 2h | 2h |
| 1901 | 5.26 | вырезать сетку 2мм на большую дробилку |  | 2h | 2026-07-15 09:00 A | 2026-07-15 11:00 A |  | 100% |  |  |  | start no earlier than 2026-07-15 09:00 | Бобренок В | 2h | 2h |
| 1902 | 5.27 | заменаить ножи на мал дробилке |  | 6h | 2026-07-06 08:00 A | 2026-07-06 16:00 A |  | 100% |  |  |  | start no earlier than 2026-07-06 08:00 | Дедов В | 6h | 6h |
| 1903 | 5.28 | заварить хомут от деко 5 ц. в слесарке |  | 2h | 2026-07-11 09:00 A | 2026-07-13 11:00 A |  | 100% |  |  |  | start no earlier than 2026-07-11 09:00 | Макаревич А | 2h | 2h |
| 1904 | 5.29 | Дефектовка кнопок растаривателя, ремонт, клинит кнопку |  | 30min | 2026-07-06 08:00 A | 2026-07-06 09:30 A |  | 100% |  |  |  | start no earlier than 2026-07-06 08:00 | Дедов В | 0.5h | 0.5h |
| 1905 | 5.30 | сито просечка с лазера - доплнить 4шт до 6-8 уголоков ограничителей. |  | 2h | 2026-06-26 08:00 A | 2026-06-26 11:00 A |  | 100% |  |  |  | start no earlier than 2026-06-26 08:00 | Макаревич А | 2h | 2h |
| 1906 | 5.31 | просечки нерж. наварить уголки, чтобы не падало внутрь |  | 2h | 2026-06-25 08:00 A | 2026-06-25 11:00 A |  | 100% |  |  |  | start no earlier than 2026-06-25 08:00 | Макаревич А | 2h | 2h |
| 1907 | 5.32 | на поворотную кнопку реверса шнека №1 установить бокс (взять на складе) |  | 1h | 2026-06-24 09:00 A | 2026-06-24 10:00 A |  | 100% |  |  |  | start no earlier than 2026-06-24 09:00 | Труфанов А | 1h | 1h |
| 1908 | 5.33 | развернуть ножи на большой дробилке, если не успеваем передаем по смене |  | 3h | 2026-06-23 08:00 A | 2026-06-23 12:00 A |  | 100% |  |  |  | start no earlier than 2026-06-23 08:00 | Труфанов А; Макаревич А | 6h | 6h |
| 1909 | 5.34 | **протянуть все болтовые соединения: шиберы растаривателей, металлоконструкции под бункера и т.д. если нет болта - прикручиваем** |  | 3h? | 2026-06-23 09:00 A | 2026-06-23 12:00 |  | 100% |  | 2026-06-23 18:00 |  |  | Труфанов А | 11h | 11h |
| 1910 | 5.34.1 | заказать краску |  | 1d? | 2026-06-23 09:00 A | 2026-06-23 18:00 A |  | 100% |  |  |  | start no earlier than 2026-06-23 08:00 | Шуранов Ю | 8h | 8h |
| 1911 | 5.35 | проверить откуда гайку нашли на магните, растариватель-дробилка -шнеки -крепление магнитов |  | 1h | 2026-06-22 09:00 A | 2026-06-22 10:00 A |  | 100% |  |  |  | start no earlier than 2026-06-22 08:00 | Бундин В | 1h | 1h |

| ID | WBS | Task | Duration | Start | Finish | Predecessors | Complete | Remaining | Total slack | Free slack | Constraint | Resources | Work | Actual work |
| --- | --- | --- | --- | --- | --- | --- | --- | --- | --- | --- | --- | --- | --- | --- |
| 1912 | 5.36 | **закрепить штурвал на растаривателе 1** | 1d? | 2026-06-23 09:00 A | 2026-06-23 18:00 A |  | 100% |  |  |  |  | Бундин В | 16h | 16h |
| 1913 | 5.36.1 | заказываем растариватель | 1d? | 2026-06-23 09:00 A | 2026-06-23 18:00 A |  | 100% |  |  |  | start no earlier than 2026-06-23 09:00 | Шуранов Ю | 8h | 8h |
| 1914 | 5.37 | заварить просеиватель ближе к стеллажам и на правом (расскажу как) | 3h | 2026-06-11 09:00 A | 2026-06-11 12:00 A |  | 100% |  |  |  | start no earlier than 2026-06-11 09:00 | Бундин В | 3h | 3h |
| 1915 | 5.38 | ремонт просечку с вибросито, передать в 5ц | 2h | 2026-06-12 09:00 A | 2026-06-12 11:00 A |  | 100% |  |  |  | start no earlier than 2026-06-12 09:00 | Бундин В | 2h | 2h |
| 1916 | 5.39 | ремонт хомут с вибросито | 2h | 2026-06-05 09:00 A | 2026-06-05 11:00 A |  | 100% |  |  |  | start no earlier than 2026-06-05 08:00 | Бундин В | 2h | 2h |
| 1917 | 5.40 | заварить хомут от деко 5 ц. в слесарке | 2h | 2026-07-14 09:00 A | 2026-07-14 11:00 A |  | 100% |  |  |  | start no earlier than 2026-07-14 09:00 | Бундин В | 2h | 2h |
| 1918 | 5.41 | **востановить коробку тельфера** | 181.25d | 2026-06-04 09:00 A | 2027-02-02 11:00 |  | 59% | 74.28d | 26.34d |  |  |  | 5.08h | 3h |
| 1919 | 5.41.1 | найти производителя тельфера и выяснить марку коробку / найти в продаже подходящий артикул | 2h | 2026-06-04 09:00 A | 2026-06-04 11:00 A |  | 100% |  |  |  | start no earlier than 2026-06-04 09:00 | Шуранов Ю | 2h | 2h |
| 1920 | 5.41.2 | заявка | 1h | 2026-06-05 09:00 A | 2026-06-05 10:00 A |  | 100% |  |  |  | start no earlier than 2026-06-05 09:00 | Шуранов Ю | 1h | 1h |
| 1921 | 5.41.3 | доставка контроль | 5min | 2026-09-18 09:00 | 2026-09-18 09:05 |  |  |  | 128.33d | 101.99d | start no earlier than 2026-09-18 09:00 | Домоводов К | 0.08h |  |
| 1922 | 5.41.4 | замена | 2h | 2027-02-02 09:00 | 2027-02-02 11:00 | 1921 |  |  | 26.34d |  | start no earlier than 2027-02-02 09:00 | Некрасов А | 2h |  |
| 1923 | 5.42 | замена пускатель тельфер 24дц / найти/изготовить + установить крышку контакторов / доработать крепеж кабеля к тросу | 1h | 2026-05-27 09:00 A | 2026-05-27 10:00 A |  | 100% |  |  |  | start no earlier than 2026-05-27 09:00 | Некрасов А; Бундин В | 2h | 2h |
| 1924 | 5.43 | проверка всех банок АКБ штабелера / замена неисправных | 2h | 2026-05-30 09:00 A | 2026-06-01 11:00 A |  | 100% |  |  |  | start no earlier than 2026-05-30 09:00 | Бобренок В | 2h | 2h |
| 1925 | 5.44 | посмотреть что с тельфером на дробилке | 1h | 2026-05-26 09:00 A | 2026-05-26 10:00 A |  | 100% |  |  |  | start no earlier than 2026-05-26 09:00 | Некрасов А | 1h | 1h |
| 1926 | 5.45 | приварить магниты на сито | 0.5h | 2026-05-26 09:00 A | 2026-05-26 09:30 A |  | 100% |  |  |  | start no earlier than 2026-05-26 09:00 | Некрасов А | 0.5h | 0.5h |
| 1927 | 5.46 | заварить растариватель №2 | 4h | 2026-05-25 08:00 A | 2026-05-25 13:00 A |  | 100% |  |  |  | start no earlier than 2026-05-25 08:00 | Тимофеев В; Некрасов А | 7h | 7h |
| 1928 | 5.47 | уложить красиво кабель в гофре зона дробилки | 1h | 2026-05-19 09:00 A | 2026-05-19 10:00 A |  | 100% |  |  |  | start no earlier than 2026-05-19 09:00 | Бундин В; Некрасов А | 2h | 2h |
| 1929 | 5.48 | заварить 2 просечки от сито и отправить все на 5 цех | 1h | 2026-05-19 09:00 A | 2026-05-19 10:00 A |  | 100% |  |  |  | start no earlier than 2026-05-19 09:00 | Бундин В | 1h | 1h |
| 1930 | 5.49 | сделать дублирующий пост (вкл. И выкл. Смесителя) на мезонине дробилки | 4h | 2026-05-18 08:00 A | 2026-05-18 13:00 A |  | 100% |  |  |  | start no earlier than 2026-05-18 08:00 | Дедов В | 4h | 4h |
| 1931 | 5.50 | прошприцевать сам двигатель дробилки | 1h | 2026-05-19 09:00 A | 2026-05-19 10:00 A |  | 100% |  |  |  | start no earlier than 2026-05-19 09:00 | Некрасов А; Бундин В | 2h | 2h |
| 1932 | 5.51 | **сборка схемы блокировки дробилки при открытом люке** | 7.25d? | 2026-05-17 09:00 A | 2026-05-27 11:00 A |  | 100% |  |  |  |  |  | 17h | 17h |
| 1933 | 5.51.1 | монтаж кабель | 4h | 2026-05-17 09:00 A | 2026-05-18 13:00 A |  | 100% |  |  |  | start no earlier than 2026-05-17 09:00 | Макаревич А | 4h | 4h |
| 1934 | 5.51.2 | сборка схема | 2h | 2026-05-27 09:00 A | 2026-05-27 11:00 A | 1933 | 100% |  |  |  | start no earlier than 2026-05-27 09:00 | Дедов В | 2h | 2h |
| 1935 | 5.51.3 | заказать концевики | 1d? | 2026-05-25 09:00 A | 2026-05-25 18:00 A |  | 100% |  |  |  | start no earlier than 2026-05-25 08:00 | Шуранов Ю | 8h | 8h |
| 1936 | 5.51.4 | доделать схему блокировки- концевики LA167-Z8/122 на складе | 3h | 2026-05-26 09:00 A | 2026-05-26 12:00 A |  | 100% |  |  |  | start no earlier than 2026-05-26 09:00 | Дедов В | 3h | 3h |
| 1937 | 5.52 | проверка центровки мотора после замены подшипнка + замена подшипник задний | 4h | 2026-05-12 08:00 A | 2026-05-12 13:00 A |  | 100% |  |  |  | start no earlier than 2026-05-12 08:00 | Тимофеев В; Бобренок В | 8h | 8h |
| 1938 | 5.53 | заварить сито | 2h | 2026-05-08 08:00 A | 2026-05-08 11:00 A |  | 100% |  |  |  | start no earlier than 2026-05-08 08:00 | Макаревич А | 2h | 2h |
| 1939 | 5.54 | закрепить штурвал, чтобы не болтался на растаривателе 1 | 1h | 2026-05-08 08:00 A | 2026-05-08 10:00 A |  | 100% |  |  |  | start no earlier than 2026-05-08 08:00 | Макаревич А | 1h | 1h |
| 1940 | 5.55 | посмотреть компрессор (если проблема в предохранителе- то взять у меня на столе)пароль8989 | 1h | 2026-05-08 08:00 A | 2026-05-08 10:00 A |  | 100% |  |  |  | start no earlier than 2026-05-08 08:00 | Дедов В | 1h | 1h |
| 1941 | 5.56 | проверить на 2х котлах давление в системе отопления- где нужно долить воды. И слить воду система отопления 5а цех | 2h | 2026-05-06 08:00 A | 2026-05-06 11:00 A |  | 100% |  |  |  | start no earlier than 2026-05-06 08:00 | Бобренок В | 2h | 2h |

| ID | WBS | Task | Type | Duration | Start | Finish | Predecessors | Complete | Actual start | Actual finish | Total slack | Constraint | Resources | Work | Actual work |
| --- | --- | --- | --- | --- | --- | --- | --- | --- | --- | --- | --- | --- | --- | --- | --- |
| 1942 | 5.57 | **ремонт сито (попробовать заклеить эпоксидкой) / ремонт у производсителя** |  | 13d | 2026-05-13 09:00 A | 2026-05-29 18:00 A |  | 100% |  |  |  |  |  | 0.75h | 0.75h |
| 1943 | 5.57.1 | отправить сито на ремонт производителю |  | 30min | 2026-05-13 09:00 A | 2026-05-13 09:30 A |  | 100% |  |  |  | start no earlier than 2026-05-13 09:00 | Шуранов Ю | 0.5h | 0.5h |
| 1944 | 5.57.2 | контроль доставки |  | 15min | 2026-05-29 17:45 A | 2026-05-29 18:00 A | 1943SF+15d | 100% |  |  |  | start no earlier than 2026-05-12 08:00 | Шуранов Ю | 0.25h | 0.25h |
| 1945 | 5.58 | зачистить приемный бункер после дробилке болгаркой |  | 1h | 2026-04-30 08:00 A | 2026-04-30 10:00 A |  | 100% |  |  |  | start no earlier than 2026-04-30 08:00 | Дедов В | 1h | 1h |
| 1946 | 5.59 | **ремонт стиральной машинки / шум подшипника** |  | 1d? | 2026-04-27 09:00 | 2026-04-27 18:00 |  |  |  |  | 234.59d |  |  | 8h |  |
| 1947 | 5.59.1 | договор |  | 1d? | 2026-04-27 09:00 | 2026-04-27 18:00 |  |  |  |  | 234.59d | start no earlier than 2026-04-27 08:00 | Шуранов Ю | 8h |  |
| 1948 | 5.60 | **ремонт утечки с системы отопления** |  | 1.12d | 2026-05-04 09:00 | 2026-05-05 10:00 |  | 100% | 2026-05-07 09:00 | 2026-05-08 10:00 |  |  |  | 10h | 10h |
| 1949 | 5.60.1 | слив воды |  | 4h | 2026-05-07 09:00 A | 2026-05-07 13:00 A |  | 100% |  |  |  | start no earlier than 2026-05-07 09:00 | Макаревич А | 4h | 4h |
| 1950 | 5.60.2 | ремонт утечки |  | 2h | 2026-05-07 13:00 A | 2026-05-07 16:00 A | 1949 | 100% |  |  |  | start no earlier than 2026-04-27 08:00 | Макаревич А | 2h | 2h |
| 1951 | 5.60.3 | заправить воду / опресовать |  | 4h | 2026-05-07 15:00 A | 2026-05-08 10:00 A | 1950 | 100% |  |  |  | start no earlier than 2026-04-27 08:00 | Макаревич А | 4h | 4h |
| 1952 | 5.61 | долить в систему отопления воды цех 5а, электрокотел не включаем. Работаем на газ котле |  | 1h | 2026-04-24 09:00 A | 2026-04-24 10:00 A |  | 100% |  |  |  | start no earlier than 2026-04-24 08:00 | Бундин В | 1h | 1h |
| 1953 | 5.62 | вывезти шнек на синий склад |  | 1h | 2026-04-23 09:00 A | 2026-04-23 10:00 A |  | 100% |  |  |  | start no earlier than 2026-04-24 09:00 | Бобренок В; Тимофеев В | 2h | 2h |
| 1954 | 5.63 | взять на зажима для троса на складе и натянуть трос на воротах 5а |  | 2h | 2026-04-25 09:00 A | 2026-04-27 11:00 A |  | 100% |  |  |  | start no earlier than 2026-04-25 09:00 | Макаревич А | 2h | 2h |
| 1955 | 5.64 | убавить температуры на газ котлах |  | 1h | 2026-04-24 09:00 A | 2026-04-24 10:00 A |  | 100% |  |  |  | start no earlier than 2026-04-24 09:00 | Шуранов Ю | 1h | 1h |
| 1956 | 5.65 | заварить сито и хомуты |  | 1h | 2026-04-24 09:00 A | 2026-04-24 10:00 A |  | 100% |  |  |  | start no earlier than 2026-04-24 09:00 | Тимофеев В | 1h | 1h |
| 1957 | 5.66 | проверка вибросит детальный осмотр с полной разборкой / ремонт трещин |  | 4h | 2026-04-21 09:00 A | 2026-04-21 13:00 A |  | 100% |  |  |  | start no earlier than 2026-04-21 09:00 | Бундин В | 4h | 4h |
| 1958 | 5.67 | протяжка анкеров стеллажей, болтается |  | 2h | 2026-04-20 09:00 A | 2026-04-20 11:00 A |  | 100% |  |  |  | start no earlier than 2026-04-20 09:00 | Макаревич А | 2h | 2h |
| 1959 | 5.68 | замена потускневших ламп в инсекютере. Мастеру сообщить кол-во. б/у складывать в коробку |  | 2h | 2026-05-06 09:00 A | 2026-05-06 11:00 A |  | 100% |  |  |  | start no earlier than 2026-05-06 09:00 | Бобренок В | 2h | 2h |
| 1960 | 5.69 | переворачиваем молотки дробилка |  | 4h | 2026-04-15 09:00 A | 2026-04-15 13:00 A |  | 100% |  |  |  | start no earlier than 2026-04-17 08:00 | Макаревич А; Тимофеев В | 8h | 8h |
| 1961 | 5.70 | завершить работы по примыканию к кровли 5А (излишки изоспан) |  | 1d? | 2026-06-19 09:00 | 2026-06-19 18:00 |  |  |  |  | 195.59d | start no earlier than 2026-06-19 09:00 | Олег | 8h |  |
| 1962 | 5.71 | монтаж тамбур для завоза навесок |  | 10d | 2026-04-16 09:00 | 2026-04-29 18:00 |  |  |  |  | 232.59d | start no earlier than 2026-04-16 08:00 | Некрасов А; Олег | 160h |  |
| 1963 | 5.72 | вырезать верхушку еврокуба возле мусорки, будет туда засыпать отсев для дворника | manual | 1h | 2026-04-18 09:00 A | 2026-04-18 10:00 A |  | 100% |  |  |  | start no earlier than 2026-04-18 09:00 | Макаревич А | 1h | 1h |
| 1964 | 5.73 | заварить хомуты и сетки от сито |  | 1h | 2026-04-14 09:00 A | 2026-04-14 10:00 A |  | 100% |  |  |  | start no earlier than 2026-04-14 08:00 | Труфанов А | 1h | 1h |
| 1965 | 5.74 | проверить дист. Воду на штабелере, если нужно долить (фото модели акб) |  | 1h | 2026-04-13 09:00 A | 2026-04-13 10:00 A |  | 100% |  |  |  | start no earlier than 2026-04-13 08:00 | Бундин В | 1h | 1h |
| 1966 | 5.75 | установка шнека отремонтированного обратно на дробилку |  | 6h | 2026-04-21 09:00 A | 2026-04-21 16:00 A |  | 100% |  |  |  | start no earlier than 2026-04-21 09:00 | Некрасов А; Труфанов А | 12h | 12h |
| 1967 | 5.76 | установка бойлера отремонтированного в туалет, а с туалета на 2 этаж, мастер выделит человека в помощь |  | 4h | 2026-04-13 09:00 A | 2026-04-13 13:00 A |  | 100% |  |  |  | start no earlier than 2026-04-13 09:00 | Труфанов А | 4h | 4h |
| 1968 | 5.77 | замена паука на расстаривателе- высокие бэги не могут поднять до конца |  | 1h | 2026-04-10 08:00 A | 2026-04-10 10:00 A |  | 100% |  |  |  | start no earlier than 2026-04-10 08:00 | Тимофеев В | 1h | 1h |

| ID | WBS | Task | Type | Duration | Start | Finish | Predecessors | Complete | Actual start | Actual finish | Constraint | Resources | Work | Actual work |
| --- | --- | --- | --- | --- | --- | --- | --- | --- | --- | --- | --- | --- | --- | --- |
| 1969 | 5.78 | **получить насос Wilo, установить на 1 газовый котел** |  | 0.12d | 2026-04-10 09:00 A | 2026-04-10 10:00 A |  | 100% |  |  |  | Бундин В | 2h | 2h |
| 1970 | 5.78.1 | проверить направление подачи воды, посмотреть по аналогии 2 котла |  | 1h | 2026-04-10 09:00 A | 2026-04-10 10:00 A |  | 100% |  |  | start no earlier than 2026-04-10 09:00 | Тимофеев В | 1h | 1h |
| 1971 | 5.79 | ремот сеток с сито |  | 2h | 2026-04-06 09:00 A | 2026-04-06 11:00 A |  | 100% |  |  | start no earlier than 2026-04-06 08:00 | Труфанов А | 2h | 2h |
| 1972 | 5.80 | на выходах из сито №1 и №2 установить сетки с бортиками |  | 2h | 2026-04-06 09:00 A | 2026-04-06 11:00 A |  | 100% |  |  | start no earlier than 2026-04-06 08:00 | Труфанов А | 2h | 2h |
| 1973 | 5.81 | сыпит сырье с дробилки (вход) |  | 2h | 2026-06-15 09:00 A | 2026-06-15 11:00 A |  | 100% |  |  | start no earlier than 2026-06-13 09:00 | Некрасов А; Труфанов А | 4h | 4h |
| 1974 | 5.82 | востановить ручной штурвал заслонки на растаривателе дробилки |  | 1h | 2026-04-02 08:00 A | 2026-04-02 10:00 A |  | 100% |  |  | start no earlier than 2026-04-02 08:00 | Бобренок В | 1h | 1h |
| 1975 | 5.83 | изготовить штурвал заслонки на растариватель вибросита у стены |  | 2h | 2026-04-13 09:00 A | 2026-04-13 11:00 A |  | 100% |  |  | start no earlier than 2026-04-13 09:00 | Труфанов А | 2h | 2h |
| 1976 | 5.84 | монтаж отбойников | manual | 6h | 2026-04-18 09:00 A | 2026-04-18 16:00 A |  | 100% |  |  | start no earlier than 2026-04-18 09:00 | Бобренок В | 6h | 6h |
| 1977 | 5.85 | **ремонт шкаф управления шнеком 1 растариватель (замена щитка взять на складе)** |  | 13.5d? | 2026-04-21 09:00 | 2026-05-07 13:00 |  | 100% | 2026-04-17 09:00 | 2026-04-29 09:30 |  |  | 91.75h | 91.75h |
| 1978 | 5.85.1 | вывод кнопки управления частотником на ШУ (если нужно замена частотника) с мастером согласовать остановку |  | 5h | 2026-04-20 09:00 A | 2026-04-20 15:00 A |  | 100% |  |  | start no earlier than 2026-04-20 09:00 | Дедов В | 5h | 5h |
| 1979 | 5.85.2 | установить кнопочный пост |  | 2h | 2026-04-21 09:00 A | 2026-04-21 11:00 A |  | 100% |  |  | start no earlier than 2026-04-21 09:00 | Дедов В | 2h | 2h |
| 1980 | 5.85.3 | заявка кнопка SB7 |  | 15min | 2026-04-21 09:00 A | 2026-04-21 09:15 A |  | 100% |  |  | start no earlier than 2026-04-21 09:00 | Зорькин В | 0.25h | 0.25h |
| 1981 | 5.85.4 | доставка |  | 5d | 2026-04-21 09:15 A | 2026-04-28 09:15 A | 1980 | 100% |  |  | start no earlier than 2026-04-20 08:00 | Карабанов | 40h | 40h |
| 1982 | 5.85.5 | замена |  | 1h | 2026-04-27 09:15 A | 2026-04-27 10:15 A | 1981 | 100% |  |  | start no earlier than 2026-04-20 08:00 | Дедов В | 1h | 1h |
| 1983 | 5.85.6 | ремонт корпус |  | 1h | 2026-04-17 09:00 A | 2026-04-17 10:00 A | 1978 | 100% |  |  | start no earlier than 2026-04-09 09:00 | Труфанов А | 1h | 1h |
| 1984 | 5.85.7 | **замена корпус** |  | 6.06d | 2026-04-21 09:00 A | 2026-04-29 09:30 A |  | 100% |  |  |  |  | 42.5h | 42.5h |
| 1985 | 5.85.7.1 | заявка |  | 30min | 2026-04-21 09:00 A | 2026-04-21 09:30 A |  | 100% |  |  | start no earlier than 2026-03-31 08:00 | Зорькин В | 0.5h | 0.5h |
| 1986 | 5.85.7.2 | доставка |  | 5d | 2026-04-21 09:30 A | 2026-04-29 09:30 A | 1985 | 100% |  |  | start no earlier than 2026-03-31 08:00 | Карабанов | 40h | 40h |
| 1987 | 5.85.7.3 | замена |  | 2h | 2026-04-28 09:30 A | 2026-04-28 11:30 A | 1986 | 100% |  |  | start no earlier than 2026-04-14 09:00 | Тимофеев В | 2h | 2h |
| 1988 | 5.86 | получить фланец на складе NMRV040 и установить мотор-редуктор на расстаривателе №1 |  | 2h | 2026-04-28 09:00 A | 2026-04-28 11:00 A |  | 100% |  |  | start no earlier than 2026-04-28 09:00 | Бундин В | 2h | 2h |
| 1989 | 5.87 | убрать красный скотч везде в дробилке, сделать крепление фильтра с малой дробилки на ленточный хомут |  | 3h | 2026-03-27 09:00 A | 2026-03-27 12:00 A |  | 100% |  |  | start no earlier than 2026-03-27 08:00 | Труфанов А | 3h | 3h |
| 1990 | 5.88 | ремонт вибросито |  | 4h | 2026-03-27 08:00 A | 2026-03-27 13:00 A |  | 100% |  |  | start no earlier than 2026-03-27 08:00 | Тимофеев В; Некрасов А | 7h | 7h |
| 1991 | 5.89 | заварить сито возле слесарки (2 шт) и деки 2 шт |  | 3h | 2026-03-26 09:00 A | 2026-03-26 12:00 A |  | 100% |  |  | start no earlier than 2026-03-26 08:00 | Труфанов А | 3h | 3h |
| 1992 | 5.90 | сделать отбойник на входную дверь |  | 1h | 2026-03-28 09:00 A | 2026-03-30 10:00 A |  | 100% |  |  | start no earlier than 2026-03-28 09:00 | Бундин В | 1h | 1h |
| 1993 | 5.91 | сделать трап в курилку |  | 3h | 2026-04-01 09:00 A | 2026-04-01 12:00 A |  | 100% |  |  | start no earlier than 2026-04-01 09:00 | Бундин В | 3h | 3h |
| 1994 | 5.92 | заварить бункер дробилки |  | 2h | 2026-03-24 09:00 A | 2026-03-24 11:00 A |  | 100% |  |  | start no earlier than 2026-03-24 09:00 | Некрасов А; Труфанов А | 4h | 4h |
| 1995 | 5.93 | перенос металл с торца стеллажа напротив ВРУ / на син склад |  | 1h | 2026-03-25 09:00 A | 2026-03-25 10:00 A |  | 100% |  |  | start no earlier than 2026-03-25 09:00 | Бобренок В | 1h | 1h |
| 1996 | 5.94 | пульт управления шибером растариватель правый демонтаж красный скотч / закрепить |  | 1h | 2026-03-22 09:00 A | 2026-03-23 10:00 A |  | 100% |  |  | start no earlier than 2026-03-22 09:00 | Бобренок В | 1h | 1h |
| 1997 | 5.95 | установить корпус на переключатель реверса шнек растаривателя правый / продуть от пыли контакты |  | 30min | 2026-03-22 09:00 A | 2026-03-23 09:30 A |  | 100% |  |  | start no earlier than 2026-03-22 09:00 | Бобренок В | 0.5h | 0.5h |
| 1998 | 5.96 | демонтаж розетки без крышки 2 этаж щиток в фае |  | 30min | 2026-03-25 09:00 A | 2026-03-25 09:30 A |  | 100% |  |  | start no earlier than 2026-03-25 09:00 | Бобренок В | 0.5h | 0.5h |
| 1999 | 5.97 | подлючить розетку для зарядки нового АКБ для штабелера Ц.5А |  | 2h | 2026-03-21 09:00 A | 2026-03-23 11:00 A |  | 100% |  |  | start no earlier than 2026-03-21 09:00 | Дедов В | 2h | 2h |

| ID | WBS | Task | Type | Duration | Start | Finish | Predecessors | Complete | Total slack | Free slack | Constraint | Resources | Work | Actual work |
| --- | --- | --- | --- | --- | --- | --- | --- | --- | --- | --- | --- | --- | --- | --- |
| 2000 | 5.98 | **ремонт шнек с дробилки** |  | 11.75d | 2026-03-17 09:00 A | 2026-04-01 16:00 A |  | 100% |  |  |  |  | 7h | 7h |
| 2001 | 5.98.1 | орг пескоструйка корпус шнека - отправить |  | 1h | 2026-03-17 09:00 A | 2026-03-17 10:00 A |  | 100% |  |  | start no earlier than 2026-03-17 08:00 | Шуранов Ю | 1h | 1h |
| 2002 | 5.98.2 | сборка шнека с ремонта |  | 6h | 2026-04-01 09:00 A | 2026-04-01 16:00 A | 2001 | 100% |  |  | start no earlier than 2026-04-01 09:00 | Некрасов А | 6h | 6h |
| 2003 | 5.99 | установить уплотнения на гофра без красн скотча |  | 4h | 2026-03-20 09:00 A | 2026-03-20 13:00 A |  | 100% |  |  | start no earlier than 2026-03-20 09:00 | Некрасов А; Труфанов А | 8h | 8h |
| 2004 | 5.100 | добавить воду в 4 газ. Котел проверить реальное давление в системе |  | 2h | 2026-03-19 08:00 A | 2026-03-19 11:00 A |  | 100% |  |  | start no earlier than 2026-03-19 08:00 | Бундин В | 2h | 2h |
| 2005 | 5.101 | сменить палярность вращения дробилки / сточило ножи |  | 1h | 2026-03-16 09:00 A | 2026-03-16 10:00 A |  | 100% |  |  | start no earlier than 2026-03-16 09:00 | Труфанов А; Некрасов А | 2h | 2h |
| 2006 | 5.102 | **устанвить ИБП на клапан газ** |  | 0.03d | 2026-03-16 09:00 A | 2026-03-16 09:15 A |  | 100% |  |  |  |  | 0.25h | 0.25h |
| 2007 | 5.102.1 | координация сроков выполнения с газовщиком |  | 15min | 2026-03-16 09:00 A | 2026-03-16 09:15 A |  | 100% |  |  | start no earlier than 2026-03-16 09:00 | Шуранов Ю | 0.25h | 0.25h |
| 2008 | 5.103 | **установить вентилятор с клапаном и фильтром** |  | 11.03d? | 2026-03-18 09:00 | 2026-04-02 09:15 |  |  | 252.56d |  |  |  | 88.25h |  |
| 2009 | 5.103.1 | получить сммету / счет |  | 15min | 2026-03-18 09:00 | 2026-03-18 09:15 |  |  | 252.56d | 0d | start no earlier than 2026-03-18 09:00 | Домоводов К | 0.25h |  |
| 2010 | 5.103.2 | изготовление поставка |  | 10d | 2026-03-18 09:15 | 2026-04-01 09:15 | 2009 |  | 252.56d | 0d | start no earlier than 2026-03-17 08:00 | оплот | 80h |  |
| 2011 | 5.103.3 | монтаж |  | 1d? | 2026-04-01 09:15 | 2026-04-02 09:15 | 2010 |  | 252.56d |  | start no earlier than 2026-03-17 08:00 | оплот | 8h |  |
| 2012 | 5.104 | закрыть отвертстие от демонтированной аспирации фильтротканью. Временно, до изг фильтра |  | 1h | 2026-03-13 08:00 A | 2026-03-13 10:00 A |  | 100% |  |  | start no earlier than 2026-03-13 08:00 | Дедов В | 1h | 1h |
| 2013 | 5.105 | **на отверстие от демонтированной оспирации установить фильтр** |  | 7.01d | 2026-03-20 09:00 A | 2026-03-31 09:05 A |  | 100% |  |  |  |  | 2.08h | 2.08h |
| 2014 | 5.105.1 | получить фильтры |  | 5min | 2026-03-31 09:00 A | 2026-03-31 09:05 A |  | 100% |  |  | start no earlier than 2026-03-31 09:00 | Шуранов Ю | 0.08h | 0.08h |
| 2015 | 5.105.2 | монтаж |  | 1h | 2026-03-20 09:00 A | 2026-03-20 10:00 A | 2014FS+1d | 100% |  |  | start no earlier than 2026-03-20 09:00 | Некрасов А; Труфанов А | 2h | 2h |
| 2016 | 5.106 | **устранить ржавчину шнека после дробилки** |  | 1d? | 2026-03-16 09:00 A | 2026-03-16 18:00 A |  | 100% |  |  |  |  | 16h | 16h |
| 2017 | 5.106.1 | полная разборка / зачистка / сборка |  | 1d? | 2026-03-16 09:00 A | 2026-03-16 18:00 A |  | 100% |  |  | start no earlier than 2026-03-16 09:00 | Труфанов А; Некрасов А | 16h | 16h |
| 2018 | 5.106.2 | согласовать чем можно покрыть шнек внутри | milestone | 0d | 2026-03-16 09:00 A | 2026-03-16 09:00 A |  | 100% |  |  | start no earlier than 2026-03-16 09:00 | Домоводов К |  |  |
| 2019 | 5.107 | заменаить гидро АКБ на насосной станции / замена мебраны и золотника |  | 2h | 2026-03-15 09:00 A | 2026-03-16 11:00 A |  | 100% |  |  | start no earlier than 2026-03-15 09:00 | Бундин В | 2h | 2h |
| 2020 | 5.108 | устарнить выдавливание материала с шнека №1 узел дробилки |  | 4h | 2026-03-13 09:00 A | 2026-03-13 13:00 A |  | 100% |  |  | start no earlier than 2026-03-13 09:00 | Тимофеев В; Бундин В | 8h | 8h |
| 2021 | 5.109 | проверить обр клапан бойлер в гардеробе. Стреляет |  | 30min | 2026-03-13 09:00 A | 2026-03-13 09:30 A |  | 100% |  |  | start no earlier than 2026-03-13 09:00 | Бундин В | 0.5h | 0.5h |
| 2022 | 5.110 | долить дистилят в АКБ штабелер свинцовый |  | 1h | 2026-03-11 09:00 A | 2026-03-11 10:00 A |  | 100% |  |  | start no earlier than 2026-03-11 09:00 | Макаревич А | 1h | 1h |
| 2023 | 5.111 | **замена бойлер туалет** |  | 16.25d | 2026-03-23 09:00 A | 2026-04-14 11:00 A |  | 100% |  |  |  |  | 82.25h | 82.25h |
| 2024 | 5.111.1 | заявка бойлер |  | 15min | 2026-03-23 09:00 A | 2026-03-23 09:15 A |  | 100% |  |  | start no earlier than 2026-03-23 09:00 | Шуранов Ю | 0.25h | 0.25h |
| 2025 | 5.111.2 | доставка |  | 10d | 2026-03-30 09:00 A | 2026-04-10 18:00 A | 2024 | 100% |  |  | start no earlier than 2026-03-29 09:00 | Карабанов | 80h | 80h |
| 2026 | 5.111.3 | монтаж |  | 2h | 2026-04-14 09:00 A | 2026-04-14 11:00 A | 2025 | 100% |  |  | start no earlier than 2026-03-12 08:00 | Тимофеев В | 2h | 2h |
| 2027 | 5.112 | ремонт хомут с вибросито |  | 1h | 2026-03-10 09:00 A | 2026-03-10 10:00 A |  | 100% |  |  | start no earlier than 2026-03-10 09:00 | Макаревич А | 1h | 1h |
| 2028 | 5.113 | Заварить деку на сито |  | 2h | 2026-03-06 09:00 A | 2026-03-06 11:00 A |  | 100% |  |  | start no earlier than 2026-03-06 09:00 | Тимофеев В | 2h | 2h |
| 2029 | 5.114 | Замена двойной розетки (созвон с Шурановым) или спросить у мастера |  | 1h | 2026-03-05 08:00 A | 2026-03-05 10:00 A |  | 100% |  |  | start no earlier than 2026-03-05 08:00 | Дедов В | 1h | 1h |
| 2030 | 5.115 | ошибка Е10 стиральная машинка |  | 1h | 2026-03-04 09:00 A | 2026-03-04 10:00 A |  | 100% |  |  | start no earlier than 2026-03-04 09:00 | Дедов В | 1h | 1h |
| 2031 | 5.116 | ремонт сито, сварка шов |  | 2h | 2026-03-03 09:00 A | 2026-03-03 11:00 A |  | 100% |  |  | start no earlier than 2026-03-03 09:00 | Макаревич А | 2h | 2h |
| 2032 | 5.117 | ремонт растариватель №1 + установить косынки |  | 2h | 2026-03-03 09:00 A | 2026-03-03 11:00 A |  | 100% |  |  | start no earlier than 2026-03-03 09:00 | Некрасов А; Труфанов А | 4h | 4h |

| ID | WBS | Task | Duration | Start | Finish | Predecessors | Complete | Remaining | Actual start | Total slack | Constraint | Resources | Work | Actual work |
| --- | --- | --- | --- | --- | --- | --- | --- | --- | --- | --- | --- | --- | --- | --- |
| 2033 | 5.118 | **ремонт растаривателя №3 - клинит заслонку** | 97.81d | 2026-04-20 09:00 A | 2026-09-02 16:30 |  | 87% | 13.01d |  | 142.78d |  |  | 16.92h | 14.67h |
| 2034 | 5.118.1 | установка ручной штурвал управления шибером | 2h | 2026-04-20 09:00 A | 2026-04-20 11:00 A |  | 100% |  |  |  | start no earlier than 2026-04-20 09:00 | Бундин В | 2h | 2h |
| 2035 | 5.118.2 | контроль поставка Зип - оплачивали или нет? | 10min | 2026-08-12 09:00 A | 2026-08-12 09:10 A |  | 100% |  |  |  | start no earlier than 2026-08-12 09:00 | Зорькин В | 0.17h | 0.17h |
| 2036 | 5.118.3 | получить счет | 15min | 2026-08-13 09:00 A | 2026-08-13 09:15 A |  | 100% |  |  |  | start no earlier than 2026-08-13 09:00 | Домоводов К | 0.25h | 0.25h |
| 2037 | 5.118.4 | контроль поставки | 15min | 2026-08-31 09:15 | 2026-08-31 09:30 | 2036FS+12d |  |  |  | 145.53d | start no earlier than 2026-08-31 09:00 | Зорькин В | 0.25h |  |
| 2038 | 5.118.5 | приемка | 15min | 2026-09-01 09:30 A | 2026-09-01 09:45 A | 2037FS+1d | 100% |  |  |  | start no earlier than 2026-08-31 09:00 | Зорькин В | 0.25h | 0.25h |
| 2039 | 5.118.6 | замена | 4h | 2026-09-02 09:30 A | 2026-09-02 14:30 A | 2038FS+1d | 100% |  |  |  | start no earlier than 2026-08-12 09:00 | Тимофеев В | 4h | 4h |
| 2040 | 5.118.7 | Ремонт паука с растаривателя, оценить состояние. | 2h | 2026-09-02 09:00 A | 2026-09-02 11:00 A |  | 100% |  |  |  | start no earlier than 2026-09-02 09:00 | Тимофеев В | 2h | 2h |
| 2041 | 5.118.8 | установить фланец на редуктор NMRV050 | 2h | 2026-05-18 09:00 A | 2026-05-18 11:00 A |  | 100% |  |  |  | start no earlier than 2026-05-20 09:00 | Бобренок В | 2h | 2h |
| 2042 | 5.118.9 | настройка тепловое реле, настройка концевиков | 2h | 2026-09-02 14:30 | 2026-09-02 16:30 | 2039, 2041 |  |  |  | 142.78d | start no earlier than 2026-05-08 09:00 | Дедов В | 2h |  |
| 2043 | 5.118.10 | доработка пластины, которая клинит | 4h | 2026-05-07 09:00 A | 2026-05-07 13:00 A |  | 100% |  |  |  | start no earlier than 2026-05-07 09:00 | Тимофеев В | 4h | 4h |
| 2044 | 5.119 | **установить курилку на раму. Изготовить лавочку** | 19.25d? | 2026-02-28 09:00 A | 2026-03-27 11:00 A |  | 100% |  |  |  |  |  | 27h | 27h |
| 2045 | 5.119.1 | сделать удлинители для синей платформы, на которые встанет курилка | 1d? | 2026-02-28 09:00 A | 2026-03-02 18:00 A |  | 100% |  |  |  | start no earlier than 2026-02-28 09:00 | Макаревич А | 8h | 8h |
| 2046 | 5.119.2 | закрыть отверстие в полу жзелезом | 1h | 2026-03-13 09:00 A | 2026-03-13 10:00 A |  | 100% |  |  |  | start no earlier than 2026-03-13 09:00 | Некрасов А; Труфанов А | 2h | 2h |
| 2047 | 5.119.3 | монтаж фанера на лавочку | 2h | 2026-03-27 09:00 A | 2026-03-27 11:00 A | 2046 | 100% |  |  |  | start no earlier than 2026-03-27 09:00 |  |  |  |
| 2048 | 5.119.4 | поворот курилки к стене, от ветра | 1h | 2026-03-20 09:00 A | 2026-03-20 10:00 A |  | 100% |  |  |  | start no earlier than 2026-03-20 09:00 | Некрасов А | 1h | 1h |
| 2049 | 5.119.5 | изготовить трап входной | 4h | 2026-03-20 10:00 A | 2026-03-20 15:00 A | 2048 | 100% |  |  |  | start no earlier than 2026-03-12 08:00 | Некрасов А | 4h | 4h |
| 2050 | 5.119.6 | изготовить лавку по периметру курилки. На железо будет потом доска или пенка. Металл с остатков 3ц или с синего склада | 1d? | 2026-03-01 09:00 A | 2026-03-02 18:00 A |  | 100% |  |  |  | start no earlier than 2026-03-01 09:00 | Макаревич А | 8h | 8h |
| 2051 | 5.119.7 | приготовить ручки за которые будет толпа поднимать руками курилку | 2h | 2026-03-09 09:00 A | 2026-03-09 11:00 A |  | 100% |  |  |  | start no earlier than 2026-03-09 09:00 | Некрасов А; Труфанов А | 4h | 4h |
| 2052 | 5.120 | ТО штабелеров - обрезать нитки. Дефектовка подшипников, указать в отчете состояние | 2h | 2026-03-01 09:00 A | 2026-03-02 11:00 A |  | 100% |  |  |  | start no earlier than 2026-03-01 09:00 | Макаревич А | 2h | 2h |
| 2053 | 5.121 | **штабелер - замена ролик мачты. Подшипник котка** | 0.01d | 2026-03-03 09:00 A | 2026-03-03 09:05 A |  | 100% |  |  |  |  |  | 0.17h | 0.17h |
| 2054 | 5.121.1 | контроль | 5min | 2026-03-03 09:00 A | 2026-03-03 09:05 A |  | 100% |  |  |  | start no earlier than 2026-03-03 09:00 | Зорькин В; Тракресурс | 0.17h | 0.17h |
| 2055 | 5.122 | **установить стеллажи для архив образцов** | 25.06d? | 2026-03-03 09:00 | 2026-04-07 09:30 A |  | 100% |  | 2026-03-05 09:00 |  |  |  | 227.25h | 227.25h |
| 2056 | 5.122.1 | монтаж освещение | 4h | 2026-03-06 09:00 A | 2026-03-06 13:00 A |  | 100% |  |  |  | start no earlier than 2026-03-06 09:00 | Некрасов А; Труфанов А | 8h | 8h |

| ID | WBS | Task | Duration | Start | Finish | Predecessors | Complete | Actual start | Actual finish | Constraint | Resources | Work | Actual work |
| --- | --- | --- | --- | --- | --- | --- | --- | --- | --- | --- | --- | --- | --- |
| 2057 | 5.122.2 | **покрасить стеллажи** | 12.02d | 2026-03-06 14:00 A | 2026-03-24 14:10 A | 2056 | 100% |  |  |  |  | 92.17h | 92.17h |
| 2058 | 5.122.2.1 | Заказать краску не пахнущую для радиаторов | 10min | 2026-03-06 14:00 A | 2026-03-06 14:10 A |  | 100% |  |  | start no earlier than 2026-03-03 09:00 | Зорькин В | 0.17h | 0.17h |
| 2059 | 5.122.2.2 | Доставка | 10d | 2026-03-06 14:10 A | 2026-03-24 14:10 A | 2058 | 100% |  |  | start no earlier than 2026-03-03 09:00 | Карабанов | 80h | 80h |
| 2060 | 5.122.2.3 | покраска | 4h | 2026-03-06 14:00 A | 2026-03-06 18:00 A |  | 100% |  |  | start no earlier than 2026-03-06 09:00 | Некрасов А; Труфанов А | 8h | 8h |
| 2061 | 5.122.2.4 | покраска | 4h | 2026-03-06 14:00 A | 2026-03-06 18:00 A |  | 100% |  |  | start no earlier than 2026-03-06 09:00 | Бундин В | 4h | 4h |
| 2062 | 5.122.3 | занести стеллажи в кабинеты с работниками 5ц | 4h | 2026-03-09 09:00 A | 2026-03-09 13:00 A | 2064 | 100% |  |  | start no earlier than 2026-03-09 09:00 | Бобренок В | 4h | 4h |
| 2063 | 5.122.4 | сборка стеллажей | 4h | 2026-03-13 09:00 A | 2026-03-13 13:00 A |  | 100% |  |  | start no earlier than 2026-03-13 09:00 | Труфанов А; Некрасов А | 8h | 8h |
| 2064 | 5.122.5 | монтаж доп полок с уголка | 4h | 2026-03-08 09:00 A | 2026-03-09 13:00 A | 2065 | 100% |  |  | start no earlier than 2026-03-08 09:00 | Бобренок В | 4h | 4h |
| 2065 | 5.122.6 | напилить фанеру на стеллажи | 8h | 2026-03-15 09:00 A | 2026-03-16 18:00 A |  | 100% |  |  | start no earlier than 2026-03-15 09:00 | Бундин В | 8h | 8h |
| 2066 | 5.122.7 | напилить фанеру на стеллажи | 4h | 2026-03-16 09:00 A | 2026-03-16 13:00 A |  | 100% |  |  | start no earlier than 2026-03-16 09:00 | Макаревич А; Тимофеев В | 8h | 8h |
| 2067 | 5.122.8 | **монтаж двери** | 8.06d? | 2026-03-03 09:00 | 2026-03-11 09:30 |  | 100% | 2026-03-05 09:00 | 2026-04-07 09:30 |  |  | 95.08h | 95.08h |
| 2068 | 5.122.8.1 | заявка фурнитуры | 30min | 2026-03-05 09:00 A | 2026-03-05 09:30 A |  | 100% |  |  | start no earlier than 2026-03-05 09:00 | Зорькин В | 0.5h | 0.5h |
| 2069 | 5.122.8.2 | получить коробку на дверь / контроолль поставки | 5min | 2026-03-18 09:00 A | 2026-03-18 09:05 A |  | 100% |  |  | start no earlier than 2026-03-18 09:00 | Зорькин В | 0.08h | 0.08h |
| 2070 | 5.122.8.3 | монтаж 2 двери | 4h | 2026-03-20 09:00 A | 2026-03-20 13:00 A |  | 100% |  |  | start no earlier than 2026-03-20 09:00 | Тимофеев В; Бундин В | 8h | 8h |
| 2071 | 5.122.8.4 | монтаж замка и ручек | 2h | 2026-03-24 09:00 A | 2026-03-24 11:00 A |  | 100% |  |  | start no earlier than 2026-03-24 09:00 | Тимофеев В | 2h | 2h |
| 2072 | 5.122.8.5 | **монтаж наличноков** | 10.06d | 2026-03-24 09:00 A | 2026-04-07 09:30 A |  | 100% |  |  |  |  | 84.5h | 84.5h |
| 2073 | 5.122.8.5.1 | заявка на наличинки | 30min | 2026-03-24 09:00 A | 2026-03-24 09:30 A |  | 100% |  |  | start no earlier than 2026-03-24 09:00 | Зорькин В | 0.5h | 0.5h |
| 2074 | 5.122.8.5.2 | доставка | 10d | 2026-03-24 09:30 A | 2026-04-07 09:30 A | 2073 | 100% |  |  | start no earlier than 2026-03-20 08:00 | Карабанов | 80h | 80h |
| 2075 | 5.122.8.5.3 | монтаж | 4h | 2026-04-04 09:30 A | 2026-04-06 13:00 A | 2074 | 100% |  |  | start no earlier than 2026-03-20 08:00 | Тимофеев В | 4h | 4h |
| 2076 | 5.123 | **монтаж розеток для весов** | 83d | 2026-03-02 09:00 A | 2026-06-24 18:00 A |  | 100% |  |  |  |  | 98.5h | 98.5h |
| 2077 | 5.123.1 | составить план монтажа, расчет материалов | 30min | 2026-03-02 09:00 A | 2026-03-02 09:30 A |  | 100% |  |  | start no earlier than 2026-03-02 09:00 | Некрасов А; Зорькин В; Труфанов А | 1.5h | 1.5h |
| 2078 | 5.123.2 | заявка трос/ талреп | 30min | 2026-03-02 09:30 A | 2026-03-02 10:00 A | 2077 | 100% |  |  | start no earlier than 2026-02-27 08:00 | Зорькин В | 0.5h | 0.5h |
| 2079 | 5.123.3 | доставка | 10d | 2026-03-02 10:00 A | 2026-03-16 10:00 A | 2078 | 100% |  |  | start no earlier than 2026-02-27 08:00 | Карабанов | 80h | 80h |
| 2080 | 5.123.4 | комплектация | 30min | 2026-06-01 09:00 A | 2026-06-01 09:30 A |  | 100% |  |  | start no earlier than 2026-06-01 09:00 | Зорькин В | 0.5h | 0.5h |
| 2081 | 5.123.5 | монтаж | 8h | 2026-06-24 09:00 A | 2026-06-24 18:00 A | 2079 | 100% |  |  | start no earlier than 2026-06-24 09:00 | Тимофеев В; Макаревич А | 16h | 16h |

| ID | WBS | Task | Type | Duration | Start | Finish | Predecessors | Complete | Remaining | Actual start | Total slack | Free slack | Constraint | Resources | Work | Actual work |
| --- | --- | --- | --- | --- | --- | --- | --- | --- | --- | --- | --- | --- | --- | --- | --- | --- |
| 2082 | 5.124 | **установить кнопочный пост вентилятора в окно в доступную зону** |  | 5.06d | 2026-03-03 09:00 A | 2026-03-10 09:30 |  | 1% | 5.01d |  | 269.53d |  |  |  | 44.5h | 0.5h |
| 2083 | 5.124.1 | заявка частотник 0,5-0,75квт |  | 30min | 2026-03-03 09:00 A | 2026-03-03 09:30 A |  | 100% |  |  |  |  | start no earlier than 2026-03-03 09:00 | Зорькин В | 0.5h | 0.5h |
| 2084 | 5.124.2 | доставка |  | 5d | 2026-03-03 09:30 | 2026-03-10 09:30 | 2083 |  |  |  | 269.53d |  | start no earlier than 2026-02-27 08:00 | Карабанов | 40h |  |
| 2085 | 5.124.3 | монтаж |  | 4h | 2026-03-03 09:00 | 2026-03-03 13:00 |  |  |  |  | 274.09d |  | start no earlier than 2026-03-03 09:00 | Дедов В | 4h |  |
| 2086 | 5.125 | замена местами бойлер с раздевали и кухня |  | 2h | 2026-02-27 09:00 A | 2026-02-27 11:00 A |  | 100% |  |  |  |  | start no earlier than 2026-02-27 08:00 | Бундин В; Труфанов А | 4h | 4h |
| 2087 | 5.126 | **установить калорифер на 4 котел** |  | 11.12d? | 2026-10-12 09:00 | 2026-10-27 10:00 |  |  |  |  | 96.47d |  |  |  | 97h |  |
| 2088 | 5.126.1 | заявка |  | 1h | 2026-10-12 09:00 | 2026-10-12 10:00 |  |  |  |  | 96.47d | 0d | start no earlier than 2026-10-12 09:00 | Зорькин В | 1h |  |
| 2089 | 5.126.2 | доставка |  | 10d | 2026-10-12 10:00 | 2026-10-26 10:00 | 2088 |  |  |  | 96.47d | 0d | start no earlier than 2026-02-27 08:00 | Карабанов | 80h |  |
| 2090 | 5.126.3 | монтаж |  | 1d? | 2026-10-26 10:00 | 2026-10-27 10:00 | 2089 |  |  |  | 96.47d |  | start no earlier than 2026-02-27 08:00 | Некрасов А; Труфанов А | 16h |  |
| 2091 | 5.127 | **изготовить бункер нерж** |  | 77d? | 2026-06-06 09:00 | 2026-09-16 18:00 |  | 83% | 13.29d? | 2026-03-16 09:00 |  |  |  |  | 115.5h | 81.5h |
| 2092 | 5.127.1 | составить чертеж |  | 1h | 2026-03-16 09:00 A | 2026-03-16 10:00 A |  | 100% |  |  |  |  | start no earlier than 2026-03-16 09:00 | Зорькин В | 1h | 1h |
| 2093 | 5.127.2 | заявка на нерж |  | 30min | 2026-03-16 10:00 A | 2026-03-16 10:30 A | 2092 | 100% |  |  |  |  | start no earlier than 2026-02-27 08:00 | Зорькин В | 0.5h | 0.5h |
| 2094 | 5.127.3 | доставка |  | 10d | 2026-04-23 09:00 A | 2026-05-06 18:00 A | 2093 | 100% |  |  |  |  | start no earlier than 2026-04-23 09:00 | Карабанов | 80h | 80h |
| 2095 | 5.127.4 | проверка черетежей / подготовка к сборке |  | 1h | 2026-10-12 09:00 | 2026-10-12 10:00 |  |  |  |  | 105.47d | 0.88d | start no earlier than 2026-10-12 09:00 | Труфанов А; Зорькин В | 2h |  |
| 2096 | 5.127.5 | сборка | manual | 2d | 2026-10-13 09:00 | 2026-10-14 18:00 | 2094, 2095 |  |  |  |  |  | start no earlier than 2026-10-13 09:00 | Макаревич А; Труфанов А | 32h |  |
| 2097 | 5.128 | аудит по взрывоопасности 5ц |  | 1d? | 2025-09-03 09:00 | 2025-09-03 18:00 |  |  |  |  | 402.59d |  | start no earlier than 2025-09-03 09:00 |  |  |  |
| 2098 | 5.129 | **расширить прорем для проезда погрузчика** |  | 3d? | 2024-05-27 09:00 | 2024-05-29 18:00 |  |  |  |  | 732.59d |  |  |  | 24h |  |
| 2099 | 5.129.1 | перенос канализ трубы |  | 1d? | 2024-05-27 09:00 | 2024-05-27 18:00 |  |  |  |  | 732.59d | 0d | start no earlier than 2024-05-27 09:00 | Некрасов А | 8h |  |
| 2100 | 5.129.2 | монтаж закладных в прорем +400мм |  | 1d? | 2024-05-28 09:00 | 2024-05-28 18:00 | 2099 |  |  |  | 732.59d | 0d | start no earlier than 2024-05-17 09:00 | Некрасов А | 8h |  |
| 2101 | 5.129.3 | демонтаж /расширение |  | 1d? | 2024-05-29 09:00 | 2024-05-29 18:00 | 2100 |  |  |  | 732.59d |  | start no earlier than 2024-05-17 09:00 | Некрасов А | 8h |  |
| 2102 | 5.130 | подключить концевые выключатели шибера растаривателя |  | 2h | 2023-06-21 09:00 | 2023-06-21 11:00 |  |  |  |  | 978.34d |  | start no earlier than 2023-06-21 09:00 | Дедов В | 2h |  |
| 2103 | 5.131 | **установить сирену при включении тельфера** |  | 119d? | 2023-05-29 09:00 A | 2023-11-09 18:00 |  |  | 118.79d? |  | 876.59d |  |  |  | 48.08h | 0.08h |
| 2104 | 5.131.1 | заявка на сирену и кабель |  | 5min | 2023-05-29 09:00 A | 2023-05-29 09:05 A |  | 100% |  |  |  |  | start no earlier than 2023-05-29 09:00 | Лобанов И | 0.08h | 0.08h |
| 2105 | 5.131.2 | доставка |  | 5d | 2023-05-29 09:05 | 2023-06-05 09:05 | 2104 |  |  |  | 989.58d | 112.99d | start no earlier than 2023-05-22 09:00 | Малинина М | 40h |  |
| 2106 | 5.131.3 | монтаж |  | 1d? | 2023-11-09 09:00 | 2023-11-09 18:00 | 2105 |  |  |  | 876.59d |  | start no earlier than 2023-11-09 09:00 | Дедов В | 8h |  |
| 2107 | 5.132 | держак мешка для сбора отработанного корма лопатой, что бы второй не держал мешок |  | 1d? | 2026-05-04 09:00 | 2026-05-04 18:00 |  |  |  |  | 229.59d |  | start no earlier than 2026-05-04 09:00 | Тимофеев В | 8h |  |

| ID | WBS | Task | Duration | Start | Finish | Predecessors | Complete | Remaining | Total slack | Constraint | Resources | Work | Actual work |
| --- | --- | --- | --- | --- | --- | --- | --- | --- | --- | --- | --- | --- | --- |
| 2108 | 5.133 | **Замена насосной станции** | 9.25d | 2026-09-01 09:00 A | 2026-09-11 11:00 |  | 92% | 0.71d | 135.34d |  |  | 6.33h | 6h |
| 2109 | 5.133.1 | Замена насоса | 2h | 2026-09-01 09:00 A | 2026-09-01 11:00 A |  | 100% |  |  | start no earlier than 2026-09-01 09:00 | Бундин В | 2h | 2h |
| 2110 | 5.133.2 | Заявка на станцию | 15min | 2026-09-02 09:00 | 2026-09-02 09:15 |  |  |  | 143.56d | start no earlier than 2026-09-02 08:00 | Зорькин В | 0.25h |  |
| 2111 | 5.133.3 | контроль доставки | 5min | 2026-09-11 09:00 | 2026-09-11 09:05 |  |  |  | 135.58d | start no earlier than 2026-09-11 09:00 | Зорькин В | 0.08h |  |
| 2112 | 5.133.4 | установка новой насосной станции | 2h | 2026-09-11 09:00 A | 2026-09-11 11:00 A |  | 100% |  |  | start no earlier than 2026-09-11 09:00 | Некрасов А; Макаревич А | 4h | 4h |
| 2113 | 5.134 | Попытаться заварить деки и хомуты той проволокой по нерже, что есть у нас | 3h | 2026-07-28 08:00 A | 2026-07-28 12:00 A |  | 100% |  |  | start no earlier than 2026-07-28 08:00 | Макаревич А | 3h | 3h |
| 2114 | 5.135 | **5 цех** | 0.25d | 2026-04-07 09:00 A | 2026-04-07 11:00 A |  | 100% |  |  |  |  | 3.5h | 3.5h |
| 2115 | 5.135.1 | Установка сеток на сито | 1h | 2026-04-07 09:00 A | 2026-04-07 10:00 A |  | 100% |  |  | start no earlier than 2026-04-07 08:00 | Бундин В | 1h | 1h |
| 2116 | 5.135.2 | **2 цех** | 0.25d | 2026-04-07 09:00 A | 2026-04-07 11:00 A |  | 100% |  |  |  |  | 2.5h | 2.5h |
| 2117 | 5.135.2.1 | Взять шланг с мойки зона экструдера, установить на складе навесок цех 2, для набора воды в кубы | 30min | 2026-04-07 09:00 A | 2026-04-07 09:30 A |  | 100% |  |  | start no earlier than 2026-04-07 08:00 | Бундин В | 0.5h | 0.5h |
| 2118 | 5.135.2.2 | Посмотреть подачу воды на поломоечной машинке | 2h | 2026-04-07 09:00 A | 2026-04-07 11:00 A |  | 100% |  |  | start no earlier than 2026-04-07 08:00 | Бундин В | 2h | 2h |
| 2119 | 6 | **модернизация** | 983.5d? | 2023-06-07 09:00 A | 2027-03-03 13:00 |  | 48% | 508.15d? | 5.09d |  |  | 3394.67h | 2643.67h |
| 2120 | 6.1 | доработка нерж труб для парогенератора (антиэлектрод) | 1h | 2026-07-06 09:00 | 2026-07-06 10:00 |  |  |  | 185.47d | start no earlier than 2026-07-06 09:00 | Тимофеев В | 1h |  |
| 2121 | 6.2 | **Дражжировка 2 линия 1 цех** | 0.25d | 2026-07-29 08:00 A | 2026-07-29 11:00 A |  | 100% |  |  |  |  | 2h | 2h |
| 2122 | 6.2.1 | установка трубки с отверстиями, эксперимент | 2h | 2026-07-29 08:00 A | 2026-07-29 11:00 A |  | 100% |  |  | start no earlier than 2026-07-29 08:00 | Тимофеев В | 2h | 2h |
| 2123 | 6.3 | **поточные весы на входе в барабан жира** | 0.12d | 2026-06-15 09:00 A | 2026-06-15 10:00 A |  | 100% |  |  |  |  | 1h | 1h |
| 2124 | 6.3.1 | запрос КП у НОТИС - весы с дозатором / бункеры | 1h | 2026-06-15 09:00 A | 2026-06-15 10:00 A |  | 100% |  |  | start no earlier than 2026-06-15 09:00 | Зорькин В | 1h | 1h |
| 2125 | 6.4 | **устройство загрузки в смесители** | 0.12d | 2026-03-31 09:00 | 2026-03-31 10:00 |  |  |  | 254.47d |  |  | 1h |  |
| 2126 | 6.4.1 | подбор оборудования, запрос КП | 1h | 2026-03-31 09:00 | 2026-03-31 10:00 |  |  |  | 254.47d | start no earlier than 2026-03-31 08:00 | Зорькин В | 1h |  |
| 2127 | 6.5 | **определить параметры сушки гранулы лаб испытанием** | 6d | 2024-09-09 09:00 A | 2024-09-16 18:00 A |  | 100% |  |  |  |  | 16h | 16h |
| 2128 | 6.5.1 | изучить метод материал, физ законы процесса сушки. | 4h | 2024-09-09 09:00 A | 2024-09-09 13:00 A |  | 100% |  |  | start no earlier than 2024-09-09 09:00 | Зорькин В | 4h | 4h |
| 2129 | 6.5.2 | Определить набор средств измерения и оборыдования для лаб работы. | 4h | 2024-09-09 14:00 A | 2024-09-09 18:00 A | 2128 | 100% |  |  | start no earlier than 2024-09-09 09:00 | Зорькин В | 4h | 4h |
| 2130 | 6.5.3 | разрабоать пошаговый план лаб работы сушки 1кг продукта в термошкафу | 4h | 2024-09-16 09:00 A | 2024-09-16 13:00 A | 2129 | 100% |  |  | start no earlier than 2024-09-16 09:00 | Зорькин В | 4h | 4h |
| 2131 | 6.5.4 | определить зависимость времени сушки от температуры и влажности среды. | 4h | 2024-09-16 14:00 A | 2024-09-16 18:00 A | 2130 | 100% |  |  | start no earlier than 2024-09-06 08:00 | Зорькин В | 4h | 4h |

| ID | WBS | Task | Type | Duration | Start | Finish | Predecessors | Complete | Remaining | Total slack | Constraint | Resources | Work | Actual work |
| --- | --- | --- | --- | --- | --- | --- | --- | --- | --- | --- | --- | --- | --- | --- |
| 2132 | 6.6 | **станция фильтрации гидролизат с еврокуба в промежут емкость. Фильтр + насос** |  | 27.25d | 2026-03-13 09:00 A | 2026-04-21 11:00 A |  | 100% |  |  |  |  | 8h | 8h |
| 2133 | 6.6.1 | составить схему размещения насос / фильтр |  | 1h | 2026-03-13 09:00 A | 2026-03-13 10:00 A |  | 100% |  |  | start no earlier than 2026-03-13 09:00 | Зорькин В | 1h | 1h |
| 2134 | 6.6.2 | заявка фильтр 5" коллона + фитинги РР |  | 1h | 2026-03-13 10:00 A | 2026-03-13 11:00 A | 2133 | 100% |  |  | start no earlier than 2026-03-12 08:00 | Зорькин В | 1h | 1h |
| 2135 | 6.6.3 | доставка |  | 10d | 2026-03-13 11:00 A | 2026-03-27 11:00 A | 2134 | 100% |  |  | start no earlier than 2026-03-12 08:00 |  |  |  |
| 2136 | 6.6.4 | сборка насосная станция с фильром в 1ц |  | 4h | 2026-04-20 09:00 A | 2026-04-20 13:00 A | 2135 | 100% |  |  | start no earlier than 2026-04-20 09:00 | Тимофеев В | 4h | 4h |
| 2137 | 6.6.5 | оформление протокол испытаний |  | 2h | 2026-04-21 09:00 A | 2026-04-21 11:00 A |  | 100% |  |  | start no earlier than 2026-04-21 09:00 | Зорькин В | 2h | 2h |
| 2138 | 6.7 | **тест форсунки на гидролизат фильтрованный гидролизат** |  | 95.25d | 2026-04-21 11:00 A | 2026-09-01 13:00 | 2132 | 72% | 26.28d | 144.09d |  |  | 19h | 15h |
| 2139 | 6.7.1 | подготовить переходник |  | 2h | 2026-04-21 11:00 A | 2026-04-21 13:00 A |  | 100% |  |  | start no earlier than 2026-03-12 08:00 | Тимофеев В | 2h | 2h |
| 2140 | 6.7.2 | тестирование разных форсунок |  | 2h | 2026-04-21 13:00 A | 2026-04-21 16:00 A | 2139 | 100% |  |  | start no earlier than 2026-03-12 08:00 | Тимофеев В; Зорькин В | 4h | 4h |
| 2141 | 6.7.3 | контроль наличия фитингов для подключения насосной фильтровальной станции к еврокубу |  | 30min | 2026-04-24 08:00 A | 2026-04-24 09:30 A |  | 100% |  |  | start no earlier than 2026-04-24 08:00 | Зорькин В; Тимофеев В | 1h | 1h |
| 2142 | 6.7.4 | тест - наполнить канистру с куба гидролизатом через станцию+фильтр |  | 2h | 2026-04-27 09:00 A | 2026-04-27 11:00 A |  | 100% |  |  | start no earlier than 2026-04-27 09:00 | Зорькин В; Тимофеев В | 3h | 3h |
| 2143 | 6.7.5 | фильтрованный гдз распылить форсунками штатным насосом - забивакет |  | 4h | 2026-05-13 09:00 A | 2026-05-13 13:00 A | 2142 | 100% |  |  | start no earlier than 2026-05-13 09:00 | Зорькин В; Тимофеев В | 5h | 5h |
| 2144 | 6.7.6 | проект распыление моторчиком |  | 4h | 2026-09-01 09:00 | 2026-09-01 13:00 |  |  |  | 144.09d | start no earlier than 2026-09-01 09:00 | Домоводов К | 4h |  |
| 2145 | 6.8 | **станция фильтраци куринный жир с еврокуба в промежут емкость. Насос + фильтр** |  | 36.75d? | 2026-03-05 09:00 A | 2026-04-24 16:00 A |  | 100% |  |  |  |  | 46h | 46h |
| 2146 | 6.8.1 | подбор производительный насос и фильтр для жира. Закачка с еврокуба, перекачка через фильтр |  | 1d? | 2026-03-05 09:00 A | 2026-03-05 18:00 A |  | 100% |  |  | start no earlier than 2026-03-05 09:00 | Домоводов К; Зорькин В | 16h | 16h |
| 2147 | 6.8.2 | заявка материалы |  | 1d? | 2026-03-06 09:00 A | 2026-03-06 18:00 A | 2146 | 100% |  |  | start no earlier than 2026-02-27 08:00 | Зорькин В | 8h | 8h |
| 2148 | 6.8.3 | тест насосной станцией с фильтром |  | 1d? | 2026-04-20 09:00 A | 2026-04-20 18:00 A |  | 100% |  |  | start no earlier than 2026-04-20 09:00 | Зорькин В; Тимофеев В | 16h | 16h |
| 2149 | 6.8.4 | сборка второй станции для жира на БГ11А |  | 6h | 2026-04-24 08:00 A | 2026-04-24 16:00 A |  | 100% |  |  | start no earlier than 2026-04-24 08:00 | Тимофеев В | 6h | 6h |
| 2150 | 6.9 | **мешалка гидролизата** |  | 131.12d | 2026-03-03 09:00 A | 2026-09-02 10:00 A |  | 100% |  |  |  |  | 37.08h | 37.08h |
| 2151 | 6.9.1 | определить диаметр вала / где инструкция? Выяснить |  | 20min | 2026-08-28 09:00 A | 2026-08-28 09:20 A |  | 100% |  |  | start no earlier than 2026-08-28 09:00 | Зорькин В | 0.33h | 0.33h |
| 2152 | 6.9.2 | согласовать договор /оплата счет |  | 1h | 2026-03-03 09:00 A | 2026-03-03 10:00 A |  | 100% |  |  | start no earlier than 2026-03-03 09:00 | Домоводов К | 1h | 1h |
| 2153 | 6.9.3 | доставка | milestone | 0d | 2026-08-10 08:00 A | 2026-08-10 08:00 A |  | 100% |  |  | start no earlier than 2026-08-10 08:00 |  |  |  |
| 2154 | 6.9.4 | планирование технологии работы / какие нужны доработки |  | 15min | 2026-08-12 09:00 A | 2026-08-12 09:15 A |  | 100% |  |  | start no earlier than 2026-08-12 09:00 | Домоводов К | 0.25h | 0.25h |
| 2155 | 6.9.5 | сборка и тест с операторами в 1ц. Можно приварить кронштейны под штабелер |  | 4h | 2026-08-12 09:00 A | 2026-08-12 13:00 A |  | 100% |  |  | start no earlier than 2026-08-12 09:00 | Макаревич А | 4h | 4h |
| 2156 | 6.9.6 | составить чертеж кронштейна |  | 1h | 2026-08-17 09:00 A | 2026-08-17 10:00 A |  | 100% |  |  | start no earlier than 2026-08-17 09:00 | Шуранов Ю | 1h | 1h |
| 2157 | 6.9.7 | заявка на лебедка |  | 15min | 2026-08-17 10:00 A | 2026-08-17 10:15 A | 2156 | 100% |  |  | start no earlier than 2026-08-14 09:00 | Шуранов Ю | 0.25h | 0.25h |
| 2158 | 6.9.8 | конроль доставки |  | 15min | 2026-08-22 10:15 A | 2026-08-24 09:15 A | 2157FS+5d | 100% |  |  | start no earlier than 2026-08-14 09:00 | Шуранов Ю | 0.25h | 0.25h |
| 2159 | 6.9.9 | монтаж лебедка |  | 6h | 2026-08-31 09:00 A | 2026-08-31 16:00 A | 2158FS+1d | 100% |  |  | start no earlier than 2026-08-31 09:00 | Некрасов А; Труфанов А | 12h | 12h |
| 2160 | 6.9.10 | монтаж кронштейн под лебедку |  | 6h | 2026-08-31 16:00 A | 2026-09-01 13:00 A | 2159 | 100% |  |  | start no earlier than 2026-08-31 09:00 | Некрасов А; Труфанов А | 12h | 12h |
| 2161 | 6.9.11 | Установить 3-х фазную вилку для мешалки рядом с частотником |  | 2h | 2026-08-31 08:00 A | 2026-08-31 11:00 A |  | 100% |  |  | start no earlier than 2026-08-31 08:00 | Дедов В | 2h | 2h |
| 2162 | 6.9.12 | Установить розетку для электротали, проложить кабель к розетке возле мухобойки |  | 3h | 2026-08-31 08:00 A | 2026-08-31 12:00 A |  | 100% |  |  | start no earlier than 2026-08-31 08:00 | Дедов В | 3h | 3h |
| 2163 | 6.9.13 | Подключить таль к розетке, проложить гофру |  | 1h | 2026-09-02 09:00 A | 2026-09-02 10:00 A |  | 100% |  |  | start no earlier than 2026-09-02 09:00 | Бундин В | 1h | 1h |

| ID | WBS | Task | Duration | Start | Finish | Predecessors | Complete | Remaining | Total slack | Constraint | Resources | Work | Actual work |
| --- | --- | --- | --- | --- | --- | --- | --- | --- | --- | --- | --- | --- | --- |
| 2164 | 6.10 | **качественное нанесение жира тесты** | 270.5d? | 2026-03-02 09:00 A | 2027-03-03 13:00 A |  | 100% |  |  |  |  | 2102h | 2102h |
| 2165 | 6.10.1 | **испытания форсунка 2х фазная 1ц** | 2.25d | 2026-03-02 09:00 A | 2026-03-04 11:00 A |  | 100% |  |  |  |  | 5.5h | 5.5h |
| 2166 | 6.10.1.1 | подготовить кронштейн крепления форсунки к конвейеру | 2h | 2026-03-02 09:00 A | 2026-03-02 11:00 A |  | 100% |  |  | start no earlier than 2026-03-02 09:00 | Тимофеев В | 2h | 2h |
| 2167 | 6.10.1.2 | подготовить пневморедуктор, временно с НОТИС 3ц | 1h | 2026-03-02 11:00 A | 2026-03-02 12:00 A | 2166 | 100% |  |  | start no earlier than 2026-02-27 08:00 | Тимофеев В | 1h | 1h |
| 2168 | 6.10.1.3 | подготовить фильтр 1шт | 30min | 2026-03-02 12:00 A | 2026-03-02 12:30 A | 2167 | 100% |  |  | start no earlier than 2026-02-27 08:00 | Тимофеев В | 0.5h | 0.5h |
| 2169 | 6.10.1.4 | Тест форсунки на жирах, скооперироваться с технологами | 2h | 2026-03-04 09:00 A | 2026-03-04 11:00 A |  | 100% |  |  | start no earlier than 2026-03-04 09:00 | Тимофеев В | 2h | 2h |
| 2170 | 6.10.2 | **монтаж форсунки в линию** | 262.5d? | 2026-03-11 09:00 A | 2027-03-03 13:00 A |  | 100% |  |  |  | Тимофеев В | 2096.5h | 2096.5h |
| 2171 | 6.10.2.1 | **тест однофазная форсунка** | 30.25d? | 2026-03-11 09:00 A | 2026-04-22 11:00 A |  | 100% |  |  |  |  | 52.5h | 52.5h |
| 2172 | 6.10.2.1.1 | заявка пневморедуктор, фитинги насос - кран - 3х ходовой | 30min | 2026-03-11 09:00 A | 2026-03-11 09:30 A |  | 100% |  |  | start no earlier than 2026-03-11 09:00 | Зорькин В | 0.5h | 0.5h |
| 2173 | 6.10.2.1.2 | проект рама для монтаж фильтров, редуктор, кронштейн форсунки | 1d? | 2026-03-11 09:30 A | 2026-03-12 09:30 A | 2172 | 100% |  |  | start no earlier than 2026-02-27 08:00 | Домоводов К | 8h | 8h |
| 2174 | 6.10.2.1.3 | доставка | 5d | 2026-03-30 09:00 A | 2026-04-03 18:00 A |  | 100% |  |  | start no earlier than 2026-03-30 09:00 | Карабанов | 40h | 40h |
| 2175 | 6.10.2.1.4 | сборка рама, покраска | 2h | 2026-04-22 09:00 A | 2026-04-22 11:00 A | 2173 | 100% |  |  | start no earlier than 2026-04-22 09:00 | Тимофеев В | 2h | 2h |
| 2176 | 6.10.2.1.5 | монтаж 0,3 форсунки | 2h | 2026-04-22 09:00 A | 2026-04-22 11:00 A | 2174 | 100% |  |  | start no earlier than 2026-04-22 09:00 | Тимофеев В | 2h | 2h |
| 2177 | 6.11 | **тест однофазная форсунка** | 0.02d | 2026-03-16 09:00 A | 2026-03-16 09:10 A |  | 100% |  |  |  |  | 0.17h | 0.17h |
| 2178 | 6.11.1 | получить счет | 10min | 2026-03-16 09:00 A | 2026-03-16 09:10 A |  | 100% |  |  | start no earlier than 2026-03-16 09:00 | Домоводов К | 0.17h | 0.17h |
| 2179 | 6.12 | **установить фильтры жир на 1 и 2 линию** | 71.25d | 2026-03-17 09:00 A | 2026-06-24 11:00 |  | 83% | 11.88d | 193.34d |  |  | 14h | 12h |
| 2180 | 6.12.1 | сборка система фильтров 2 фильтра на 2 линии подготовиь + рама | 4h | 2026-03-17 09:00 A | 2026-03-17 13:00 A |  | 100% |  |  | start no earlier than 2026-03-17 09:00 | Тимофеев В | 4h | 4h |
| 2181 | 6.12.2 | монтаж стационарно рама под фильтры | 4h | 2026-04-22 09:00 A | 2026-04-22 13:00 A | 2180 | 100% |  |  | start no earlier than 2026-04-22 09:00 | Тимофеев В | 4h | 4h |
| 2182 | 6.12.3 | калибровка PID регулятора подачи жира | 2h | 2026-05-13 09:00 A | 2026-05-13 11:00 A |  | 100% |  |  | start no earlier than 2026-05-13 09:00 | Зорькин В; Домоводов К | 4h | 4h |
| 2183 | 6.12.4 | подготовка для установить на 1 линию | 2h | 2026-06-24 09:00 | 2026-06-24 11:00 |  |  |  | 193.34d | start no earlier than 2026-06-24 09:00 | Тимофеев В | 2h |  |
| 2184 | 6.13 | **ТЕКО 0,4 или 1,5 поставить пленку с БЕСТРОМА 620мм** | 6.09d | 2026-03-13 09:00 A | 2026-03-23 09:45 A |  | 100% |  |  |  |  | 0.75h | 0.75h |
| 2185 | 6.13.1 | запрос возможности в ТЕКО | 30min | 2026-03-13 09:00 A | 2026-03-13 09:30 A |  | 100% |  |  | start no earlier than 2026-03-13 09:00 | Зорькин В | 0.5h | 0.5h |
| 2186 | 6.13.2 | контроль ответ | 15min | 2026-03-23 09:30 A | 2026-03-23 09:45 A | 2185FS+10d | 100% |  |  | start no earlier than 2026-03-12 08:00 | Зорькин В | 0.25h | 0.25h |
| 2187 | 6.14 | **фильера с вставками для 2ц** | 0.02d | 2025-02-21 09:00 A | 2025-02-21 09:10 A |  | 100% |  |  |  |  | 0.17h | 0.17h |
| 2188 | 6.14.1 | контроль изготовления | 10min | 2025-02-21 09:00 A | 2025-02-21 09:10 A |  | 100% |  |  | start no earlier than 2025-02-21 09:00 | Шуранов Ю | 0.17h | 0.17h |

| ID | WBS | Task | Duration | Start | Finish | Predecessors | Complete | Total slack | Free slack | Constraint | Resources | Work | Actual work |
| --- | --- | --- | --- | --- | --- | --- | --- | --- | --- | --- | --- | --- | --- |
| 2189 | 6.15 | **ручка для экструдера крутиьт мотор на 1 и 2 линию** | 138d? | 2024-08-09 09:00 | 2025-02-18 18:00 |  |  | 543.59d |  |  |  | 9h |  |
| 2190 | 6.15.1 | изготовление | 1d? | 2025-02-18 09:00 | 2025-02-18 18:00 |  |  | 543.59d |  | start no earlier than 2025-02-18 09:00 | Черепанов И | 8h |  |
| 2191 | 6.15.2 | составить чертежи / разместить изготовление | 1h | 2024-08-09 09:00 | 2024-08-09 10:00 |  |  | 681.47d |  | start no earlier than 2024-08-09 09:00 | Шуранов Ю | 1h |  |
| 2192 | 6.16 | **охлаждение шкафов управления печью 1 2 3 линия** | 5d? | 2024-04-18 09:00 | 2024-04-24 18:00 |  |  | 757.59d |  |  |  | 40h |  |
| 2193 | 6.16.1 | выбор и заявка кондиционеры для щитов управления | 1d? | 2024-04-18 09:00 | 2024-04-18 18:00 |  |  | 757.59d | 0d | start no earlier than 2024-04-18 09:00 | Домоводов К | 8h |  |
| 2194 | 6.16.2 | оплата / доставка | 1d? | 2024-04-19 09:00 | 2024-04-19 18:00 | 2193 |  | 757.59d | 0d | start no earlier than 2024-04-04 09:00 | Мультан | 8h |  |
| 2195 | 6.16.3 | монтаж | 3d | 2024-04-22 09:00 | 2024-04-24 18:00 | 2194 |  | 757.59d |  | start no earlier than 2024-04-11 09:00 | Некрасов А | 24h |  |
| 2196 | 6.17 | **подача гидролизат в смеситель насосом** | 25d? | 2024-03-25 09:00 | 2024-04-26 18:00 |  |  | 755.59d |  |  |  | 200h |  |
| 2197 | 6.17.1 | выбор насоса / заявка на насос | 1d? | 2024-03-25 09:00 | 2024-03-25 18:00 |  |  | 755.59d | 0d | start no earlier than 2024-03-25 09:00 | Домоводов К | 8h |  |
| 2198 | 6.17.2 | проректирование автоматика, монтажная часть / заявка | 1d? | 2024-03-26 09:00 | 2024-03-26 18:00 | 2197 |  | 755.59d | 0d | start no earlier than 2024-03-22 09:00 | Домоводов К | 8h |  |
| 2199 | 6.17.3 | поставка оборудования | 20d | 2024-03-27 09:00 | 2024-04-23 18:00 | 2198 |  | 755.59d | 0d | start no earlier than 2024-03-22 09:00 | Мультан | 160h |  |
| 2200 | 6.17.4 | монтаж электрика | 1d? | 2024-04-24 09:00 | 2024-04-24 18:00 | 2199 |  | 755.59d | 0d | start no earlier than 2024-03-22 09:00 | Некрасов А | 8h |  |
| 2201 | 6.17.5 | монтаж трубопровод | 1d? | 2024-04-25 09:00 | 2024-04-25 18:00 | 2200 |  | 755.59d | 0d | start no earlier than 2024-03-22 09:00 | Некрасов А | 8h |  |
| 2202 | 6.17.6 | монтаж автоматика | 1d? | 2024-04-26 09:00 | 2024-04-26 18:00 | 2201 |  | 755.59d |  | start no earlier than 2024-03-22 09:00 | Некрасов А | 8h |  |
| 2203 | 6.18 | **установить форсунки на подачу жир и гидролизат** | 106.38d | 2024-03-26 09:00 A | 2024-08-21 12:00 A |  | 100% |  |  |  |  | 187h | 187h |
| 2204 | 6.18.1 | выбор тип форсунок, заявка | 1d | 2024-03-26 09:00 A | 2024-03-26 18:00 A |  | 100% |  |  | start no earlier than 2024-03-26 09:00 | Домоводов К | 8h | 8h |
| 2205 | 6.18.2 | проректирование / заявка на пневматику и электрику для управления форсунками | 1d | 2024-03-27 09:00 A | 2024-03-27 18:00 A | 2204 | 100% |  |  | start no earlier than 2024-03-22 09:00 | Домоводов К | 8h | 8h |
| 2206 | 6.18.3 | тех решение / чертеж крепления форсунок | 1d | 2024-03-28 09:00 A | 2024-03-28 18:00 A | 2205 | 100% |  |  | start no earlier than 2024-03-22 09:00 | Домоводов К | 8h | 8h |
| 2207 | 6.18.4 | доставка | 20d | 2024-03-29 09:00 A | 2024-04-25 18:00 A | 2204, 2206 | 100% |  |  | start no earlier than 2024-03-22 09:00 | Мультан | 160h | 160h |
| 2208 | 6.18.5 | монтаж механника | 2h | 2024-08-21 09:00 A | 2024-08-21 11:00 A | 2207 | 100% |  |  | start no earlier than 2024-08-21 09:00 | Тимофеев В | 2h | 2h |
| 2209 | 6.18.6 | монтаж пневматика | 1h | 2024-08-21 11:00 A | 2024-08-21 12:00 A | 2208 | 100% |  |  | start no earlier than 2024-03-22 09:00 | Тимофеев В | 1h | 1h |
| 2210 | 6.19 | **модернизация откидной воронка загрузки в барабан дрожировки** | 10.62d | 2024-05-14 09:00 A | 2024-05-28 15:00 A |  | 100% |  |  |  |  | 89h | 89h |
| 2211 | 6.19.1 | составить эскиз / заказ шарниры (при остановке экструдера) | 1h | 2024-05-14 09:00 A | 2024-05-14 10:00 A |  | 100% |  |  | start no earlier than 2024-05-14 09:00 | Шуранов Ю | 1h | 1h |
| 2212 | 6.19.2 | доставка | 10d | 2024-05-14 10:00 A | 2024-05-28 10:00 A | 2211 | 100% |  |  | start no earlier than 2024-03-14 09:00 | Мультан | 80h | 80h |
| 2213 | 6.19.3 | монгтаж | 4h | 2024-05-28 10:00 A | 2024-05-28 15:00 A | 2212 | 100% |  |  | start no earlier than 2024-05-14 09:00 | Макаревич А; Некрасов А | 8h | 8h |
| 2214 | 6.20 | модернизация ножевого узла | 1d? | 2023-12-28 09:00 | 2023-12-28 18:00 |  |  | 841.59d |  | start no earlier than 2023-12-28 09:00 |  |  |  |

| ID | WBS | Task | Duration | Start | Finish | Predecessors | Complete | Remaining | Total slack | Free slack | Constraint | Resources | Work | Actual work |
| --- | --- | --- | --- | --- | --- | --- | --- | --- | --- | --- | --- | --- | --- | --- |
| 2215 | 6.21 | **модернизация дозации воды в прекондиционер** | 0.62d | 2023-12-25 09:00 A | 2023-12-25 15:00 A |  | 100% |  |  |  |  |  | 5h | 5h |
| 2216 | 6.21.1 | установить балансировочный кран 2 линия | 1h | 2023-12-25 09:00 A | 2023-12-25 10:00 A |  | 100% |  |  |  | start no earlier than 2023-12-25 09:00 | Дедов В | 1h | 1h |
| 2217 | 6.21.2 | установить расходомер 2 линия | 2h | 2023-12-25 10:00 A | 2023-12-25 12:00 A | 2216 | 100% |  |  |  | start no earlier than 2023-12-20 09:00 | Дедов В | 2h | 2h |
| 2218 | 6.21.3 | установить расходомер 2 линия | 2h | 2023-12-25 12:00 A | 2023-12-25 15:00 A | 2217 | 100% |  |  |  | start no earlier than 2023-12-20 09:00 | Дедов В | 2h | 2h |
| 2219 | 6.22 | **заменить шланг на высоктемпературный на жир** | 1.62d? | 2024-05-14 09:00 A | 2024-05-15 15:00 A |  | 100% |  |  |  |  |  | 13h | 13h |
| 2220 | 6.22.1 | заявка / подбор | 1h | 2024-05-14 09:00 A | 2024-05-14 10:00 A |  | 100% |  |  |  | start no earlier than 2024-05-14 09:00 | Шуранов Ю | 1h | 1h |
| 2221 | 6.22.2 | доставка | 1d? | 2024-05-14 10:00 A | 2024-05-15 10:00 A | 2220 | 100% |  |  |  | start no earlier than 2023-12-13 08:00 | Малинина М | 8h | 8h |
| 2222 | 6.22.3 | замена | 4h | 2024-05-15 10:00 A | 2024-05-15 15:00 A | 2221 | 100% |  |  |  | start no earlier than 2024-01-15 09:00 | Тимофеев В | 4h | 4h |
| 2223 | 6.23 | **тепловая защита электромоторов мехнизмов** | 108.75d | 2023-12-28 09:00 A | 2024-05-28 16:00 |  | 2% | 106.58d | 733.84d |  |  |  | 100h | 2h |
| 2224 | 6.23.1 | **составить список эл моторов (нужен ток ) без теплового реле - от вибросита - до упаковки вся технология** | 75.25d | 2024-01-30 09:00 A | 2024-05-14 11:00 |  | 17% | 62.71d | 744.34d |  |  |  | 12h | 2h |
| 2225 | 6.23.1.1 | 5 цех | 2h | 2024-01-30 09:00 A | 2024-01-30 11:00 A |  | 100% |  |  |  | start no earlier than 2024-01-30 09:00 | Дедов В | 2h | 2h |
| 2226 | 6.23.1.2 | 1 цех | 4h | 2024-01-30 09:00 | 2024-01-30 13:00 |  |  |  | 819.09d |  | start no earlier than 2024-01-30 09:00 | Дедов В | 4h |  |
| 2227 | 6.23.1.3 | 2 цех | 4h | 2024-01-30 09:00 | 2024-01-30 13:00 |  |  |  | 819.09d |  | start no earlier than 2024-01-30 09:00 | Дедов В | 4h |  |
| 2228 | 6.23.1.4 | заполнитьт таблицу для заявки место-двиг-ток | 2h | 2024-05-14 09:00 | 2024-05-14 11:00 |  |  |  | 744.34d |  | start no earlier than 2024-05-14 09:00 | Шуранов Ю | 2h |  |
| 2229 | 6.23.2 | переписать список мотор-редукторов | 2h | 2023-12-28 09:00 | 2023-12-28 11:00 |  |  |  | 830.59d | 96.75d | start no earlier than 2023-12-28 09:00 | Дедов В | 2h |  |
| 2230 | 6.23.3 | заявка тепл реле | 2h | 2024-05-14 09:00 | 2024-05-14 11:00 | 2229FS+1d |  |  | 733.84d | 0d | start no earlier than 2024-05-14 09:00 | Шуранов Ю | 2h |  |
| 2231 | 6.23.4 | дост авка | 10d | 2024-05-14 11:00 | 2024-05-28 11:00 | 2230 |  |  | 733.84d | 0d | start no earlier than 2023-12-13 08:00 | Малинина М | 80h |  |
| 2232 | 6.23.5 | монтаж конвейер 2ц | 2h | 2024-05-28 11:00 | 2024-05-28 13:00 | 2230, 2231 |  |  | 733.84d | 0d | start no earlier than 2024-01-19 09:00 | Дедов В | 2h |  |
| 2233 | 6.23.6 | монтаж составить список | 2h | 2024-05-28 14:00 | 2024-05-28 16:00 | 2232 |  |  | 733.84d |  | start no earlier than 2023-12-13 08:00 | Домоводов К | 2h |  |
| 2234 | 6.24 | **устройство контроля уровня сырья в большом бункере** | 14.03d | 2023-08-16 09:00 A | 2023-09-05 09:15 |  |  | 14d | 924.56d |  |  |  | 192.25h | 0.25h |
| 2235 | 6.24.1 | заявка на датчик | 15min | 2023-08-16 09:00 A | 2023-08-16 09:15 A |  | 100% |  |  |  | start no earlier than 2023-08-14 09:00 | Лобанов И | 0.25h | 0.25h |
| 2236 | 6.24.2 | доставка | 10d | 2023-08-16 09:15 | 2023-08-30 09:15 | 2235 |  |  | 924.56d | 0d | start no earlier than 2023-03-10 09:00 | Малинина М; Домоводов К | 160h |  |
| 2237 | 6.24.3 | выполнение монажных работ | 4d | 2023-08-30 09:15 | 2023-09-05 09:15 | 2236 |  |  | 924.56d |  | start no earlier than 2023-03-10 09:00 | Подрядчик | 32h |  |
| 2238 | 6.25 | **конвейер с охладителя регулировка ленты - модернизация** | 6.25d | 2024-05-14 09:00 A | 2024-05-22 11:00 A |  | 100% |  |  |  |  |  | 50h | 50h |
| 2239 | 6.25.1 | выбор и заявка натяжные буксы | 2h | 2024-05-14 09:00 A | 2024-05-14 11:00 A |  | 100% |  |  |  | start no earlier than 2024-05-14 09:00 | Шуранов Ю | 2h | 2h |
| 2240 | 6.25.2 | доставка | 5d | 2024-05-14 11:00 A | 2024-05-21 11:00 A | 2239 | 100% |  |  |  | start no earlier than 2023-10-30 09:00 | Малинина М | 40h | 40h |
| 2241 | 6.25.3 | монтаж | 1d | 2024-05-21 11:00 A | 2024-05-22 11:00 A | 2240 | 100% |  |  |  | start no earlier than 2023-12-01 09:00 | Тимофеев В | 8h | 8h |

| ID | WBS | Task | Duration | Start | Finish | Predecessors | Complete | Remaining | Actual start | Total slack | Free slack | Constraint | Resources | Work | Actual work |
| --- | --- | --- | --- | --- | --- | --- | --- | --- | --- | --- | --- | --- | --- | --- | --- |
| 2242 | 6.26 | **прекондиционер забивается отслоением слипшегося сырья** | 204d? | 2023-08-03 09:00 | 2024-05-14 18:00 |  |  |  |  | 0d |  |  |  | 24h |  |
| 2243 | 6.26.1 | **решение тех совет** | 1d? | 2023-08-03 09:00 | 2023-08-03 18:00 |  |  |  |  |  |  |  |  | 24h |  |
| 2244 | 6.26.1.1 | вар1 - доп лопатки на выходе | 1d? | 2024-05-14 09:00 | 2024-05-14 18:00 |  |  |  |  | 743.59d |  | start no earlier than 2024-05-14 09:00 | Шуранов Ю | 8h |  |
| 2245 | 6.26.1.2 | вар 2 - вертикальные ворошители | 1d? | 2024-05-14 09:00 | 2024-05-14 18:00 |  |  |  |  | 743.59d |  | start no earlier than 2024-05-14 09:00 | Шуранов Ю | 8h |  |
| 2246 | 6.26.1.3 | вар 3 - подача пара | 1d? | 2024-05-14 09:00 | 2024-05-14 18:00 |  |  |  |  | 743.59d |  | start no earlier than 2024-05-14 09:00 | Шуранов Ю | 8h |  |
| 2247 | 6.27 | **фильтры на баки жиров перед насосами** | 439.12d | 2023-07-20 09:00 A | 2025-03-26 10:00 A |  | 100% |  |  |  |  |  |  | 4.75h | 4.75h |
| 2248 | 6.27.1 | утвердить тех решение | 1h | 2023-07-20 09:00 A | 2023-07-20 10:00 A |  | 100% |  |  |  |  | start no earlier than 2023-07-20 09:00 | Лобанов И; Домоводов К; Сапелин С | 3h | 3h |
| 2249 | 6.27.2 | купить сетку в корпусе | 30min | 2024-05-14 09:00 A | 2024-05-14 09:30 A |  | 100% |  |  |  |  | start no earlier than 2024-05-14 09:00 | Шуранов Ю | 0.5h | 0.5h |
| 2250 | 6.27.3 | купить 1/2 муфта для установки фитингов | 15min | 2025-03-26 09:00 A | 2025-03-26 09:15 A |  | 100% |  |  |  |  | start no earlier than 2025-03-26 08:00 | Шуранов Ю | 0.25h | 0.25h |
| 2251 | 6.27.4 | проверка фитингов | 1h | 2025-03-26 09:00 A | 2025-03-26 10:00 A |  | 100% |  |  |  |  | start no earlier than 2025-03-26 08:00 | Зорькин В | 1h | 1h |
| 2252 | 6.28 | **защита редутора шнеков при отказе маслянного насоса** | 20.12d? | 2023-08-02 09:00 | 2023-08-30 10:00 |  | 33% | 13.52d? | 2023-07-28 09:00 |  |  |  |  | 126.5h | 41.5h |
| 2253 | 6.28.1 | поиск фитинг для замера реле давления | 30min | 2023-07-28 09:00 A | 2023-07-28 09:30 A |  | 100% |  |  |  |  | start no earlier than 2023-07-28 09:00 | Тимофеев В | 0.5h | 0.5h |
| 2254 | 6.28.2 | заявка на фитинг | 1h | 2023-07-31 09:00 A | 2023-07-31 10:00 A | 2253 | 100% |  |  |  |  | start no earlier than 2023-07-31 09:00 | Лобанов И | 1h | 1h |
| 2255 | 6.28.3 | доставка | 5d | 2023-07-31 10:00 A | 2023-08-07 10:00 A | 2254 | 100% |  |  |  |  | start no earlier than 2023-07-31 09:00 | Малинина М | 40h | 40h |
| 2256 | 6.28.4 | заявка реле потока 1/2 или 3/4 | 1h | 2026-03-19 09:00 | 2026-03-19 10:00 |  |  |  |  | 251.97d | 0d | start no earlier than 2026-03-19 09:00 | Шуранов Ю | 1h |  |
| 2257 | 6.28.5 | доставка | 10d | 2026-03-19 10:00 | 2026-04-02 10:00 | 2256 |  |  |  | 251.97d | 1.88d | start no earlier than 2026-03-12 08:00 | Карабанов | 80h |  |
| 2258 | 6.28.6 | монтаж гидравлика | 2h | 2026-04-06 09:00 | 2026-04-06 11:00 | 2257 |  |  |  | 250.09d | 0d | start no earlier than 2026-04-06 09:00 | Тимофеев В | 2h |  |
| 2259 | 6.28.7 | монтаж электрика схема защиты + привязка к частотному приводу | 2h | 2026-04-06 11:00 | 2026-04-06 13:00 | 2258 |  |  |  | 250.09d |  | start no earlier than 2023-07-20 09:00 | Тимофеев В | 2h |  |
| 2260 | 6.29 | **подача сырья в упаковщки 1 цех** | 199.5d? | 2023-06-07 09:00 A | 2024-03-12 13:00 |  | 12% | 175.32d? |  | 789.09d |  |  |  | 37h | 8h |
| 2261 | 6.29.1 | испытание пневмотранспорта напорная магистраль | 4h | 2024-03-12 09:00 A | 2024-03-12 13:00 A |  | 100% |  |  |  |  | start no earlier than 2024-03-12 09:00 | Бобренок В; Некрасов А | 8h | 8h |
| 2262 | 6.29.2 | технологическая схема подачи продукта в упаковщики | 1d? | 2023-06-19 09:00 | 2023-06-19 18:00 |  |  |  |  | 979.59d |  | start no earlier than 2023-06-19 09:00 | Технолог | 8h |  |
| 2263 | 6.29.3 | поиск / запрорс цен на диверторы | 2h | 2023-06-07 09:00 | 2023-06-07 11:00 |  |  |  |  | 985.97d | 0d | start no earlier than 2023-06-07 09:00 | Домоводов К | 2h |  |
| 2264 | 6.29.4 | поиск / запрос цены на эжекторный приемник | 2h | 2023-06-07 11:00 | 2023-06-07 13:00 | 2263 |  |  |  | 985.97d | 0d | start no earlier than 2023-05-10 08:00 | Домоводов К | 2h |  |
| 2265 | 6.29.5 | расчет трассы | 2d | 2023-06-07 14:00 | 2023-06-09 13:00 | 2264 |  |  |  | 985.97d | 0d | start no earlier than 2023-05-10 08:00 | Домоводов К | 16h |  |
| 2266 | 6.29.6 | подбор приобритение вентилятора | 1h | 2023-06-09 14:00 | 2023-06-09 15:00 | 2265 |  |  |  | 985.97d |  | start no earlier than 2023-04-27 09:00 | Домоводов К | 1h |  |

| ID | WBS | Task | Type | Duration | Start | Finish | Predecessors | Complete | Remaining | Total slack | Free slack | Constraint | Resources | Work | Actual work |
| --- | --- | --- | --- | --- | --- | --- | --- | --- | --- | --- | --- | --- | --- | --- | --- |
| 2267 | 6.30 | **защита тэн печи при отключении вентиляторов** |  | 160.25d? | 2023-06-09 09:00 | 2024-01-19 11:00 |  |  |  | 826.34d |  |  |  | 66h |  |
| 2268 | 6.30.1 | устиановить защиту на пускателе 380 1 линия |  | 2h | 2024-01-19 09:00 | 2024-01-19 11:00 |  |  |  | 826.34d |  | start no earlier than 2024-01-19 09:00 | Тимофеев В | 2h |  |
| 2269 | 6.30.2 | составить схему защиты |  | 1d? | 2023-06-09 09:00 | 2023-06-09 18:00 |  |  |  | 978.59d | 0d | start no earlier than 2023-06-09 09:00 | Домоводов К | 8h |  |
| 2270 | 6.30.3 | заявка |  | 1d? | 2023-06-12 09:00 | 2023-06-12 18:00 | 2269 |  |  | 978.59d | 0d | start no earlier than 2023-04-25 09:00 | Домоводов К | 8h |  |
| 2271 | 6.30.4 | оплата поставка |  | 5d | 2023-06-13 09:00 | 2023-06-19 18:00 | 2270 |  |  | 978.59d | 5d | start no earlier than 2023-05-02 09:00 | Малинина М | 40h |  |
| 2272 | 6.30.5 | сборка и монтаж |  | 1d? | 2023-06-27 09:00 | 2023-06-27 18:00 | 2271 |  |  | 973.59d |  | start no earlier than 2023-06-27 09:00 | Бобренок В | 8h |  |
| 2273 | 6.31 | Настройка даты на пробнике, нужно приподнять на 3-5 мм (ждем решение технологов, информация поменялась, читать письмо от 01.09.2026) |  | 3h | 2026-09-03 09:00 A | 2026-09-03 12:00 A |  | 100% |  |  |  | start no earlier than 2026-09-03 09:00 | Тимофеев В | 3h | 3h |
| 2274 | 7 | **техника** |  | 638.03d? | 2024-05-14 09:00 A | 2026-10-13 09:15 |  | 98% | 14.91d? | 106.56d |  |  |  | 52.5h | 51.25h |
| 2275 | 7.1 | не заводится TRF, сломана шпилька колесо. Контроль приезда приемка работ |  | 1h | 2026-08-17 09:00 A | 2026-08-17 10:00 A |  | 100% |  |  |  | start no earlier than 2026-08-17 09:00 | Шуранов Ю | 1h | 1h |
| 2276 | 7.2 | **капремонт погрузчика коматсу короткий** |  | 51.03d | 2026-08-13 09:00 A | 2026-10-13 09:15 |  | 91% | 4.64d | 106.56d |  |  |  | 2.75h | 2.5h |
| 2277 | 7.2.1 | заявка получить цену в тракресурс |  | 15min | 2026-08-13 09:00 A | 2026-08-13 09:15 A |  | 100% |  |  |  | start no earlier than 2026-08-13 09:00 | Домоводов К | 0.25h | 0.25h |
| 2278 | 7.2.2 | заявка получить цену в форклифт |  | 15min | 2026-08-13 09:15 A | 2026-08-13 09:30 A | 2277 | 100% |  |  |  | start no earlier than 2026-08-13 09:00 | Домоводов К | 0.25h | 0.25h |
| 2279 | 7.2.3 | получить КП 2 | milestone | 0d | 2026-08-17 09:00 A | 2026-08-17 09:00 A |  | 100% |  |  |  | start no earlier than 2026-08-17 09:00 | Домоводов К |  |  |
| 2280 | 7.2.4 | решение о дате | milestone | 0d | 2026-09-07 09:00 A | 2026-09-07 09:00 A | 2278FS+1d | 100% |  |  |  | start no earlier than 2026-09-07 09:00 | Домоводов К |  |  |
| 2281 | 7.2.5 | орг отправить погрузчик в ремонт / составить акт |  | 2h | 2026-09-01 09:00 A | 2026-09-01 11:00 A | 2278, 2280FS+1d | 100% |  |  |  | start no earlier than 2026-08-26 09:00 | Шуранов Ю | 2h | 2h |
| 2282 | 7.2.6 | контроль сроков ремонта |  | 15min | 2026-10-13 09:00 | 2026-10-13 09:15 | 2281FS+20d |  |  | 106.56d |  | start no earlier than 2026-10-13 09:00 | Зорькин В | 0.25h |  |
| 2283 | 7.3 | заказать по комплекту воздушных фильтров для погрузчиков |  | 1h | 2026-08-18 09:00 A | 2026-08-18 10:00 A |  | 100% |  |  |  | start no earlier than 2026-08-18 09:00 | Шуранов Ю | 1h | 1h |
| 2284 | 7.4 | провкрить моточасы для проведения ТО |  | 1h | 2026-08-18 09:00 A | 2026-08-18 10:00 A |  | 100% |  |  |  | start no earlier than 2026-08-18 09:00 | Шуранов Ю | 1h | 1h |
| 2285 | 7.5 | не заводиться trf погрузчик, посмотреть подачу топлива |  | 1h | 2026-05-25 08:00 A | 2026-05-25 10:00 A |  | 100% |  |  |  | start no earlier than 2026-05-25 08:00 | Тимофеев В; Шуранов Ю | 2h | 2h |
| 2286 | 7.6 | ТО карбюратора ТРФ организовать |  | 1h | 2026-05-27 09:00 A | 2026-05-27 10:00 A |  | 100% |  |  |  | start no earlier than 2026-05-27 09:00 | Шуранов Ю | 1h | 1h |
| 2287 | 7.7 | ренгулировка ремня погрузчик желтый №209490 контроль |  | 1h | 2026-05-14 09:00 A | 2026-05-14 10:00 A |  | 100% |  |  |  | start no earlier than 2026-05-14 09:00 | Шуранов Ю | 1h | 1h |
| 2288 | 7.8 | ремонт генераторов -найти фирму |  | 1d? | 2026-05-07 09:00 A | 2026-05-07 18:00 A |  | 100% |  |  |  | start no earlier than 2026-05-07 09:00 | Шуранов Ю | 8h | 8h |
| 2289 | 7.9 | греется мотор сменный погрузчик (вероятно помпа). Орг визит |  | 15min | 2026-04-27 09:00 A | 2026-04-27 09:15 A |  | 100% |  |  |  | start no earlier than 2026-04-27 08:00 | Шуранов Ю | 0.25h | 0.25h |
| 2290 | 7.10 | установить вентиляторы на погрузчики |  | 2h | 2026-04-27 08:00 A | 2026-04-27 11:00 A |  | 100% |  |  |  | start no earlier than 2026-04-27 08:00 | Тимофеев В | 2h | 2h |
| 2291 | 7.11 | заменить шланги гидравлики погрузчик ТРФ |  | 1d? | 2026-04-21 09:00 A | 2026-04-21 18:00 A |  | 100% |  |  |  | start no earlier than 2026-04-21 09:00 |  |  |  |
| 2292 | 7.12 | пригласить тракресурс |  | 1h | 2026-04-21 09:00 A | 2026-04-21 10:00 A |  | 100% |  |  |  | start no earlier than 2026-04-21 09:00 | Шуранов Ю | 1h | 1h |
| 2293 | 7.13 | проварить ковш трактора в слесарке |  | 4h | 2026-03-24 08:00 A | 2026-03-24 13:00 A |  | 100% |  |  |  | start no earlier than 2026-03-24 08:00 | Бобренок В | 4h | 4h |
| 2294 | 7.14 | контроль доставки / приемка погрузчи коматсу |  | 1h | 2026-03-13 09:00 A | 2026-03-13 10:00 A |  | 100% |  |  |  | start no earlier than 2026-03-13 09:00 | Шуранов Ю | 1h | 1h |
| 2295 | 7.15 | ремонт штабелер 5 цех ролик и опрное колесо. Контроль |  | 30min | 2026-03-13 09:00 A | 2026-03-13 09:30 A |  | 100% |  |  |  | start no earlier than 2026-03-13 09:00 | Шуранов Ю | 0.5h | 0.5h |
| 2296 | 7.16 | ремонт ковш трактор |  | 6h | 2026-03-03 09:00 A | 2026-03-03 16:00 A |  | 100% |  |  |  | start no earlier than 2026-03-03 08:00 | Некрасов А; Труфанов А | 12h | 12h |

| ID | WBS | Task | Type | Duration | Start | Finish | Predecessors | Complete | Remaining | Total slack | Constraint | Resources | Work | Actual work |
| --- | --- | --- | --- | --- | --- | --- | --- | --- | --- | --- | --- | --- | --- | --- |
| 2297 | 7.17 | **ремонт цепи желтый вилочный + ручник** |  | 0.16d | 2025-07-28 09:00 A | 2025-07-28 10:15 A |  | 100% |  |  |  |  | 1.25h | 1.25h |
| 2298 | 7.17.1 | контроль даты визита |  | 15min | 2025-07-28 09:00 A | 2025-07-28 09:15 A |  | 100% |  |  | start no earlier than 2025-07-28 09:00 | Шуранов Ю | 0.25h | 0.25h |
| 2299 | 7.17.2 | ремонт контроль \принять работы |  | 1h | 2025-07-28 09:15 A | 2025-07-28 10:15 A | 2298 | 100% |  |  | start no earlier than 2025-07-23 09:00 | Шуранов Ю | 1h | 1h |
| 2300 | 7.18 | реморнт педаль газ на 3d принтере |  | 1h | 2025-07-23 09:00 A | 2025-07-23 10:00 A |  | 100% |  |  | start no earlier than 2025-07-23 09:00 | Шуранов Ю | 1h | 1h |
| 2301 | 7.19 | реморнт педаль газ на 3d принтере |  | 1h | 2026-09-01 09:00 | 2026-09-01 10:00 |  |  |  | 144.47d | start no earlier than 2026-09-01 09:00 | Домоводов К | 1h |  |
| 2302 | 7.20 | ТО штабелеры кайтымовская орг |  | 1h | 2025-07-23 09:00 A | 2025-07-23 10:00 A |  | 100% |  |  | start no earlier than 2025-07-23 09:00 | Шуранов Ю | 1h | 1h |
| 2303 | 7.21 | заявка доводчик двери желт коматсу |  | 15min | 2024-05-14 09:00 A | 2024-05-14 09:15 A |  | 100% |  |  | start no earlier than 2024-05-14 09:00 | Шуранов Ю | 0.25h | 0.25h |
| 2304 | 7.22 | **ошибка 02а22 штабелер PS16N 414** |  | 0.12d | 2024-05-14 09:00 A | 2024-05-14 10:00 A |  | 100% |  |  |  |  | 1h | 1h |
| 2305 | 7.22.1 | составить рекламацию / вызов специалистов |  | 1h | 2024-05-14 09:00 A | 2024-05-14 10:00 A |  | 100% |  |  | start no earlier than 2024-05-14 09:00 | Шуранов Ю | 1h | 1h |
| 2306 | 7.23 | **неисправна кнопка стоп штабелер 5 цех** |  | 0.19d | 2024-05-14 09:00 A | 2024-05-14 10:30 A |  | 100% |  |  |  |  | 1.5h | 1.5h |
| 2307 | 7.23.1 | орг работы по замене калеса штабелера |  | 1h | 2024-05-14 09:00 A | 2024-05-14 10:00 A |  | 100% |  |  | start no earlier than 2024-05-14 09:00 | Шуранов Ю | 1h | 1h |
| 2308 | 7.23.2 | орг забор штабелера на ремонт гидроциондра. Договор с сервисной компанией о дате, обменть штабелер с 2 цеха |  | 30min | 2024-05-14 10:00 A | 2024-05-14 10:30 A | 2307 | 100% |  |  | start no earlier than 2024-05-14 09:00 | Шуранов Ю | 0.5h | 0.5h |
| 2309 | 7.24 | **ремонт стеклоочиститель вилочного** |  | 0.5d | 2024-05-14 09:00 A | 2024-05-14 13:00 A |  | 100% |  |  |  |  | 5h | 5h |
| 2310 | 7.24.1 | осмотр механизма чтто сломалось |  | 4h | 2024-05-14 09:00 A | 2024-05-14 13:00 A |  | 100% |  |  | start no earlier than 2024-05-14 09:00 | Шуранов Ю | 4h | 4h |
| 2311 | 7.24.2 | заявка на покупку стеклоочист |  | 1h | 2024-05-14 09:00 A | 2024-05-14 10:00 A |  | 100% |  |  | start no earlier than 2024-05-14 09:00 | Шуранов Ю | 1h | 1h |
| 2312 | 7.25 | купить ремень на генератор |  | 2h | 2024-05-14 09:00 A | 2024-05-14 11:00 A |  | 100% |  |  | start no earlier than 2024-05-14 09:00 | Шуранов Ю | 2h | 2h |
| 2313 | 8 | **Лаборатория** |  | 0.06d | 2026-04-20 09:00 A | 2026-04-20 09:30 A |  | 100% |  |  |  |  | 1h | 1h |
| 2314 | 8.1 | Отнести старый бульбулятор в архив |  | 30min | 2026-04-20 09:00 A | 2026-04-20 09:30 A |  | 100% |  |  | start no earlier than 2026-04-20 09:00 | Тимофеев В | 0.5h | 0.5h |
| 2315 | 8.2 | Отнести короб от нового бульбулятора тоже в архив |  | 30min | 2026-04-20 09:00 A | 2026-04-20 09:30 A |  | 100% |  |  | start no earlier than 2026-04-20 09:00 | Тимофеев В | 0.5h | 0.5h |
| 2316 | 9 | **слесарное помещение** |  | 95d? | 2026-06-11 09:00 A | 2026-10-11 11:00 |  | 98% | 1.61d? | 107.59d |  |  | 30.5h | 29h |
| 2317 | 9.1 | Доделать электрод | manual | 2h | 2026-10-11 09:00 A | 2026-10-11 11:00 A | 2318 | 100% |  |  |  | Бобренок В | 2h | 2h |
| 2318 | 9.2 | Разбор полок на большом стеллаже, наведенеие порядка | manual | 3h | 2026-10-10 09:00 A | 2026-10-10 12:00 A |  | 100% |  |  | start no earlier than 2026-10-10 09:00 | Бундин В | 3h | 3h |
| 2319 | 9.3 | Ремонт электродов парогенератора, один из электродов травит, пересобрать |  | 3h | 2026-10-05 09:00 A | 2026-10-05 12:00 A |  | 100% |  |  | start no earlier than 2026-10-05 09:00 | Бобренок В | 3h | 3h |
| 2320 | 9.4 | **уборка и сортировка. Приготовить, дневные проверят и продолжат** |  | 3.25d | 2026-09-22 09:00 A | 2026-09-25 11:00 A |  | 100% |  |  |  |  | 9h | 9h |
| 2321 | 9.4.1 | освободить стеллаж для оперативного хранения с ФИО |  | 1h | 2026-09-22 16:00 A | 2026-09-22 17:00 A | 2324 | 100% |  |  | start no earlier than 2026-09-22 09:00 | Макаревич А | 1h | 1h |
| 2322 | 9.4.2 | куча №1 - не годное на выброс |  | 2h | 2026-09-22 09:00 A | 2026-09-22 11:00 A |  | 100% |  |  | start no earlier than 2026-09-22 09:00 | Макаревич А | 2h | 2h |
| 2323 | 9.4.3 | куча №2 - годное, но хранить нужно на дальних складах |  | 2h | 2026-09-22 11:00 A | 2026-09-22 13:00 A | 2322 | 100% |  |  | start no earlier than 2026-09-21 09:00 | Макаревич А | 2h | 2h |
| 2324 | 9.4.4 | куча №3 - не понятно где хранить. |  | 2h | 2026-09-22 14:00 A | 2026-09-22 16:00 A | 2323 | 100% |  |  | start no earlier than 2026-09-18 08:00 | Макаревич А | 2h | 2h |
| 2325 | 9.4.5 | сортировка и перемещение мусор / металлолм/ дальние стеллажи |  | 2h | 2026-09-25 09:00 A | 2026-09-25 11:00 A |  | 100% |  |  | start no earlier than 2026-09-25 09:00 | Бундин В | 2h | 2h |
| 2326 | 9.5 | отвезти паллет возле слесарки в синий | manual | 1h | 2026-08-30 09:00 A | 2026-08-30 10:00 A |  | 100% |  |  | start no earlier than 2026-08-30 09:00 | Бундин В | 1h | 1h |
| 2327 | 9.6 | заварить хомут от деко 5 ц. |  | 2h | 2026-07-02 09:00 A | 2026-07-02 11:00 A |  | 100% |  |  | start no earlier than 2026-07-02 09:00 | Тимофеев В | 2h | 2h |
| 2328 | 9.7 | доставить временно наш компрессор на 3 склад для обдува погрузчиков | manual | 1h | 2026-06-29 09:00 A | 2026-06-29 10:00 A |  | 100% |  |  | start no earlier than 2026-06-29 09:00 | Тимофеев В | 1h | 1h |
| 2329 | 9.8 | ремонт 2-х ручных запайщиков- запчасти на складе (нагревательные блоки, тены) | manual | 2h | 2026-06-27 09:00 A | 2026-06-27 11:00 A |  | 100% |  |  | start no earlier than 2026-06-27 09:00 | Дедов В | 2h | 2h |
| 2330 | 9.9 | оставляем порядок после своей смены в слесарке |  | 0.5h | 2026-06-12 09:00 | 2026-06-12 09:30 |  |  |  | 201.53d | start no earlier than 2026-06-12 09:00 | Дедов В; Бобренок В; Бундин В | 1.5h |  |
| 2331 | 9.10 | Проверка напольных весов, почему не работают, возможно отошел контакт |  | 2h | 2026-07-24 09:00 A | 2026-07-24 11:00 A |  | 100% |  |  | start no earlier than 2026-07-24 09:00 | Бундин В | 2h | 2h |
| 2332 | 9.11 | уборка |  | 0.25d? | 2026-06-11 09:00 A | 2026-06-11 11:00 A |  | 100% |  |  |  | Труфанов А | 2h | 2h |
| 2333 | 9.12 | проверить весы настольные (показывают вес больше, если получится калибровать) |  | 2h | 2026-06-11 09:00 A | 2026-06-11 11:00 A |  | 100% |  |  | start no earlier than 2026-06-11 09:00 | Дедов В | 2h | 2h |

| ID | WBS | Task | Duration | Start | Finish | Predecessors | Complete | Remaining | Total slack | Free slack | Constraint | Resources | Work | Actual work |
| --- | --- | --- | --- | --- | --- | --- | --- | --- | --- | --- | --- | --- | --- | --- |
| 2334 | 10 | **ЗИП ремонт** | 653.25d? | 2024-05-09 09:00 A | 2026-10-29 11:00 |  | 53% | 305.06d? | 94.34d |  |  |  | 841.42h | 399.33h |
| 2335 | 10.1 | Восстановление платы от пробника, зачистка контактов, где погоревшие пины соединение через внешний клемник | 3h | 2026-10-02 09:00 | 2026-10-02 12:00 |  |  |  | 114.22d |  | start no earlier than 2026-10-02 08:00 | Дедов В | 3h |  |
| 2336 | 10.2 | **ремонт блоков управления датерами** | 0.38d | 2026-10-02 09:00 | 2026-10-02 12:00 |  |  |  | 114.22d |  |  |  | 3h |  |
| 2337 | 10.2.1 | составить схему подключения - мотор / датчик / тен / -- первые компоненты на плате блока (основной упор на эту задачу) Продолжаем делать | 3h | 2026-10-02 09:00 | 2026-10-02 12:00 |  |  |  | 114.22d |  | start no earlier than 2026-10-02 09:00 | Дедов В | 3h |  |
| 2339 | 10.3 | **Собрать редуктор питателя, который разобранный на верстаке** | 7.09d | 2026-09-28 09:00 A | 2026-10-06 09:45 |  | 73% | 1.93d | 111.5d |  |  |  | 2.75h | 2h |
| 2340 | 10.3.1 | отпраитвь на перемонтку | 15min | 2026-09-28 09:00 | 2026-09-28 09:15 |  |  |  | 111.5d | 0d | start no earlier than 2026-09-28 09:00 | Зорькин В | 0.25h |  |
| 2341 | 10.3.2 | контроль | 15min | 2026-10-04 09:15 | 2026-10-04 09:30 | 2340FS+5d |  |  | 111.5d | 0d | start no earlier than 2026-09-25 08:00 | Зорькин В | 0.25h |  |
| 2342 | 10.3.3 | орг забрать | 15min | 2026-10-06 09:30 | 2026-10-06 09:45 | 2341FS+2d |  |  | 111.5d |  | start no earlier than 2026-09-25 08:00 | Зорькин В | 0.25h |  |
| 2343 | 10.3.4 | сборка | 2h | 2026-09-29 09:00 A | 2026-09-29 11:00 A | 2342FS+1d | 100% |  |  |  | start no earlier than 2026-09-25 08:00 | Бундин В | 2h | 2h |
| 2344 | 10.4 | **Дефектовка двигателя от питателя прекондиционера/ прозвонить (возможно подготовить для сдачи на перемотку)** | 8.25d | 2026-09-04 09:00 A | 2026-09-13 11:00 |  | 50% | 4.12d | 133.34d |  |  |  | 4h | 2h |
| 2345 | 10.4.1 | разбрка тест | 1h | 2026-09-04 09:00 A | 2026-09-04 10:00 A |  | 100% |  |  |  | start no earlier than 2026-09-04 09:00 | Бобренок В | 1h | 1h |
| 2346 | 10.4.2 | тест 2 с редуктором | 1h | 2026-09-08 09:00 A | 2026-09-08 10:00 A |  | 100% |  |  |  | start no earlier than 2026-09-08 08:00 | Тимофеев В | 1h | 1h |
| 2347 | 10.4.3 | разборка ревизия | 2h | 2026-09-13 09:00 | 2026-09-13 11:00 |  |  |  | 133.34d |  | start no earlier than 2026-09-13 09:00 | Макаревич А | 2h |  |
| 2348 | 10.5 | **ремонт редутор печи №?** | 26.31d | 2026-09-05 09:00 A | 2026-10-02 11:30 |  | 52% | 12.53d | 114.28d |  |  |  | 5.25h | 2.75h |
| 2349 | 10.5.1 | дефектовка редуктора печи 2 цех, лежит в слесарке | 2h | 2026-09-05 09:00 A | 2026-09-05 11:00 A |  | 100% |  |  |  | start no earlier than 2026-09-05 09:00 | Макаревич А | 2h | 2h |
| 2350 | 10.5.2 | возможно ли установить тавотницу на подшипник червяка? | 15min | 2026-09-10 09:00 A | 2026-09-10 09:15 A |  | 100% |  |  |  | start no earlier than 2026-09-10 09:00 | Тимофеев В | 0.25h | 0.25h |
| 2351 | 10.5.3 | заказ шестерни червя в ЗИП - отправить курьера | 15min | 2026-09-09 09:00 A | 2026-09-09 09:15 A | 2349 | 100% |  |  |  | start no earlier than 2026-09-09 09:00 | Зорькин В | 0.25h | 0.25h |
| 2352 | 10.5.4 | контроль изг шетесиерен | 15min | 2026-09-19 09:15 A | 2026-09-19 09:30 A | 2351FS+10d | 100% |  |  |  | start no earlier than 2026-09-08 08:00 | Зорькин В | 0.25h | 0.25h |
| 2353 | 10.5.5 | заказ шестерни червя в ЗИП - отправить курьера | 15min | 2026-09-21 09:00 | 2026-09-21 09:15 | 2349 |  |  | 114.28d | 0d | start no earlier than 2026-09-21 09:00 | Зорькин В | 0.25h |  |
| 2354 | 10.5.6 | контроль изг шетесиерен | 15min | 2026-10-01 09:15 | 2026-10-01 09:30 | 2353FS+10d |  |  | 114.28d | 0d | start no earlier than 2026-09-08 08:00 | Зорькин В | 0.25h |  |
| 2355 | 10.5.7 | сборка редутор венец | 2h | 2026-10-02 09:30 | 2026-10-02 11:30 | 2352FS+1d, 2354FS+1d |  |  | 114.28d |  | start no earlier than 2026-09-20 09:00 | Макаревич А | 2h |  |
| 2356 | 10.6 | ремонт оборотные сетки-поддоны от печи от 2ц | 2h | 2026-09-13 09:00 | 2026-09-13 11:00 |  |  |  | 133.34d |  | start no earlier than 2026-09-13 09:00 | Макаревич А | 2h |  |
| 2357 | 10.7 | подготовить электродную группу для 2 цеха | 3h | 2026-08-25 09:00 A | 2026-08-25 12:00 A |  | 100% |  |  |  | start no earlier than 2026-08-25 08:00 | Бундин В | 3h | 3h |
| 2358 | 10.8 | пепенос трубы нерж с 3ц на синий склад | 1h | 2026-08-24 09:00 | 2026-08-24 10:00 |  |  |  | 150.47d |  | start no earlier than 2026-08-24 09:00 | Некрасов А; Тимофеев В | 2h |  |
| 2359 | 10.9 | ремонт электрод парогенертора для 2ц | 4h | 2026-08-18 09:00 A | 2026-08-18 13:00 A |  | 100% |  |  |  | start no earlier than 2026-08-18 09:00 | Бобренок В | 4h | 4h |
| 2360 | 10.10 | перевоз батареи свинец от погрузчика на синий склад | 30min | 2026-08-12 09:00 A | 2026-08-12 09:30 A |  | 100% |  |  |  | start no earlier than 2026-08-12 09:00 | Макаревич А | 0.5h | 0.5h |

| ID | WBS | Task | Type | Duration | Start | Finish | Predecessors | Complete | Actual start | Actual finish | Constraint | Resources | Work | Actual work |
| --- | --- | --- | --- | --- | --- | --- | --- | --- | --- | --- | --- | --- | --- | --- |
| 2361 | 10.11 | **заточка ножей** |  | 6.03d | 2026-08-13 09:00 A | 2026-08-21 09:15 A |  | 100% |  |  |  |  | 0.5h | 0.5h |
| 2362 | 10.11.1 | разместить ЛТ70 курьеру, отметиь журнал |  | 15min | 2026-08-13 09:00 A | 2026-08-13 09:15 A |  | 100% |  |  | start no earlier than 2026-08-13 09:00 | Зорькин В | 0.25h | 0.25h |
| 2363 | 10.11.2 | контроль, орг забрать |  | 15min | 2026-08-21 09:00 A | 2026-08-21 09:15 A |  | 100% |  |  | start no earlier than 2026-08-21 09:00 | Шуранов Ю | 0.25h | 0.25h |
| 2364 | 10.12 | **ножевой узел для 1ц** |  | 0.03d | 2026-08-13 09:00 A | 2026-08-13 09:15 A |  | 100% |  |  |  |  | 0.25h | 0.25h |
| 2365 | 10.12.1 | контроль поставки |  | 15min | 2026-08-13 09:00 A | 2026-08-13 09:15 A |  | 100% |  |  | start no earlier than 2026-08-13 09:00 | Домоводов К | 0.25h | 0.25h |
| 2366 | 10.13 | подготовить электроды для парогенератора цех 1 |  | 4h | 2026-08-05 08:00 A | 2026-08-05 13:00 A |  | 100% |  |  | start no earlier than 2026-08-05 08:00 | Макаревич А | 4h | 4h |
| 2367 | 10.14 | восстановить голову насоса гидрализата (в слесарке) подписать | manual | 2h | 2026-08-01 09:00 A | 2026-08-01 11:00 A |  | 100% |  |  | start no earlier than 2026-08-01 09:00 | Бундин В | 2h | 2h |
| 2368 | 10.15 | **восстановить сетку спечи (она в слесарке)** |  | 1d? | 2026-08-14 09:00 | 2026-08-14 18:00 |  | 100% | 2026-08-03 09:00 | 2026-08-03 18:00 |  |  | 8h | 8h |
| 2369 | 10.15.1 | заказать сверла по нерж. М5 и М6 |  | 1d? | 2026-08-03 09:00 A | 2026-08-03 18:00 A |  | 100% |  |  | start no earlier than 2026-08-03 08:00 | Шуранов Ю | 8h | 8h |
| 2370 | 10.16 | подготовить антиэлектроды по аналогии с нашими (все на складе) | manual | 5h | 2026-08-01 09:00 A | 2026-08-01 15:00 A |  | 100% |  |  | start no earlier than 2026-08-01 09:00 | Бундин В | 5h | 5h |
| 2371 | 10.17 | подготовить электродную группу для парогенератора |  | 3h | 2026-06-12 09:00 A | 2026-06-12 12:00 A |  | 100% |  |  | start no earlier than 2026-06-12 09:00 | Бундин В | 3h | 3h |
| 2372 | 10.18 | собрать 2 стула для ИТР |  | 2h | 2026-06-07 09:00 A | 2026-06-08 11:00 A |  | 100% |  |  | start no earlier than 2026-06-07 09:00 | Бобренок В | 2h | 2h |
| 2373 | 10.19 | **покрасить швейлеры возле слесарки(грунтовка, затем серый цвет)** |  | 0.25d | 2026-06-12 09:00 A | 2026-06-12 11:00 A |  | 100% |  |  |  | Бобренок В | 4h | 4h |
| 2374 | 10.19.1 | болгаркой убрать сварочные сопли и покрасить |  | 2h | 2026-06-12 09:00 A | 2026-06-12 11:00 A |  | 100% |  |  | start no earlier than 2026-06-12 09:00 | Бундин В | 2h | 2h |
| 2375 | 10.20 | подготовить фильтры для кондиционеров, замена фильтр ткани. Находятся в слесарке | manual | 2h | 2026-06-14 09:00 A | 2026-06-14 11:00 A |  | 100% |  |  | start no earlier than 2026-06-14 09:00 | Бундин В | 2h | 2h |
| 2376 | 10.21 | **заявка на фильеры от 02.06 1ц и 2ц** |  | 7.19d | 2026-06-02 09:00 A | 2026-06-11 10:30 A |  | 100% |  |  |  |  | 4.5h | 4.5h |
| 2377 | 10.21.1 | подготовить чертежи по ТЗ |  | 2h | 2026-06-02 09:00 A | 2026-06-02 11:00 A |  | 100% |  |  | start no earlier than 2026-06-02 09:00 | Домоводов К | 2h | 2h |
| 2378 | 10.21.2 | **партия 1** |  | 6.19d | 2026-06-03 09:00 A | 2026-06-11 10:30 A |  | 100% |  |  |  |  | 1.5h | 1.5h |
| 2379 | 10.21.2.1 | разместить токарю заварка фильер + шлифвка |  | 30min | 2026-06-03 09:00 A | 2026-06-03 09:30 A |  | 100% |  |  | start no earlier than 2026-06-03 08:00 | Шуранов Ю | 0.5h | 0.5h |
| 2380 | 10.21.2.2 | забрать заваренные / разместить на изготовление дюз |  | 30min | 2026-06-07 09:30 A | 2026-06-08 09:30 A | 2379FS+4d | 100% |  |  | start no earlier than 2026-06-03 08:00 | Шуранов Ю | 0.5h | 0.5h |
| 2381 | 10.21.2.3 | забрать готовые |  | 30min | 2026-06-11 10:00 A | 2026-06-11 10:30 A | 2380FS+4d | 100% |  |  | start no earlier than 2026-06-03 08:00 | Шуранов Ю | 0.5h | 0.5h |
| 2382 | 10.21.3 | **партия 2** |  | 3.12d | 2026-06-04 09:00 A | 2026-06-09 10:00 A |  | 100% |  |  |  |  | 1h | 1h |
| 2383 | 10.21.3.1 | разместить готовые балванки на прожиг отверстий |  | 30min | 2026-06-04 09:00 A | 2026-06-04 09:30 A |  | 100% |  |  | start no earlier than 2026-06-04 09:00 | Шуранов Ю | 0.5h | 0.5h |
| 2384 | 10.21.3.2 | забрать готовые |  | 30min | 2026-06-09 09:30 A | 2026-06-09 10:00 A | 2383FS+5d | 100% |  |  | start no earlier than 2026-06-03 08:00 | Шуранов Ю | 0.5h | 0.5h |

| ID | WBS | Task | Duration | Start | Finish | Predecessors | Complete | Total slack | Free slack | Constraint | Resources | Work | Actual work |
| --- | --- | --- | --- | --- | --- | --- | --- | --- | --- | --- | --- | --- | --- |
| 2385 | 10.22 | **зип тенов на печь 70 и 85 + шестерни питатель 70** | 30.06d | 2026-05-28 09:00 A | 2026-07-09 09:30 A |  | 100% |  |  |  |  | 0.75h | 0.75h |
| 2386 | 10.22.1 | запрос Настя, получить счет | 15min | 2026-05-28 09:00 A | 2026-05-28 09:15 A |  | 100% |  |  | start no earlier than 2026-05-28 09:00 | Домоводов К | 0.25h | 0.25h |
| 2387 | 10.22.2 | оплата | 15min | 2026-06-04 09:00 A | 2026-06-04 09:15 A | 2386FS+2d | 100% |  |  | start no earlier than 2026-06-04 09:00 | Домоводов К | 0.25h | 0.25h |
| 2388 | 10.22.3 | контроль поставки | 15min | 2026-07-09 09:15 A | 2026-07-09 09:30 A | 2387FS+30d | 100% |  |  | start no earlier than 2026-05-27 08:00 | Зорькин В | 0.25h | 0.25h |
| 2389 | 10.23 | подготовка к инвентаризации | 3h | 2026-05-26 09:00 A | 2026-05-26 12:00 A |  | 100% |  |  | start no earlier than 2026-05-26 09:00 | Бундин В | 3h | 3h |
| 2390 | 10.24 | посчитать и записать какие и какое количество автоматов и контакторов есть в слесарке | 1h | 2026-05-23 09:00 A | 2026-05-25 10:00 A |  | 100% |  |  | start no earlier than 2026-05-23 09:00 | Макаревич А | 1h | 1h |
| 2391 | 10.25 | передать весы (малые в 1 цех, большие в 5 цех) со слесарки | 1h | 2026-05-22 09:00 A | 2026-05-22 10:00 A |  | 100% |  |  | start no earlier than 2026-05-22 09:00 | Макаревич А | 1h | 1h |
| 2392 | 10.26 | проверить работает или нет двигатель с накопительного стола цех 1- Валентин покажет. | 1h | 2026-05-19 08:00 A | 2026-05-19 10:00 A |  | 100% |  |  | start no earlier than 2026-05-19 08:00 | Дедов В | 1h | 1h |
| 2393 | 10.27 | наточить ножи для ц.2 | 1h | 2026-05-19 09:00 A | 2026-05-19 10:00 A |  | 100% |  |  | start no earlier than 2026-05-19 09:00 | Тимофеев В | 1h | 1h |
| 2394 | 10.28 | подготовка к инвентаризации (посчитать какие и метраж кабеля в слесарке и желтом нашей половине) | 2h | 2026-05-24 09:00 A | 2026-05-25 11:00 A |  | 100% |  |  | start no earlier than 2026-05-24 09:00 | Дедов В | 2h | 2h |
| 2395 | 10.29 | подготовить рабочее место в слесарке для работы на кровле Олега | 1h | 2026-05-15 09:00 A | 2026-05-15 10:00 A |  | 100% |  |  | start no earlier than 2026-05-15 09:00 | Некрасов А; Труфанов А; Тимофеев В; Макаревич А | 4h | 4h |
| 2396 | 10.30 | **ремонт инсекютер с 1ц в слесарке. Повесить в цехе, зафиксировать в журнал мастера** | 0.12d | 2026-05-19 09:00 A | 2026-05-19 10:00 A |  | 100% |  |  |  |  | 1h | 1h |
| 2397 | 10.30.1 | взять светильник "антимуха" у Луговских и повесить на входе в корридор между раздевалками | 1h | 2026-05-19 09:00 A | 2026-05-19 10:00 A |  | 100% |  |  | start no earlier than 2026-05-19 09:00 | Дедов В | 1h | 1h |
| 2398 | 10.31 | **орг ремонт мотор с вращаюбщего барабана 1ц** | 0.16d | 2026-09-01 09:00 | 2026-09-01 10:15 |  |  | 144.44d |  |  |  | 1.25h |  |
| 2399 | 10.31.1 | подписать шильдик. На веревочке картонка / пластик | 15min | 2026-09-01 09:00 | 2026-09-01 09:15 |  |  | 144.44d | 0d | start no earlier than 2026-09-01 09:00 | Шуранов Ю | 0.25h |  |
| 2400 | 10.31.2 | орг ремонт | 1h | 2026-09-01 09:15 | 2026-09-01 10:15 | 2399 |  | 144.44d |  | start no earlier than 2026-09-01 09:00 | Шуранов Ю | 1h |  |
| 2401 | 10.32 | получить на складе резинки на двери прекондиционеров и выдать цех 1 и 2 | 1h | 2026-05-11 09:00 A | 2026-05-11 10:00 A |  | 100% |  |  | start no earlier than 2026-05-11 09:00 |  |  |  |
| 2402 | 10.33 | подготовить электродную группу для 1 цеха | 3h | 2026-05-11 09:00 A | 2026-05-11 12:00 A |  | 100% |  |  | start no earlier than 2026-05-11 09:00 | Бундин В | 3h | 3h |
| 2403 | 10.34 | на емкость нерж сделать сгон и поплавок | 4h | 2026-05-09 09:00 A | 2026-05-11 13:00 A |  | 100% |  |  | start no earlier than 2026-05-09 09:00 | Макаревич А | 4h | 4h |
| 2404 | 10.35 | отвезти термоодеяло с слесарки в синий склад | 1h | 2026-05-11 09:00 A | 2026-05-11 10:00 A |  | 100% |  |  | start no earlier than 2026-05-11 09:00 | Бундин В | 1h | 1h |
| 2405 | 10.36 | приехали дроселя для светильников, восстановить не рабочие | 4h | 2026-05-12 09:00 A | 2026-05-12 13:00 A |  | 100% |  |  | start no earlier than 2026-05-12 09:00 | Бундин В | 4h | 4h |
| 2406 | 10.37 | **орг ремонт мотор с конв №2 1 линия 1ц** | 0.25d | 2026-09-01 09:00 | 2026-09-01 11:00 |  |  | 144.34d |  |  |  | 2h |  |
| 2407 | 10.37.1 | подписать шильдик | 60min | 2026-09-01 09:00 | 2026-09-01 10:00 |  |  | 144.34d | 0d | start no earlier than 2026-09-01 09:00 | Шуранов Ю | 1h |  |
| 2408 | 10.37.2 | орг ремонт | 1h | 2026-09-01 10:00 | 2026-09-01 11:00 | 2407 |  | 144.34d |  | start no earlier than 2026-05-14 09:00 | Шуранов Ю | 1h |  |
| 2409 | 10.38 | сборка редуктор с шлюз питателя (фото в чате 14.05) | 3h | 2026-08-31 09:00 A | 2026-08-31 12:00 A |  | 100% |  |  | start no earlier than 2026-09-02 09:00 | Тимофеев В | 3h | 3h |

| ID | WBS | Task | Type | Duration | Start | Finish | Predecessors | Complete | Constraint | Resources | Work | Actual work |
| --- | --- | --- | --- | --- | --- | --- | --- | --- | --- | --- | --- | --- |
| 2410 | 10.39 | **собрать мотор-редуктор прекондиционера в слесарке (сальники на складе в лотках снизу подписаны)** |  | 0.12d | 2026-06-15 09:00 A | 2026-06-15 10:00 A |  | 100% |  | Бундин В | 3h | 3h |
| 2411 | 10.39.1 | транспортировка в синий склад |  | 1h | 2026-06-15 09:00 A | 2026-06-15 10:00 A |  | 100% | start no earlier than 2026-06-15 09:00 | Тимофеев В; Некрасов А | 2h | 2h |
| 2412 | 10.40 | **вскрыть листогиб** |  | 4.5d | 2026-05-09 09:00 A | 2026-05-15 13:00 A |  | 100% |  |  | 11.17h | 11.17h |
| 2413 | 10.40.1 | проверить работу листогиба (попробовать загнуть нерж) |  | 1h | 2026-05-09 09:00 A | 2026-05-11 10:00 A |  | 100% | start no earlier than 2026-05-09 09:00 | Макаревич А | 1h | 1h |
| 2414 | 10.40.2 | как удлинить ручки, предложение |  | 5min | 2026-05-13 09:00 A | 2026-05-13 09:05 A |  | 100% | start no earlier than 2026-05-13 09:00 | Труфанов А | 0.08h | 0.08h |
| 2415 | 10.40.3 | куда крепить стационарно. Синий склад /контейнер. Предложения. |  | 5min | 2026-05-13 09:00 A | 2026-05-13 09:05 A |  | 100% | start no earlier than 2026-05-13 09:00 | Труфанов А | 0.08h | 0.08h |
| 2416 | 10.40.4 | изготовить раму для крепления к полу |  | 4h | 2026-05-15 09:00 A | 2026-05-15 13:00 A |  | 100% | start no earlier than 2026-05-15 09:00 | Тимофеев В; Макаревич А | 8h | 8h |
| 2417 | 10.40.5 | усилить ручки |  | 1h | 2026-05-15 09:00 A | 2026-05-15 10:00 A |  | 100% | start no earlier than 2026-05-15 09:00 | Тимофеев В; Макаревич А | 2h | 2h |
| 2418 | 10.41 | вывезти питатель на синий склад |  | 1h | 2026-05-05 09:00 A | 2026-05-05 10:00 A |  | 100% | start no earlier than 2026-05-05 09:00 | Тимофеев В | 1h | 1h |
| 2419 | 10.42 | транспортировка гильз и шнеков на синий склад (уложить по приходам из китая) |  | 3h | 2026-05-05 09:00 A | 2026-05-05 12:00 A |  | 100% | start no earlier than 2026-05-05 09:00 | Тимофеев В; Бобренок В; Шуранов Ю | 9h | 9h |
| 2420 | 10.43 | найти на синем складе комплектующие для инвентаризации с Алексеем |  | 3h | 2026-05-05 09:00 A | 2026-05-05 12:00 A |  | 100% | start no earlier than 2026-05-05 08:00 | Шуранов Ю | 3h | 3h |
| 2421 | 10.44 | посчитать все валы от транспортеров, занести в таблицу учета |  | 4h | 2026-05-11 09:00 A | 2026-05-11 13:00 A |  | 100% | start no earlier than 2026-05-09 09:00 | Шуранов Ю | 4h | 4h |
| 2422 | 10.45 | посчитать сколько валов для транспортеров Теко в слесарке |  | 1h | 2026-04-30 09:00 A | 2026-04-30 10:00 A |  | 100% | start no earlier than 2026-04-30 09:00 | Шуранов Ю | 1h | 1h |
| 2423 | 10.46 | уборка остатки металл в контейнер |  | 1h | 2026-04-29 09:00 A | 2026-04-29 10:00 A |  | 100% | start no earlier than 2026-04-29 09:00 | Некрасов А; Тимофеев В; Труфанов А; Бундин В | 4h | 4h |
| 2424 | 10.47 | **ЗИП на ПГ антиэлектрод** |  | 33d? | 2026-05-13 09:00 A | 2026-06-26 18:00 A |  | 100% |  |  | 9.5h | 9.5h |
| 2425 | 10.47.1 | поиск в продаже труба нерж ф205 (проверить у Тимофеева диамтр) |  | 1h | 2026-05-13 09:00 A | 2026-05-13 10:00 A |  | 100% | start no earlier than 2026-05-13 09:00 | Зорькин В | 1h | 1h |
| 2426 | 10.47.2 | заявка |  | 15min | 2026-05-13 10:00 A | 2026-05-13 10:15 A | 2425 | 100% | start no earlier than 2026-04-24 08:00 | Зорькин В | 0.25h | 0.25h |
| 2427 | 10.47.3 | контроль доставки. Карабанов размещает у свои |  | 15min | 2026-05-19 09:00 A | 2026-05-19 09:15 A | 2426FS+5d | 100% | start no earlier than 2026-05-19 09:00 | Зорькин В | 0.25h | 0.25h |
| 2428 | 10.47.4 | монтаж |  | 1d? | 2026-06-26 09:00 A | 2026-06-26 18:00 A | 2427FS+2d | 100% | start no earlier than 2026-06-26 09:00 | Тимофеев В | 8h | 8h |
| 2429 | 10.48 | **ремонт шуруповерт макита** |  | 40d | 2026-04-19 09:00 A | 2026-06-14 11:00 A |  | 100% |  |  | 5h | 5h |
| 2430 | 10.48.1 | разобрать шуруповерт макита, выяснить с редуктором проблема или нет | manual | 2h | 2026-04-19 09:00 A | 2026-04-19 11:00 A |  | 100% | start no earlier than 2026-04-19 09:00 | Дедов В | 2h | 2h |
| 2431 | 10.48.2 | отправить фидео запрос о ремонте в сервисн центр |  | 1h | 2026-04-20 09:00 A | 2026-04-20 10:00 A |  | 100% | start no earlier than 2026-04-20 08:00 | Зорькин В | 1h | 1h |
| 2432 | 10.48.3 | конртроль / решение о списании | milestone | 0d | 2026-04-27 09:00 A | 2026-04-27 09:00 A |  | 100% | start no earlier than 2026-04-27 09:00 | Зорькин В |  |  |
| 2433 | 10.48.4 | попробовать собрать шуроповерт, находится в слесарке | manual | 2h | 2026-06-14 09:00 A | 2026-06-14 11:00 A |  | 100% | start no earlier than 2026-06-14 09:00 | Бундин В | 2h | 2h |
| 2434 | 10.49 | взять винты пота м6х25 и перекрутить на сетке для печи | manual | 1h | 2026-04-20 09:00 A | 2026-04-20 10:00 A |  | 100% | start no earlier than 2026-04-20 09:00 | Тимофеев В | 1h | 1h |

| ID | WBS | Task | Type | Duration | Start | Finish | Predecessors | Complete | Remaining | Total slack | Constraint | Resources | Work | Actual work |
| --- | --- | --- | --- | --- | --- | --- | --- | --- | --- | --- | --- | --- | --- | --- |
| 2435 | 10.50 | **шестерня питателя LT85** |  | 7.01d | 2026-04-08 09:00 A | 2026-04-17 09:05 |  | 94% | 0.44d | 241.58d |  |  | 1.33h | 1.25h |
| 2436 | 10.50.1 | **1. заказ с китая** |  | 7.01d | 2026-04-08 09:00 A | 2026-04-17 09:05 |  | 75% | 1.75d | 241.58d |  |  | 0.33h | 0.25h |
| 2437 | 10.50.1.1 | запрос / контроль |  | 15min | 2026-04-08 09:00 A | 2026-04-08 09:15 A |  | 100% |  |  | start no earlier than 2026-04-08 09:00 | Шуранов Ю | 0.25h | 0.25h |
| 2438 | 10.50.1.2 | контроль |  | 5min | 2026-04-17 09:00 | 2026-04-17 09:05 |  |  |  | 241.58d | start no earlier than 2026-04-17 09:00 | Шуранов Ю | 0.08h |  |
| 2439 | 10.50.2 | **2. изготовление по образцу** |  | 5.03d | 2026-04-08 09:00 A | 2026-04-15 09:15 A |  | 100% |  |  |  |  | 1h | 1h |
| 2440 | 10.50.2.1 | выяснить возможносить изготвления |  | 30min | 2026-04-08 09:00 A | 2026-04-08 09:30 A |  | 100% |  |  | start no earlier than 2026-04-08 09:00 | Зорькин В | 0.5h | 0.5h |
| 2441 | 10.50.2.2 | отправить курьера |  | 15min | 2026-04-08 09:30 A | 2026-04-08 09:45 A | 2440 | 100% |  |  | start no earlier than 2026-04-06 09:00 | Зорькин В | 0.25h | 0.25h |
| 2442 | 10.50.2.3 | контроль |  | 15min | 2026-04-15 09:00 A | 2026-04-15 09:15 A | 2441 | 100% |  |  | start no earlier than 2026-04-15 09:00 | Зорькин В | 0.25h | 0.25h |
| 2443 | 10.51 | проверить наличие лент в ЗИП перед утилизаций б/у |  | 2h | 2026-03-31 09:00 A | 2026-03-31 11:00 A |  | 100% |  |  | start no earlier than 2026-03-31 08:00 | Зорькин В | 2h | 2h |
| 2444 | 10.52 | соединители лент траснспортеры линий - проверить остаток |  | 30min | 2026-08-31 09:00 | 2026-08-31 09:30 |  |  |  | 145.53d | start no earlier than 2026-08-31 09:00 | Зорькин В | 0.5h |  |
| 2445 | 10.53 | **освободить место на син склад / перенос в новый контейнер** |  | 1.5d | 2026-03-30 08:00 A | 2026-03-31 13:00 A |  | 100% |  |  |  |  | 38h | 38h |
| 2446 | 10.53.1 | перенести метал, норию в контейнер с синего склада |  | 4h | 2026-03-30 09:00 A | 2026-03-30 13:00 A |  | 100% |  |  | start no earlier than 2026-03-30 09:00 | Бобренок В; Некрасов А; Тимофеев В | 12h | 12h |
| 2447 | 10.53.2 | сборка стеллаж хранения металла |  | 4h | 2026-03-30 08:00 A | 2026-03-30 13:00 A |  | 100% |  |  | start no earlier than 2026-03-30 08:00 | Некрасов А; Труфанов А; Тимофеев В | 10h | 10h |
| 2448 | 10.53.3 | монтаж стеллаж хранения металла |  | 4h | 2026-03-31 09:00 A | 2026-03-31 13:00 A |  | 100% |  |  | start no earlier than 2026-03-31 09:00 | Некрасов А; Труфанов А | 8h | 8h |
| 2449 | 10.53.4 | загрузка мусор в трактор дерево, отход |  | 4h | 2026-03-31 09:00 A | 2026-03-31 13:00 A |  | 100% |  |  | start no earlier than 2026-03-31 08:00 | Некрасов А; Труфанов А | 8h | 8h |
| 2450 | 10.54 | заточка ножей 2ц орг |  | 30min | 2026-03-25 09:00 A | 2026-03-25 09:30 A |  | 100% |  |  | start no earlier than 2026-03-25 08:00 | Зорькин В | 0.5h | 0.5h |
| 2451 | 10.55 | ремонт водонагреватель орг |  | 1h | 2026-03-23 09:00 A | 2026-03-23 10:00 A |  | 100% |  |  | start no earlier than 2026-03-23 09:00 | Шуранов Ю | 1h | 1h |
| 2452 | 10.56 | ремонт парогенератор орг |  | 1h | 2026-03-23 09:00 A | 2026-03-23 10:00 A |  | 100% |  |  | start no earlier than 2026-03-23 09:00 | Шуранов Ю | 1h | 1h |
| 2453 | 10.57 | **стеллаж для организации хранения металла** |  | 11.5d | 2026-03-23 09:00 A | 2026-04-07 13:00 A |  | 100% |  |  |  |  | 84h | 84h |
| 2454 | 10.57.1 | составить эскиз / расчет заявка металл |  | 4h | 2026-03-23 09:00 A | 2026-03-23 13:00 A |  | 100% |  |  | start no earlier than 2026-03-23 09:00 | Зорькин В | 4h | 4h |
| 2455 | 10.57.2 | доставка |  | 10d | 2026-03-23 14:00 A | 2026-04-06 13:00 A | 2454 | 100% |  |  | start no earlier than 2026-03-20 08:00 | Карабанов | 80h | 80h |
| 2456 | 10.57.3 | сборка |  | 2d | 2026-04-03 14:00 A | 2026-04-07 13:00 A | 2455 | 100% |  |  | start no earlier than 2026-03-20 08:00 |  |  |  |
| 2457 | 10.58 | установить крыльчатку мотор-редуктор смесителя / перенос в контейнер |  | 30min | 2026-08-31 09:00 A | 2026-08-31 09:30 A |  | 100% |  |  | start no earlier than 2026-09-02 09:00 | Тимофеев В | 0.5h | 0.5h |
| 2458 | 10.59 | **изготовить ножевой узел для 2ц** |  | 10.02d | 2026-03-17 09:00 A | 2026-03-31 09:10 A |  | 100% |  |  |  |  | 80.33h | 80.33h |
| 2459 | 10.59.1 | получить счет |  | 10min | 2026-03-17 09:00 A | 2026-03-17 09:10 A |  | 100% |  |  | start no earlier than 2026-03-17 08:00 | Домоводов К | 0.17h | 0.17h |
| 2460 | 10.59.2 | изготовление |  | 10d | 2026-03-17 09:10 A | 2026-03-31 09:10 A | 2459 | 100% |  |  | start no earlier than 2026-03-17 08:00 | Фрезер ЧПУ | 80h | 80h |
| 2461 | 10.59.3 | контроль |  | 5min | 2026-03-28 09:10 A | 2026-03-30 09:05 A | 2460FS+1d | 100% |  |  | start no earlier than 2026-03-17 08:00 | Зорькин В | 0.08h | 0.08h |
| 2462 | 10.59.4 | орг доставка |  | 5min | 2026-03-28 09:15 A | 2026-03-30 09:05 A | 2461 | 100% |  |  | start no earlier than 2026-03-17 08:00 | Зорькин В | 0.08h | 0.08h |
| 2463 | 10.60 | сгоревшие двигатели унести в контенер в коробку |  | 1h | 2026-03-15 09:00 A | 2026-03-16 10:00 A |  | 100% |  |  | start no earlier than 2026-03-15 09:00 | Бобренок В | 1h | 1h |
| 2464 | 10.61 | ремонт головы насоса нгш57 гидродлизат 2шт |  | 2h | 2026-03-16 09:00 A | 2026-03-16 11:00 A |  | 100% |  |  | start no earlier than 2026-03-16 09:00 | Труфанов А | 2h | 2h |
| 2465 | 10.62 | изготовить ножевой узел для 2ц | milestone | 0d | 2026-03-16 09:00 A | 2026-03-16 09:00 A |  | 100% |  |  | start no earlier than 2026-03-16 09:00 | Домоводов К |  |  |
| 2466 | 10.63 | по всем цехам обход, проверка обратный клпан бойлеры / настройка температуры . Составить список под замену |  | 2h | 2026-09-01 09:00 | 2026-09-01 11:00 |  |  |  | 144.34d | start no earlier than 2026-09-01 09:00 | Дедов В | 2h |  |

| ID | WBS | Task | Type | Duration | Start | Finish | Predecessors | Complete | Remaining | Total slack | Free slack | Constraint | Resources | Work | Actual work |
| --- | --- | --- | --- | --- | --- | --- | --- | --- | --- | --- | --- | --- | --- | --- | --- |
| 2467 | 10.64 | **ремонт датчик расхода пара с линия 3** |  | 33.04d | 2026-09-01 09:00 A | 2026-10-06 09:20 |  |  | 33.04d | 111.55d |  |  |  | 0.92h |  |
| 2468 | 10.64.1 | заявка взип |  | 15min | 2026-09-01 09:00 | 2026-09-01 09:15 |  |  |  | 119.48d | 0d | start no earlier than 2026-09-01 09:00 | Шуранов Ю | 0.25h |  |
| 2469 | 10.64.2 | орг отправить в ремонт |  | 20min | 2026-09-01 09:15 | 2026-09-01 09:35 | 2468 |  |  | 119.48d | 7.93d | start no earlier than 2026-03-12 08:00 | Шуранов Ю | 0.33h |  |
| 2470 | 10.64.3 | контроль | milestone | 0d | 2026-09-22 09:35 A | 2026-09-22 09:35 A | 2469FS+20d | 100% |  |  |  | start no earlier than 2026-04-17 09:00 | Зорькин В |  |  |
| 2471 | 10.64.4 | контроль | milestone | 0d | 2026-09-30 09:00 | 2026-09-30 09:00 | 2469FS+20d |  |  | 111.55d | 0d | start no earlier than 2026-09-30 09:00 | Зорькин В |  |  |
| 2472 | 10.64.5 | орг забрать сремонта |  | 20min | 2026-10-06 09:00 | 2026-10-06 09:20 | 2470FS+5d, 2471FS+5d |  |  | 111.55d |  | start no earlier than 2026-03-12 08:00 | Шуранов Ю | 0.33h |  |
| 2473 | 10.65 | реставрация вал с охладителя. Полполнить расход ЗИП |  | 1h | 2026-09-01 09:00 | 2026-09-01 10:00 |  |  |  | 144.47d |  | start no earlier than 2026-09-01 09:00 | Шуранов Ю | 1h |  |
| 2474 | 10.66 | ремонт датчик наличия сырья / собрать из 2х один |  | 3h | 2026-09-01 09:00 | 2026-09-01 12:00 |  |  |  | 144.22d |  | start no earlier than 2026-09-01 09:00 | Дедов В | 3h |  |
| 2475 | 10.67 | **ремонт бойлер с 5ц гардероб** |  | 7.04d | 2026-03-13 09:00 A | 2026-03-24 09:20 |  | 57% | 3.02d | 259.55d |  |  |  | 0.58h | 0.33h |
| 2476 | 10.67.1 | орг отправить в ремонт |  | 15min | 2026-03-13 09:00 A | 2026-03-13 09:15 A |  | 100% |  |  |  | start no earlier than 2026-03-13 09:00 | Шуранов Ю | 0.25h | 0.25h |
| 2477 | 10.67.2 | контроль доставка / оплата |  | 5min | 2026-03-23 09:00 A | 2026-03-23 09:05 A | 2476FS+5d | 100% |  |  |  | start no earlier than 2026-03-23 09:00 | Шуранов Ю | 0.08h | 0.08h |
| 2478 | 10.67.3 | орг доставка |  | 15min | 2026-03-24 09:05 | 2026-03-24 09:20 | 2477FS+1d |  |  | 259.55d |  | start no earlier than 2026-03-12 08:00 | Шуранов Ю | 0.25h |  |
| 2479 | 10.68 | диагностика двигателей и редукторов в слесарке. Подробности Шуранов по тлф |  | 2h | 2026-09-01 09:00 A | 2026-09-01 11:00 A |  | 100% |  |  |  | start no earlier than 2026-09-02 09:00 | Бундин В | 2h | 2h |
| 2480 | 10.69 | которые в коробке с них снять крыльчатки |  | 2h | 2026-09-01 09:00 A | 2026-09-01 11:00 A | 2479 | 100% |  |  |  | start no earlier than 2026-03-06 08:00 | Бундин В | 2h | 2h |
| 2481 | 10.70 | ножевой узел 2ц заменаить подшипники. У мастера |  | 1h | 2026-03-04 08:00 A | 2026-03-04 10:00 A |  | 100% |  |  |  | start no earlier than 2026-03-04 08:00 | Дедов В | 1h | 1h |
| 2482 | 10.71 | **ремонт электродов ПГ в ЗИП** |  | 2.75d | 2026-03-08 09:00 A | 2026-03-11 16:00 A |  | 100% |  |  |  |  |  | 12h | 12h |
| 2483 | 10.71.1 | 2шт - шт |  | 6h | 2026-03-08 09:00 A | 2026-03-09 16:00 A |  | 100% |  |  |  | start no earlier than 2026-03-08 09:00 | Макаревич А | 6h | 6h |
| 2484 | 10.71.2 | 1шт = 2ц |  | 6h | 2026-03-11 09:00 A | 2026-03-11 16:00 A |  | 100% |  |  |  | start no earlier than 2026-03-11 09:00 | Макаревич А | 6h | 6h |
| 2485 | 10.72 | промер изношенных шнеков, подготовить таблицу и инструкцию для делегировать |  | 1h | 2026-03-03 09:00 A | 2026-03-03 10:00 A |  | 100% |  |  |  | start no earlier than 2026-03-03 09:00 | Зорькин В | 1h | 1h |
| 2486 | 10.73 | заказ нутромер утерянные детали |  | 30min | 2026-03-06 09:00 A | 2026-03-06 09:30 A |  | 100% |  |  |  | start no earlier than 2026-03-06 09:00 | Зорькин В | 0.5h | 0.5h |
| 2487 | 10.74 | **стопорнное кольцо для валов шнеков** |  | 0.09d | 2026-03-02 09:00 A | 2026-03-02 09:45 A |  | 100% |  |  |  |  |  | 0.75h | 0.75h |
| 2488 | 10.74.1 | заявка снабжение |  | 15min | 2026-03-02 09:00 A | 2026-03-02 09:15 A |  | 100% |  |  |  | start no earlier than 2026-03-02 09:00 | Зорькин В | 0.25h | 0.25h |
| 2489 | 10.74.2 | заявка токарь |  | 15min | 2026-03-02 09:15 A | 2026-03-02 09:30 A | 2488 | 100% |  |  |  | start no earlier than 2026-02-27 08:00 | Зорькин В | 0.25h | 0.25h |
| 2490 | 10.74.3 | заявка кита |  | 15min | 2026-03-02 09:30 A | 2026-03-02 09:45 A | 2489 | 100% |  |  |  | start no earlier than 2026-02-27 08:00 | Зорькин В | 0.25h | 0.25h |

| ID | WBS | Task | Duration | Start | Finish | Predecessors | Complete | Remaining | Total slack | Free slack | Constraint | Resources | Work | Actual work |
| --- | --- | --- | --- | --- | --- | --- | --- | --- | --- | --- | --- | --- | --- | --- |
| 2491 | 10.75 | **быстрая замена шнеков - кондуктор для хранения и перемещения подготвленного ствола** | 3.25d | 2026-10-26 09:00 | 2026-10-29 11:00 |  |  |  | 94.34d |  |  |  | 20h |  |
| 2492 | 10.75.1 | проект кондуктора и траверсы перемещения ствола штабелером | 2h | 2026-10-26 09:00 | 2026-10-26 11:00 |  |  |  | 94.34d | 0d | start no earlier than 2026-10-26 09:00 | Тимофеев В; Бундин В | 4h |  |
| 2493 | 10.75.2 | сборка | 2d | 2026-10-27 11:00 | 2026-10-29 11:00 | 2492FS+1d |  |  | 94.34d |  | start no earlier than 2026-04-16 09:00 | Бобренок В | 16h |  |
| 2494 | 10.76 | **заявка шкив на вал прекондиционер + разрезная вставка + спец шпильки** | 0.12d | 2025-08-04 09:00 | 2025-08-04 10:00 |  |  |  | 425.47d |  |  |  | 1h |  |
| 2495 | 10.76.1 | подбор шкив / заявка | 1h | 2025-08-04 09:00 | 2025-08-04 10:00 |  |  |  | 425.47d |  | start no earlier than 2025-08-04 09:00 | Зорькин В | 1h |  |
| 2496 | 10.77 | **ремонт вал прекондиционер** | 12.02d | 2025-07-31 09:00 A | 2025-08-18 09:10 |  | 86% | 1.72d | 415.57d |  |  |  | 1.17h | 1h |
| 2497 | 10.77.1 | подготовить к отправке очистить | 1h | 2025-07-31 09:00 A | 2025-07-31 10:00 A |  | 100% |  |  |  | start no earlier than 2025-07-31 09:00 | Пинчук А | 1h | 1h |
| 2498 | 10.77.2 | орг курьера / отправить | 5min | 2025-08-04 09:00 | 2025-08-04 09:05 | 2497 |  |  | 415.57d | 0d | start no earlier than 2025-08-04 09:00 | Зорькин В | 0.08h |  |
| 2499 | 10.77.3 | контроль / забрать | 5min | 2025-08-18 09:05 | 2025-08-18 09:10 | 2498FS+10d |  |  | 415.57d |  | start no earlier than 2025-07-31 09:00 | Зорькин В | 0.08h |  |
| 2500 | 10.78 | **ремонт вал в барабана жир 2л** | 152.01d | 2025-08-04 09:00 A | 2026-03-04 09:05 |  | 50% | 76.01d | 273.58d |  |  |  | 0.17h | 0.08h |
| 2501 | 10.78.1 | отправить на ремонт | 5min | 2025-08-04 09:00 | 2025-08-04 09:05 |  |  |  | 425.58d |  | start no earlier than 2025-08-04 09:00 | Зорькин В | 0.08h |  |
| 2502 | 10.78.2 | контроль забрать | 5min | 2026-03-04 09:00 A | 2026-03-04 09:05 A | 2501FS+10d | 100% |  |  |  | start no earlier than 2026-03-04 09:00 | Зорькин В | 0.08h | 0.08h |
| 2503 | 10.79 | **заявка эл мотор шибера в ЗИП** | 0.01d | 2025-02-19 09:00 | 2025-02-19 09:05 |  |  |  | 543.58d |  |  |  | 0.08h |  |
| 2504 | 10.79.1 | контроль | 5min | 2025-02-19 09:00 | 2025-02-19 09:05 |  |  |  | 543.58d |  | start no earlier than 2025-02-19 09:00 | Шуранов Ю | 0.08h |  |
| 2505 | 10.80 | составить таблицу ЗИП наличия редукторов / где используется | 4h | 2025-02-21 09:00 | 2025-02-21 13:00 |  |  |  | 541.09d |  | start no earlier than 2025-02-21 09:00 | Тимофеев В; Шуранов Ю | 8h |  |
| 2506 | 10.81 | составить таблицу соответсвия номеров подшипников - где используется | 4h | 2025-02-21 09:00 | 2025-02-21 13:00 |  |  |  | 541.09d |  | start no earlier than 2025-02-21 09:00 | Тимофеев В; Шуранов Ю | 8h |  |
| 2507 | 10.82 | ремонт болгарки замена кнопки | 1h | 2024-10-21 09:00 A | 2024-10-21 10:00 A |  | 100% |  |  |  | start no earlier than 2024-10-21 09:00 | Зорькин В | 1h | 1h |
| 2508 | 10.83 | сборка редуктор LT70 замена пружинные шайбы | 1d? | 2024-09-29 09:00 A | 2024-09-30 18:00 A |  | 100% |  |  |  | start no earlier than 2024-09-29 09:00 | Макаревич А | 8h | 8h |
| 2509 | 10.84 | **прорверить наличие остатков** | 0.01d | 2024-09-25 08:00 A | 2024-09-25 09:05 A |  | 100% |  |  |  |  |  | 2h | 2h |
| 2510 | 10.84.1 | Манжет (армированная 2,2-75*100*10 ГОСТ 8752-79) | 5min | 2024-09-25 08:00 A | 2024-09-25 09:05 A |  | 100% |  |  |  | start no earlier than 2024-09-25 08:00 | Дедов В | 0.08h | 0.08h |
| 2511 | 10.84.2 | Манжет (армированная 1,2-80*105*10) | 5min | 2024-09-25 08:00 A | 2024-09-25 09:05 A |  | 100% |  |  |  | start no earlier than 2024-09-25 08:00 | Дедов В | 0.08h | 0.08h |
| 2512 | 10.84.3 | Манжет (армированная 2,2-80*105*10 ГОСТ 8752-79) | 5min | 2024-09-25 08:00 A | 2024-09-25 09:05 A |  | 100% |  |  |  | start no earlier than 2024-09-25 08:00 | Дедов В | 0.08h | 0.08h |
| 2513 | 10.84.4 | Манжет (армированная 2,2-55*80*10 ГОСТ 8752-79) | 5min | 2024-09-25 08:00 A | 2024-09-25 09:05 A |  | 100% |  |  |  | start no earlier than 2024-09-25 08:00 | Дедов В | 0.08h | 0.08h |
| 2514 | 10.84.5 | Масло (Для швейных машин) | 0.01d | 2024-09-25 08:00 A | 2024-09-25 09:05 A |  | 100% |  |  |  | start no earlier than 2024-09-25 08:00 | Дедов В | 0.08h | 0.08h |
| 2515 | 10.84.6 | Наконечник (ТМЛ 16-10-6 медный луженый) | 0.01d | 2024-09-25 08:00 A | 2024-09-25 09:05 A |  | 100% |  |  |  | start no earlier than 2024-09-25 08:00 | Дедов В | 0.08h | 0.08h |
| 2516 | 10.84.7 | Наконечник (ТМЛ 10-8-5 медный луженый) | 0.01d | 2024-09-25 08:00 A | 2024-09-25 09:05 A |  | 100% |  |  |  | start no earlier than 2024-09-25 08:00 | Дедов В | 0.08h | 0.08h |
| 2517 | 10.84.8 | Подшипник (56006-2RS (180106)SKF (30*5*10)) | 0.01d | 2024-09-25 08:00 A | 2024-09-25 09:05 A |  | 100% |  |  |  | start no earlier than 2024-09-25 08:00 | Дедов В | 0.08h | 0.08h |
| 2518 | 10.84.9 | Подшипник (51410/ART) | 0.01d | 2024-09-25 08:00 A | 2024-09-25 09:05 A |  | 100% |  |  |  | start no earlier than 2024-09-25 08:00 | Дедов В | 0.08h | 0.08h |
| 2519 | 10.84.10 | Подшипник (UCF 208 (40)) | 0.01d | 2024-09-25 08:00 A | 2024-09-25 09:05 A |  | 100% |  |  |  | start no earlier than 2024-09-25 08:00 | Дедов В | 0.08h | 0.08h |
| 2520 | 10.84.11 | Подшипник (6203.LLU/2ASU1/NTN) | 0.01d | 2024-09-25 08:00 A | 2024-09-25 09:05 A |  | 100% |  |  |  | start no earlier than 2024-09-25 08:00 | Дедов В | 0.08h | 0.08h |
| 2521 | 10.84.12 | Подшипник (22212(53512) SKF (60*110*28)) | 0.01d | 2024-09-25 08:00 A | 2024-09-25 09:05 A |  | 100% |  |  |  | start no earlier than 2024-09-25 08:00 | Дедов В | 0.08h | 0.08h |
| 2522 | 10.84.13 | Подшипник (UC 204 (480204) (20х47х17/31)) | 0.01d | 2024-09-25 08:00 A | 2024-09-25 09:05 A |  | 100% |  |  |  | start no earlier than 2024-09-25 08:00 | Дедов В | 0.08h | 0.08h |
| 2523 | 10.84.14 | Подшипник (6906-2RS (30*47*9)) | 0.01d | 2024-09-25 08:00 A | 2024-09-25 09:05 A |  | 100% |  |  |  | start no earlier than 2024-09-25 08:00 | Дедов В | 0.08h | 0.08h |
| 2524 | 10.84.15 | Подшипник (6003-2RS (180103) (17*35*10)) | 0.01d | 2024-09-25 08:00 A | 2024-09-25 09:05 A |  | 100% |  |  |  | start no earlier than 2024-09-25 08:00 | Дедов В | 0.08h | 0.08h |
| 2525 | 10.84.16 | Подшипник (6203-2RS (180203) (17*40*12)) | 0.01d | 2024-09-25 08:00 A | 2024-09-25 09:05 A |  | 100% |  |  |  | start no earlier than 2024-09-25 08:00 | Дедов В | 0.08h | 0.08h |
| 2526 | 10.84.17 | Подшипник (6002 2RS, SKF (180102, 15*32*9)) | 0.01d | 2024-09-25 08:00 A | 2024-09-25 09:05 A |  | 100% |  |  |  | start no earlier than 2024-09-25 08:00 | Дедов В | 0.08h | 0.08h |
| 2527 | 10.84.18 | Провод ПЩ-4 | 0.01d | 2024-09-25 08:00 A | 2024-09-25 09:05 A |  | 100% |  |  |  | start no earlier than 2024-09-25 08:00 | Дедов В | 0.08h | 0.08h |
| 2528 | 10.84.19 | Ремень клиновый А-1400 | 0.01d | 2024-09-25 08:00 A | 2024-09-25 09:05 A |  | 100% |  |  |  | start no earlier than 2024-09-25 08:00 | Дедов В | 0.08h | 0.08h |
| 2529 | 10.84.20 | Ремень клиновый В (Б)-1320 | 0.01d | 2024-09-25 08:00 A | 2024-09-25 09:05 A |  | 100% |  |  |  | start no earlier than 2024-09-25 08:00 | Дедов В | 0.08h | 0.08h |
| 2530 | 10.84.21 | Реле (тепловое РТИ-3353 23-32А) | 0.01d | 2024-09-25 08:00 A | 2024-09-25 09:05 A |  | 100% |  |  |  | start no earlier than 2024-09-25 08:00 | Дедов В | 0.08h | 0.08h |
| 2531 | 10.84.22 | Шланг (для дозирующих насосов черного цвета 6,4х9,6 мм) | 0.01d | 2024-09-25 08:00 A | 2024-09-25 09:05 A |  | 100% |  |  |  | start no earlier than 2024-09-25 08:00 | Дедов В | 0.08h | 0.08h |
| 2532 | 10.84.23 | Труба гофрированная (ПВХ 25мм с протяжкой легкая серая) | 0.01d | 2024-09-25 08:00 A | 2024-09-25 09:05 A |  | 100% |  |  |  | start no earlier than 2024-09-25 08:00 | Дедов В | 0.08h | 0.08h |
| 2533 | 10.84.24 | Шпонка призматическая (DIN 6885 A 18х11х 90мм) | 0.01d | 2024-09-25 08:00 A | 2024-09-25 09:05 A |  | 100% |  |  |  | start no earlier than 2024-09-25 08:00 | Дедов В | 0.08h | 0.08h |

| ID | WBS | Task | Duration | Start | Finish | Predecessors | Complete | Remaining | Total slack | Free slack | Constraint | Resources | Work | Actual work |
| --- | --- | --- | --- | --- | --- | --- | --- | --- | --- | --- | --- | --- | --- | --- |
| 2534 | 10.85 | **прорверить остатки подшипников** | 0.01d | 2024-09-10 08:00 A | 2024-09-10 09:05 A |  | 100% |  |  |  |  |  | 1.17h | 1.17h |
| 2535 | 10.85.1 | 180101АС17/6 ГПЗ | 5min | 2024-09-10 08:00 A | 2024-09-10 09:05 A |  | 100% |  |  |  | start no earlier than 2024-09-10 08:00 | Дедов В | 0.08h | 0.08h |
| 2536 | 10.85.2 | 180202 (6202 2RS) (15*35*11) SKF | 0.01d | 2024-09-10 08:00 A | 2024-09-10 09:05 A |  | 100% |  |  |  | start no earlier than 2024-09-10 08:00 | Дедов В | 0.08h | 0.08h |
| 2537 | 10.85.3 | 180206 (6206 2RS) (30*62*16) HIKI | 0.01d | 2024-09-10 08:00 A | 2024-09-10 09:05 A |  | 100% |  |  |  | start no earlier than 2024-09-10 08:00 | Дедов В | 0.08h | 0.08h |
| 2538 | 10.85.4 | 22212.EAW33C3 / SNR | 0.01d | 2024-09-10 08:00 A | 2024-09-10 09:05 A |  | 100% |  |  |  | start no earlier than 2024-09-10 08:00 | Дедов В | 0.08h | 0.08h |
| 2539 | 10.85.5 | 51407/NEUTR | 0.01d | 2024-09-10 08:00 A | 2024-09-10 09:05 A |  | 100% |  |  |  | start no earlier than 2024-09-10 08:00 | Дедов В | 0.08h | 0.08h |
| 2540 | 10.85.6 | 6001 ZZ.CM | 0.01d | 2024-09-10 08:00 A | 2024-09-10 09:05 A |  | 100% |  |  |  | start no earlier than 2024-09-10 08:00 | Дедов В | 0.08h | 0.08h |
| 2541 | 10.85.7 | 6201.VVC3/ITJ | 0.01d | 2024-09-10 08:00 A | 2024-09-10 09:05 A |  | 100% |  |  |  | start no earlier than 2024-09-10 08:00 | Дедов В | 0.08h | 0.08h |
| 2542 | 10.85.8 | 6205LLU (NTN) | 0.01d | 2024-09-10 08:00 A | 2024-09-10 09:05 A |  | 100% |  |  |  | start no earlier than 2024-09-10 08:00 | Дедов В | 0.08h | 0.08h |
| 2543 | 10.85.9 | 6206. VVC3/ITJ | 0.01d | 2024-09-10 08:00 A | 2024-09-10 09:05 A |  | 100% |  |  |  | start no earlier than 2024-09-10 08:00 | Дедов В | 0.08h | 0.08h |
| 2544 | 10.85.10 | 686-2RS/ART | 0.01d | 2024-09-10 08:00 A | 2024-09-10 09:05 A |  | 100% |  |  |  | start no earlier than 2024-09-10 08:00 | Дедов В | 0.08h | 0.08h |
| 2545 | 10.85.11 | 7512 (32212)(60*110*24) | 0.01d | 2024-09-10 08:00 A | 2024-09-10 09:05 A |  | 100% |  |  |  | start no earlier than 2024-09-10 08:00 | Дедов В | 0.08h | 0.08h |
| 2546 | 10.85.12 | HK1210/NEUTR | 0.01d | 2024-09-10 08:00 A | 2024-09-10 09:05 A |  | 100% |  |  |  | start no earlier than 2024-09-10 08:00 | Дедов В | 0.08h | 0.08h |
| 2547 | 10.85.13 | UC 205 Neutr | 0.01d | 2024-09-10 08:00 A | 2024-09-10 09:05 A |  | 100% |  |  |  | start no earlier than 2024-09-10 08:00 | Дедов В | 0.08h | 0.08h |
| 2548 | 10.85.14 | UCFC 210 ASAHI | 0.01d | 2024-09-10 08:00 A | 2024-09-10 09:05 A |  | 100% |  |  |  | start no earlier than 2024-09-10 08:00 | Дедов В | 0.08h | 0.08h |
| 2549 | 10.86 | **создать реестр документации на оборудование** | 2d? | 2024-09-10 09:00 | 2024-09-11 18:00 |  |  |  | 657.59d |  |  |  | 8h |  |
| 2550 | 10.86.1 | опись документации в наличии, сортировка | 1d? | 2024-09-10 09:00 | 2024-09-10 18:00 |  |  |  | 657.59d | 0d | start no earlier than 2024-09-10 09:00 | Зорькин В | 8h |  |
| 2551 | 10.86.2 | оформление реестра наличия документации | 1d? | 2024-09-11 09:00 | 2024-09-11 18:00 | 2550 |  |  | 657.59d |  | start no earlier than 2024-09-06 08:00 |  |  |  |
| 2552 | 10.87 | **ремонт двигатель с шлюз питатель** | 0.02d | 2024-08-09 09:00 | 2024-08-09 09:10 |  |  |  | 681.57d |  |  |  | 0.17h |  |
| 2553 | 10.87.1 | контроль / орг курьер - | 10min | 2024-08-09 09:00 | 2024-08-09 09:10 |  |  |  | 681.57d |  | start no earlier than 2024-08-09 09:00 | Шуранов Ю | 0.17h |  |
| 2554 | 10.88 | **организовать хранение зап. частей для производства в одном месте, создать склад и нести полную материальную ответственность** | 18d? | 2024-05-09 09:00 A | 2024-06-03 18:00 |  | 15% | 15.3d? | 729.59d |  |  |  | 272h | 24h |
| 2555 | 10.88.1 | монтаж забор / ворота | 3d | 2024-05-09 09:00 A | 2024-05-13 18:00 A |  | 100% |  |  |  | start no earlier than 2024-05-09 09:00 | Макаревич А | 24h | 24h |
| 2556 | 10.88.2 | монтаж ворота, забор | 1d? | 2024-05-14 09:00 | 2024-05-14 18:00 | 2555 |  |  | 729.59d | 0d | start no earlier than 2024-05-13 09:00 | Некрасов А; Черепанов И | 16h |  |
| 2557 | 10.88.3 | подготови доски для стеллажей на 3 складе | 1d? | 2024-05-20 09:00 | 2024-05-20 18:00 |  |  |  | 739.59d |  | start no earlier than 2024-05-18 09:00 | КИнжекул | 8h |  |
| 2558 | 10.88.4 | переместить стеллажи на 2 этаж ГП + сборка | 1d? | 2024-05-15 09:00 | 2024-05-15 18:00 | 2556 |  |  | 736.59d | 7d | start no earlier than 2024-05-08 08:00 | Некрасов А; Черепанов И | 16h |  |
| 2559 | 10.88.5 | составить список всех позиций за забором для учета | 2d | 2024-05-15 09:00 | 2024-05-16 18:00 | 2556 |  |  | 729.59d | 0d | start no earlier than 2024-05-14 09:00 | Шуранов Ю | 16h |  |
| 2560 | 10.88.6 | состаить список ЗИП склад 3 цех | 2d | 2024-05-17 09:00 | 2024-05-20 18:00 | 2559 |  |  | 729.59d | 0d | start no earlier than 2024-05-08 09:00 | Шуранов Ю | 16h |  |
| 2561 | 10.88.7 | состаить список ЗИП склад слесарное помещение | 2d | 2024-05-21 09:00 | 2024-05-22 18:00 | 2560 |  |  | 729.59d | 0d | start no earlier than 2024-05-14 09:00 | Шуранов Ю | 16h |  |
| 2562 | 10.88.8 | составить список ЗИП Контейнер | 2d | 2024-05-23 09:00 | 2024-05-24 18:00 | 2561 |  |  | 729.59d | 0d | start no earlier than 2024-05-14 09:00 | Шуранов Ю | 16h |  |
| 2563 | 10.88.9 | перемещение ЗИП с 3 цеха на 2 этаж ГП | 2d | 2024-05-27 09:00 | 2024-05-28 18:00 | 2558, 2562 |  |  | 729.59d | 0d | start no earlier than 2024-05-14 09:00 | Шуранов Ю; Некрасов А; Черепанов И | 48h |  |
| 2564 | 10.88.10 | перемещение ЗИП с контейнера на 2 этаж ГП | 2d | 2024-05-29 09:00 | 2024-05-30 18:00 | 2563 |  |  | 729.59d | 0d | start no earlier than 2024-05-14 09:00 | Шуранов Ю; Некрасов А; Черепанов И | 48h |  |
| 2565 | 10.88.11 | перемещение ЗИП с слесарного помещения на 2 этаж ГП | 2d | 2024-05-31 09:00 | 2024-06-03 18:00 | 2564 |  |  | 729.59d |  | start no earlier than 2024-05-14 09:00 | Шуранов Ю; Некрасов А; Черепанов И | 48h |  |

| ID | WBS | Task | Type | Duration | Start | Finish | Predecessors | Complete | Remaining | Actual start | Total slack | Free slack | Constraint | Resources | Work | Actual work |
| --- | --- | --- | --- | --- | --- | --- | --- | --- | --- | --- | --- | --- | --- | --- | --- | --- |
| 2566 | 10.89 | **клапан эл магнитный для парогенератора на подачу воды** |  | 0.06d | 2025-01-16 09:00 | 2025-01-16 09:30 |  |  |  |  | 567.53d |  |  |  | 0.5h |  |
| 2567 | 10.89.1 | контролль остатков, заявка на катушку |  | 30min | 2025-01-16 09:00 | 2025-01-16 09:30 |  |  |  |  | 567.53d |  | start no earlier than 2025-01-16 09:00 | Шуранов Ю | 0.5h |  |
| 2568 | 10.90 | **вал с конвейера №1 разместить на ремонт** |  | 15.06d | 2024-05-14 09:00 | 2024-06-04 09:30 |  |  |  |  | 729.53d |  |  |  | 120.5h |  |
| 2569 | 10.90.1 | орг курьера |  | 15min | 2024-05-14 09:00 | 2024-05-14 09:15 |  |  |  |  | 729.53d | 0d | start no earlier than 2024-05-14 09:00 | Шуранов Ю | 0.25h |  |
| 2570 | 10.90.2 | ремонт |  | 15d | 2024-05-14 09:15 | 2024-06-04 09:15 | 2569 |  |  |  | 729.53d | 0d | start no earlier than 2024-05-08 08:00 | Подрядчик | 120h |  |
| 2571 | 10.90.3 | контроль, орг курьера забрать |  | 15min | 2024-06-04 09:15 | 2024-06-04 09:30 | 2570 |  |  |  | 729.53d |  | start no earlier than 2024-05-14 09:00 | Шуранов Ю | 0.25h |  |
| 2572 | 10.91 | подшипник LMK20.UU/FBJ или NEUTR - 4шт ТЕКО после замены |  | 10min | 2024-05-14 09:00 | 2024-05-14 09:10 |  |  |  |  | 744.57d |  | start no earlier than 2024-05-14 09:00 | Шуранов Ю | 0.17h |  |
| 2573 | 10.92 | UC204 подшипники |  | 10min | 2024-05-14 09:00 | 2024-05-14 09:10 |  |  |  |  | 744.57d |  | start no earlier than 2024-05-14 09:00 | Шуранов Ю | 0.17h |  |
| 2574 | 10.93 | сетка на дробилку 37квт 5 цех 0,5мм и 0,7 мм - заявка ЕВРОМЕД |  | 1h | 2024-05-14 09:00 | 2024-05-14 10:00 |  |  |  |  | 744.47d |  | start no earlier than 2024-05-14 09:00 | Шуранов Ю | 1h |  |
| 2575 | 11 | **ЗИП заказ (заявки)** |  | 4.02d | 2026-09-04 09:00 A | 2026-09-09 09:10 |  | 71% | 1.15d |  | 137.57d |  |  |  | 0.58h | 0.42h |
| 2576 | 11.1 | контактор для тельфера 5ц 24 переменка |  | 15min | 2026-09-04 09:00 A | 2026-09-04 09:15 A |  | 100% |  |  |  |  | start no earlier than 2026-09-04 09:00 | Зорькин В | 0.25h | 0.25h |
| 2577 | 11.2 | Наконечники штырьевые для сборки схем (получить инфу у Тимофеева) |  | 10min | 2026-09-09 09:00 | 2026-09-09 09:10 |  |  |  |  | 137.57d |  | start no earlier than 2026-09-09 09:00 | Зорькин В | 0.17h |  |
| 2578 | 11.3 | Газ в слесарку, закончился |  | 10min | 2026-09-07 09:00 A | 2026-09-07 09:10 A |  | 100% |  |  |  |  | start no earlier than 2026-09-07 09:00 | Зорькин В | 0.17h | 0.17h |
| 2579 | 12 | **ТО** |  | 772.25d? | 2023-12-28 09:00 A | 2026-12-02 11:00 |  | 45% | 424.91d? |  | 70.34d |  |  |  | 30854.2h | 17179.2h |
| 2580 | 12.1 | **1 цех** |  | 134.25d? | 2024-04-04 09:00 | 2024-10-09 11:00 |  | 62% | 50.44d? | 2023-12-28 09:00 |  |  |  |  | 5957.25h | 812.17h |
| 2581 | 12.1.1 | **Разобрать улитки с охладителя 2 линия, 4 улитки на печах и улитки циклонов - замена подшипников, каких нет сообщить** |  | 16.25d | 2026-09-07 09:00 A | 2026-09-23 11:00 |  | 95% | 0.79d |  | 123.34d |  |  |  | 22.5h | 21.5h |
| 2582 | 12.1.1.1 | очистка моторов шлюз питателей циклонов от пыли |  | 30min | 2026-09-11 09:00 A | 2026-09-11 09:30 A |  | 100% |  |  |  |  | start no earlier than 2026-09-11 08:00 | Бобренок В | 0.5h | 0.5h |
| 2583 | 12.1.1.2 | очистка центрального вала от налипей грязи через смотровое окно |  | 1h | 2026-09-11 09:00 A | 2026-09-11 10:00 A |  | 100% |  |  |  |  | start no earlier than 2026-09-11 08:00 | Бобренок В | 1h | 1h |
| 2584 | 12.1.1.3 | монтаж шильдиков на которые починил |  | 1h | 2026-09-15 09:00 | 2026-09-15 10:00 |  |  |  |  | 131.47d |  | start no earlier than 2026-09-15 09:00 | Бундин В | 1h |  |
| 2585 | 12.1.1.4 | вентилятор охладителя | manual | 4h | 2026-09-07 09:00 A | 2026-09-07 13:00 A |  | 100% |  |  |  |  |  | Бундин В | 4h | 4h |
| 2586 | 12.1.1.5 | линия 1 вентилятор печи 1 |  | 4h | 2026-09-08 09:00 A | 2026-09-08 13:00 A |  | 100% |  |  |  |  | start no earlier than 2026-09-08 09:00 | Бундин В | 4h | 4h |
| 2587 | 12.1.1.6 | линия 1 вентилятор печи 2 | manual | 4h | 2026-09-09 09:00 A | 2026-09-09 13:00 A |  | 100% |  |  |  |  |  | Бундин В | 4h | 4h |
| 2588 | 12.1.1.7 | линия 2 вентилятор циклона 1 | manual | 4h | 2026-09-09 14:00 A | 2026-09-09 18:00 A | 2587 | 100% |  |  |  |  |  | Бундин В | 4h | 4h |
| 2589 | 12.1.1.8 | линия 2 вентилятор циклона 2 | manual | 2h | 2026-09-23 09:00 A | 2026-09-23 11:00 A | 2588 | 100% |  |  |  |  |  | Бундин В; Некрасов А | 4h | 4h |
| 2590 | 12.1.2 | ТО ШУ печи №1 (замена кабеля, наконечников…) |  | 1h | 2026-08-27 09:00 A | 2026-08-27 10:00 A |  | 100% |  |  |  |  | start no earlier than 2026-08-27 09:00 | Тимофеев В | 1h | 1h |

| ID | WBS | Task | Duration | Start | Finish | Complete | Remaining | Total slack | Constraint | Resources | Work | Actual work |
| --- | --- | --- | --- | --- | --- | --- | --- | --- | --- | --- | --- | --- |
| 2591 | 12.1.3 | **приточная вентиляция** | 168.12d | 2026-03-04 09:00 A | 2026-10-14 10:00 | 75% | 42.03d | 105.47d |  |  | 4h | 3h |
| 2592 | 12.1.3.1 | замена оба фильтра | 1h | 2026-03-04 09:00 A | 2026-03-04 10:00 A | 100% |  |  | start no earlier than 2026-03-04 08:00 | Труфанов А | 1h | 1h |
| 2593 | 12.1.3.2 | замена фильтра | 1h | 2026-04-15 09:00 A | 2026-04-15 10:00 A | 100% |  |  | start no earlier than 2026-04-15 09:00 | Труфанов А | 1h | 1h |
| 2594 | 12.1.3.3 | Замена фильтра | 1h | 2026-07-29 09:00 A | 2026-07-29 10:00 A | 100% |  |  | start no earlier than 2026-07-29 08:00 | Бундин В | 1h | 1h |
| 2595 | 12.1.3.4 | Проверка фильтра, по необходимости замена | 1h | 2026-10-14 09:00 | 2026-10-14 10:00 |  |  | 105.47d | start no earlier than 2026-10-14 09:00 | Дедов В | 1h |  |
| 2596 | 12.1.4 | **техническая вода** | 158.02d | 2026-03-11 09:00 A | 2026-10-07 09:10 | 89% | 17.56d | 110.57d |  |  | 1.5h | 1.33h |
| 2597 | 12.1.4.1 | проверка гидроаккумулятора | 10min | 2026-03-11 09:00 A | 2026-03-11 09:10 A | 100% |  |  | start no earlier than 2026-03-11 09:00 | Некрасов А | 0.17h | 0.17h |
| 2598 | 12.1.4.2 | замена фильтров | 10min | 2026-03-11 09:00 A | 2026-03-11 09:10 A | 100% |  |  | start no earlier than 2026-03-11 09:00 | Некрасов А | 0.17h | 0.17h |
| 2599 | 12.1.4.3 | замена фильтров | 30min | 2026-05-27 09:00 A | 2026-05-27 09:30 A | 100% |  |  | start no earlier than 2026-03-11 09:00 | Бундин В | 0.5h | 0.5h |
| 2600 | 12.1.4.4 | замена фильтров | 30min | 2026-03-12 09:00 A | 2026-03-12 09:30 A | 100% |  |  | start no earlier than 2026-03-12 09:00 | Бобренок В | 0.5h | 0.5h |
| 2601 | 12.1.4.5 | проверка гидроаккумулятора | 10min | 2026-10-07 09:00 | 2026-10-07 09:10 |  |  | 110.57d | start no earlier than 2026-10-07 09:00 | Тимофеев В | 0.17h |  |
| 2602 | 12.1.5 | **линия 1** | 147.06d? | 2026-03-18 09:00 A | 2026-09-30 09:30 A | 100% |  |  |  |  | 27h | 27h |
| 2603 | 12.1.5.1 | **питатель экструдера** | 147.06d? | 2026-03-18 09:00 A | 2026-09-30 09:30 A | 100% |  |  |  |  | 11h | 11h |
| 2604 | 12.1.5.1.1 | замена подшипники | 1d? | 2026-04-08 09:00 A | 2026-04-08 18:00 A | 100% |  |  | start no earlier than 2026-04-08 09:00 | Тимофеев В | 8h | 8h |
| 2605 | 12.1.5.1.2 | контроль палстик втулки | 1h | 2026-05-13 09:00 A | 2026-05-13 10:00 A | 100% |  |  | start no earlier than 2026-05-13 09:00 | Бобренок В | 1h | 1h |
| 2606 | 12.1.5.1.3 | контроль шестерен привода, редуктора | 10min | 2026-03-18 09:00 A | 2026-03-18 09:10 A | 100% |  |  | start no earlier than 2026-03-18 09:00 | Труфанов А | 0.17h | 0.17h |
| 2607 | 12.1.5.1.4 | контроль состояние пластик втулки | 30min | 2026-06-02 09:00 A | 2026-06-02 09:30 A | 100% |  |  | start no earlier than 2026-06-02 09:00 | Некрасов А | 0.5h | 0.5h |
| 2608 | 12.1.5.1.5 | Ревизия питателя | 20min | 2026-07-29 09:00 A | 2026-07-29 09:20 A | 100% |  |  | start no earlier than 2026-07-29 08:00 | Бундин В | 0.33h | 0.33h |
| 2609 | 12.1.5.1.6 | Ревизия питателя, контроль состояния подшипников/втулки/шестерен | 30min | 2026-09-23 09:00 A | 2026-09-23 09:30 A | 100% |  |  | start no earlier than 2026-09-23 09:00 | Некрасов А | 0.5h | 0.5h |
| 2610 | 12.1.5.1.7 | Ревизия питателя, контроль состояния подшипников/втулки/шестерен/втулки | 30min | 2026-09-30 09:00 A | 2026-09-30 09:30 A | 100% |  |  | start no earlier than 2026-09-30 09:00 | Тимофеев В | 0.5h | 0.5h |
| 2611 | 12.1.5.2 | **прекондицинер экструдера** | 107.03d | 2026-05-13 09:00 A | 2026-09-30 09:15 A | 100% |  |  |  |  | 1h | 1h |
| 2612 | 12.1.5.2.1 | контроль привода, подшипников | 15min | 2026-05-13 09:00 A | 2026-05-13 09:15 A | 100% |  |  | start no earlier than 2026-05-13 09:00 | Бобренок В | 0.25h | 0.25h |
| 2613 | 12.1.5.2.2 | контроль привода, подшипников | 15min | 2026-07-29 09:00 A | 2026-07-29 09:15 A | 100% |  |  | start no earlier than 2026-07-29 08:00 | Труфанов А | 0.25h | 0.25h |
| 2614 | 12.1.5.2.3 | контроль привода, подшипников | 15min | 2026-09-23 09:00 A | 2026-09-23 09:15 A | 100% |  |  | start no earlier than 2026-09-23 09:00 | Некрасов А | 0.25h | 0.25h |
| 2615 | 12.1.5.2.4 | контроль привода, подшипников/при необходимости замена | 15min | 2026-09-30 09:00 A | 2026-09-30 09:15 A | 100% |  |  | start no earlier than 2026-09-30 09:00 | Тимофеев В | 0.25h | 0.25h |

| ID | WBS | Task | Duration | Start | Finish | Complete | Remaining | Total slack | Constraint | Resources | Work | Actual work |
| --- | --- | --- | --- | --- | --- | --- | --- | --- | --- | --- | --- | --- |
| 2616 | 12.1.5.3 | **парогенератор** | 131.12d | 2026-04-08 09:00 A | 2026-09-29 10:00 A | 100% |  |  |  |  | 15h | 15h |
| 2617 | 12.1.5.3.1 | вскрытие электородов, чистка | 1h | 2026-05-13 09:00 A | 2026-05-13 10:00 A | 100% |  |  | start no earlier than 2026-05-13 09:00 | Бобренок В | 1h | 1h |
| 2618 | 12.1.5.3.2 | замена реле вкл насоса. (не вкл) | 2h | 2026-05-13 09:00 A | 2026-05-13 11:00 A | 100% |  |  | start no earlier than 2026-05-13 09:00 | Бобренок В | 2h | 2h |
| 2619 | 12.1.5.3.3 | замена гофротрубы / закрепить жестко | 2h | 2026-04-08 09:00 A | 2026-04-08 11:00 A | 100% |  |  | start no earlier than 2026-04-08 09:00 | Бобренок В | 2h | 2h |
| 2620 | 12.1.5.3.4 | чистка парогенератора, если нужно замена электродов | 2h | 2026-06-10 09:00 A | 2026-06-10 11:00 A | 100% |  |  | start no earlier than 2026-06-10 09:00 | Дедов В | 2h | 2h |
| 2621 | 12.1.5.3.5 | читска парогенератора, если нужно замена электродов | 2h | 2026-05-20 09:00 A | 2026-05-20 11:00 A | 100% |  |  | start no earlier than 2026-05-20 09:00 | Некрасов А | 2h | 2h |
| 2622 | 12.1.5.3.6 | читска парогенератора, если нужно замена электродов | 1h | 2026-06-02 09:00 A | 2026-06-02 10:00 A | 100% |  |  | start no earlier than 2026-06-02 09:00 | Тимофеев В | 1h | 1h |
| 2623 | 12.1.5.3.7 | вскрытие электородов, чистка | 1h | 2026-08-12 09:00 A | 2026-08-12 10:00 A | 100% |  |  | start no earlier than 2026-08-12 09:00 | Некрасов А | 1h | 1h |
| 2624 | 12.1.5.3.8 | вскрытие электородов, чистка (при остановке линии на мойку, если не остановилась, передать по смене Бундину) | 1h | 2026-09-22 09:00 A | 2026-09-22 10:00 A | 100% |  |  | start no earlier than 2026-09-22 09:00 | Макаревич А; Бундин В | 2h | 2h |
| 2625 | 12.1.5.3.9 | вскрытие электородов, чистка (при остановке линии на мойку, если не остановилась, передать по смене Тимофееву) | 1h | 2026-09-29 09:00 A | 2026-09-29 10:00 A | 100% |  |  | start no earlier than 2026-09-29 09:00 | Бундин В; Тимофеев В | 2h | 2h |
| 2626 | 12.1.6 | **редуктор экструдера и маслянная станция** | 435.04d | 2025-02-17 09:00 A | 2026-10-07 09:20 | 52% | 209.26d | 110.55d |  |  | 13.17h | 6.83h |
| 2627 | 12.1.6.1 | чистка фильтра | 30min | 2026-06-02 09:00 A | 2026-06-02 09:30 A | 100% |  |  | start no earlier than 2026-06-02 09:00 | Тимофеев В | 0.5h | 0.5h |
| 2628 | 12.1.6.2 | муфта редутор-мотор | 15min | 2026-03-11 09:00 A | 2026-03-11 09:15 A | 100% |  |  | start no earlier than 2026-03-11 09:00 | Тимофеев В | 0.25h | 0.25h |
| 2629 | 12.1.6.3 | чистка фильтра | 30min | 2026-07-16 09:00 A | 2026-07-16 09:30 A | 100% |  |  | start no earlier than 2026-07-16 09:00 | Бобренок В | 0.5h | 0.5h |
| 2630 | 12.1.6.4 | тэны и термпары шнеков- прортяжка | 30min | 2025-02-25 09:00 | 2025-02-25 09:30 |  |  | 539.53d | start no earlier than 2025-02-25 09:00 | Дедов В | 0.5h |  |
| 2631 | 12.1.6.5 | Чистка фильтра | 30min | 2026-07-29 08:00 A | 2026-07-29 09:30 A | 100% |  |  | start no earlier than 2026-07-29 08:00 | Тимофеев В | 0.5h | 0.5h |
| 2632 | 12.1.6.6 | тэны и термпоры шнеков- прортяжка | 30min | 2026-09-23 09:00 A | 2026-09-23 09:30 A | 100% |  |  | start no earlier than 2026-09-23 09:00 | Некрасов А | 0.5h | 0.5h |
| 2633 | 12.1.6.7 | Чистка фильтра | 30min | 2026-09-23 09:00 A | 2026-09-23 09:30 A | 100% |  |  | start no earlier than 2026-09-23 09:00 | Бундин В | 0.5h | 0.5h |
| 2634 | 12.1.6.8 | Чистка фильтра/тэны и термопары шнеков - протяжка | 30min | 2026-09-30 09:00 A | 2026-09-30 09:30 A | 100% |  |  | start no earlier than 2026-09-30 09:00 | Тимофеев В | 0.5h | 0.5h |
| 2635 | 12.1.6.9 | **шкаф управления экструдером** | 144.03d | 2026-03-31 09:00 A | 2026-10-07 09:15 | 86% | 20.58d | 110.56d |  |  | 1.75h | 1.5h |
| 2636 | 12.1.6.9.1 | протяжка контактов | 30min | 2026-03-31 09:00 A | 2026-03-31 09:30 A | 100% |  |  | start no earlier than 2026-03-11 09:00 | Некрасов А | 0.5h | 0.5h |
| 2637 | 12.1.6.9.2 | частотные привода экструдера, ножей, питателя - продувка | 30min | 2026-05-27 09:00 A | 2026-05-27 09:30 A | 100% |  |  | start no earlier than 2026-05-27 09:00 | Бундин В | 0.5h | 0.5h |
| 2638 | 12.1.6.9.3 | частотные привода экструдера, ножей, питателя - продувка | 15min | 2026-07-29 09:00 A | 2026-07-29 09:15 A | 100% |  |  | start no earlier than 2026-07-29 08:00 | Труфанов А | 0.25h | 0.25h |
| 2639 | 12.1.6.9.4 | частотные привода экструдера, ножей, питателя - продувка | 15min | 2026-09-23 09:00 A | 2026-09-23 09:15 A | 100% |  |  | start no earlier than 2026-09-23 09:00 | Некрасов А | 0.25h | 0.25h |
| 2640 | 12.1.6.9.5 | частотные привода экструдера, ножей, питателя - продувка | 15min | 2026-10-07 09:00 | 2026-10-07 09:15 |  |  | 110.56d | start no earlier than 2026-10-07 09:00 | Тимофеев В | 0.25h |  |

| ID | WBS | Task | Duration | Start | Finish | Complete | Remaining | Total slack | Constraint | Resources | Work | Actual work |
| --- | --- | --- | --- | --- | --- | --- | --- | --- | --- | --- | --- | --- |
| 2641 | 12.1.6.10 | **блок тэнов сушки** | 108.03d | 2026-05-20 09:00 A | 2026-10-07 09:15 | 71% | 30.87d | 110.56d |  |  | 1.75h | 1.25h |
| 2642 | 12.1.6.10.1 | ревизия, замена отгоревших жил, проверка токов | 1h | 2026-05-20 09:00 A | 2026-05-20 10:00 A | 100% |  |  | start no earlier than 2026-05-20 09:00 | Некрасов А | 1h | 1h |
| 2643 | 12.1.6.10.2 | ревизия/ проверка токов | 15min | 2026-08-26 09:00 | 2026-08-26 09:15 |  |  | 148.56d | start no earlier than 2026-08-26 09:00 | Некрасов А | 0.25h |  |
| 2644 | 12.1.6.10.3 | ревизия/ проверка токов | 15min | 2026-09-23 09:00 A | 2026-09-23 09:15 A | 100% |  |  | start no earlier than 2026-09-23 09:00 | Труфанов А | 0.25h | 0.25h |
| 2645 | 12.1.6.10.4 | ревизия/ проверка токов | 15min | 2026-10-07 09:00 | 2026-10-07 09:15 |  |  | 110.56d | start no earlier than 2026-10-07 09:00 | Тимофеев В | 0.25h |  |
| 2646 | 12.1.6.11 | **шкаф управления тэнами сушки** | 68.5d | 2026-06-10 09:00 A | 2026-09-11 13:00 | 11% | 61.29d | 135.09d |  |  | 4.75h | 0.5h |
| 2647 | 12.1.6.11.1 | протяжка контактов | 15min | 2026-06-10 09:00 | 2026-06-10 09:15 |  |  | 203.56d | start no earlier than 2026-06-10 09:00 | Дедов В | 0.25h |  |
| 2648 | 12.1.6.11.2 | замена неисправных жил | 4h | 2026-09-11 09:00 | 2026-09-11 13:00 |  |  | 135.09d | start no earlier than 2026-09-11 09:00 | Тимофеев В | 4h |  |
| 2649 | 12.1.6.11.3 | частотные привода экструдера, ножей, питателя - продувка | 30min | 2026-07-16 09:00 A | 2026-07-16 09:30 A | 100% |  |  | start no earlier than 2026-07-16 09:00 | Бобренок В | 0.5h | 0.5h |
| 2650 | 12.1.6.12 | конвейер №1 с печи в дрожировщик прорверка подшипники, реуктор | 30min | 2025-02-17 09:00 | 2025-02-17 09:30 |  |  | 545.53d | start no earlier than 2025-02-15 09:00 | Дедов В | 0.5h |  |
| 2651 | 12.1.6.13 | Осмотр, продувка, протяжка контактов | 20min | 2026-09-23 09:00 A | 2026-09-23 09:20 A | 100% |  |  | start no earlier than 2026-09-23 09:00 | Труфанов А | 0.33h | 0.33h |
| 2652 | 12.1.6.14 | Осмотр, продувка, протяжка контактов | 20min | 2026-10-07 09:00 | 2026-10-07 09:20 |  |  | 110.55d | start no earlier than 2026-10-07 09:00 | Тимофеев В | 0.33h |  |
| 2653 | 12.1.7 | **барабан смесительный дрожировка - прорверка подшипнки , реуктор** | 157.03d | 2026-03-04 08:00 A | 2026-09-30 09:15 A | 100% |  |  |  |  | 2.75h | 2.75h |
| 2654 | 12.1.7.1 | замена вал № 4 час | 2h | 2026-03-04 08:00 A | 2026-03-04 11:00 A | 100% |  |  | start no earlier than 2026-03-04 08:00 | Тимофеев В | 2h | 2h |
| 2655 | 12.1.7.2 | Дефектовка - проверить подачу, вибрации, посторонние шумы. | 15min | 2026-07-29 08:00 A | 2026-07-29 09:15 A | 100% |  |  | start no earlier than 2026-07-29 08:00 | Тимофеев В | 0.25h | 0.25h |
| 2656 | 12.1.7.3 | Дефектовка - проверить подачу, вибрации, посторонние шумы. | 15min | 2026-09-23 09:00 A | 2026-09-23 09:15 A | 100% |  |  | start no earlier than 2026-09-23 09:00 | Некрасов А | 0.25h | 0.25h |
| 2657 | 12.1.7.4 | Дефектовка - проверить подачу, вибрации, посторонние шумы/проверка фильтров/насосов/фитингов | 15min | 2026-09-30 09:00 A | 2026-09-30 09:15 A | 100% |  |  | start no earlier than 2026-09-30 09:00 | Тимофеев В | 0.25h | 0.25h |
| 2658 | 12.1.8 | **печь** | 639.12d | 2024-05-07 09:00 A | 2026-10-07 10:00 | 90% | 63.91d | 110.47d |  |  | 19h | 17.5h |
| 2659 | 12.1.8.1 | проверка состояния сетки, ремонт шплинтов | 2h | 2026-07-16 09:00 A | 2026-07-16 11:00 A | 100% |  |  | start no earlier than 2026-07-16 09:00 | Бобренок В; Некрасов А; Труфанов А | 6h | 6h |
| 2660 | 12.1.8.2 | укоротить звено привода | 1h | 2026-07-16 09:00 A | 2026-07-16 10:00 A | 100% |  |  | start no earlier than 2026-07-16 09:00 | Некрасов А | 1h | 1h |
| 2661 | 12.1.8.3 | вентиляторы обдува сушки | 2h | 2024-06-14 09:00 A | 2024-06-14 11:00 A | 100% |  |  | start no earlier than 2024-06-14 09:00 | ТО_2 | 2h | 2h |
| 2662 | 12.1.8.4 | пневотранспорт вентилятор | 2h | 2024-05-07 09:00 A | 2024-05-07 11:00 A | 100% |  |  | start no earlier than 2024-05-07 09:00 | ТО_1 | 2h | 2h |
| 2663 | 12.1.8.5 | пневотранспорт роторный питатель - проверка масла | 30min | 2025-02-17 09:00 A | 2025-02-17 09:30 A | 100% |  |  | start no earlier than 2025-02-16 09:00 | Черепанов И | 0.5h | 0.5h |
| 2664 | 12.1.8.6 | пневотранспорт роторный питатель - проверка масла | 30min | 2026-07-29 09:00 A | 2026-07-29 09:30 A | 100% |  |  | start no earlier than 2026-07-29 08:00 | Труфанов А | 0.5h | 0.5h |
| 2665 | 12.1.8.7 | привод сетки ПЕЧИ сушки - прорверка масла | 30min | 2025-02-17 09:00 A | 2025-02-17 09:30 A | 100% |  |  | start no earlier than 2025-02-16 09:00 | Черепанов И | 0.5h | 0.5h |
| 2666 | 12.1.8.8 | привод сетки ПЕЧИ сушки - прорверка масла | 30min | 2026-07-29 09:00 A | 2026-07-29 09:30 A | 100% |  |  | start no earlier than 2026-07-29 08:00 | Труфанов А | 0.5h | 0.5h |
| 2667 | 12.1.8.9 | дозатор сухой гидролизат - разборка, чистка, замена подшипников | 2h | 2026-08-18 09:00 A | 2026-08-18 11:00 A | 100% |  |  | start no earlier than 2026-08-18 09:00 | Бундин В | 2h | 2h |
| 2668 | 12.1.8.10 | Осмотр цепи и сетки | 1h | 2026-07-29 09:00 A | 2026-07-29 10:00 A | 100% |  |  | start no earlier than 2026-07-29 08:00 | Труфанов А | 1h | 1h |
| 2669 | 12.1.8.11 | Контроль состояния сетки/цепи | 30min | 2026-09-23 09:00 A | 2026-09-23 09:30 A | 100% |  |  | start no earlier than 2026-09-23 09:00 | Некрасов А | 0.5h | 0.5h |
| 2670 | 12.1.8.12 | Смазка цепи (при наличии на складе) | 1h | 2026-09-23 09:00 A | 2026-09-23 10:00 A | 100% |  |  | start no earlier than 2026-09-23 09:00 | Некрасов А | 1h | 1h |
| 2671 | 12.1.8.13 | Контроль состояния сетки/цепи | 1h | 2026-10-07 09:00 | 2026-10-07 10:00 |  |  | 110.47d | start no earlier than 2026-10-07 09:00 | Тимофеев В | 1h |  |
| 2672 | 12.1.8.14 | Проверка масла на приводе/осмотр | 30min | 2026-10-07 09:00 | 2026-10-07 09:30 |  |  | 110.53d | start no earlier than 2026-10-07 09:00 | Тимофеев В | 0.5h |  |

| ID | WBS | Task | Duration | Start | Finish | Complete | Remaining | Actual start | Total slack | Constraint | Resources | Work | Actual work |
| --- | --- | --- | --- | --- | --- | --- | --- | --- | --- | --- | --- | --- | --- |
| 2673 | 12.1.9 | **линия 2** | 0.25d? | 2023-12-29 09:00 | 2023-12-29 11:00 | 83% | 0.04d? | 2024-04-10 09:00 |  |  |  | 41.58h | 34.75h |
| 2674 | 12.1.9.1 | **питатель экструдера** | 158.06d | 2026-03-18 09:00 A | 2026-10-14 09:30 | 91% | 14.37d |  | 105.53d |  |  | 4.5h | 4h |
| 2675 | 12.1.9.1.1 | контроль состояние пластик втулки | 30min | 2026-06-02 09:00 A | 2026-06-02 09:30 A | 100% |  |  |  | start no earlier than 2026-06-02 09:00 | Некрасов А | 0.5h | 0.5h |
| 2676 | 12.1.9.1.2 | замена подшипники | 1h | 2026-04-08 09:00 A | 2026-04-08 10:00 A | 100% |  |  |  | start no earlier than 2026-04-08 09:00 |  |  |  |
| 2677 | 12.1.9.1.3 | замена шестеренок -взять у Веры на складе | 2h | 2026-05-20 09:00 A | 2026-05-20 11:00 A | 100% |  |  |  | start no earlier than 2026-05-20 09:00 | Бобренок В | 2h | 2h |
| 2678 | 12.1.9.1.4 | контроль пластик втулки | 30min | 2026-05-13 09:00 A | 2026-05-13 09:30 A | 100% |  |  |  | start no earlier than 2026-05-13 09:00 | Бобренок В | 0.5h | 0.5h |
| 2679 | 12.1.9.1.5 | контроль шестерен привода, редуктора | 10min | 2026-03-18 09:00 A | 2026-03-18 09:10 A | 100% |  |  |  | start no earlier than 2026-03-18 09:00 | Труфанов А | 0.17h | 0.17h |
| 2680 | 12.1.9.1.6 | Ревизия питателя | 20min | 2026-07-29 09:00 A | 2026-07-29 09:20 A | 100% |  |  |  | start no earlier than 2026-07-29 08:00 | Бундин В | 0.33h | 0.33h |
| 2681 | 12.1.9.1.7 | Ревизия питателя, контроль состояния подшипников/втулки/шестерен | 30min | 2026-09-23 09:00 A | 2026-09-23 09:30 A | 100% |  |  |  | start no earlier than 2026-09-23 09:00 | Бундин В | 0.5h | 0.5h |
| 2682 | 12.1.9.1.8 | Ревизия питателя, контроль состояния подшипников/втулки/шестерен | 30min | 2026-10-14 09:00 | 2026-10-14 09:30 |  |  |  | 105.53d | start no earlier than 2026-10-14 09:00 | Дедов В | 0.5h |  |
| 2683 | 12.1.9.2 | **прекондицинер экструдера** | 118.03d | 2026-05-13 09:00 A | 2026-10-14 09:15 | 75% | 29.51d |  | 105.56d |  |  | 1h | 0.75h |
| 2684 | 12.1.9.2.1 | контроль привода, подшипников | 15min | 2026-05-13 09:00 A | 2026-05-13 09:15 A | 100% |  |  |  | start no earlier than 2026-05-13 09:00 | Бобренок В | 0.25h | 0.25h |
| 2685 | 12.1.9.2.2 | контроль привода, подшипников | 15min | 2026-07-29 09:00 A | 2026-07-29 09:15 A | 100% |  |  |  | start no earlier than 2026-07-29 08:00 | Труфанов А | 0.25h | 0.25h |
| 2686 | 12.1.9.2.3 | контроль привода, подшипников | 15min | 2026-09-23 09:00 A | 2026-09-23 09:15 A | 100% |  |  |  | start no earlier than 2026-09-23 09:00 | Бундин В | 0.25h | 0.25h |
| 2687 | 12.1.9.2.4 | контроль привода, подшипников | 15min | 2026-10-14 09:00 | 2026-10-14 09:15 |  |  |  | 105.56d | start no earlier than 2026-10-14 09:00 | Дедов В | 0.25h |  |
| 2688 | 12.1.9.3 | **парогенератор** | 65.12d | 2026-05-13 09:00 A | 2026-08-12 10:00 A | 100% |  |  |  |  |  | 2h | 2h |
| 2689 | 12.1.9.3.1 | вскрытие электородов, чистка | 1h | 2026-05-13 09:00 A | 2026-05-13 10:00 A | 100% |  |  |  | start no earlier than 2026-05-13 09:00 | Бобренок В | 1h | 1h |
| 2690 | 12.1.9.3.2 | вскрытие электородов, чистка | 1h | 2026-08-12 09:00 A | 2026-08-12 10:00 A | 100% |  |  |  | start no earlier than 2026-08-12 09:00 | Некрасов А | 1h | 1h |
| 2691 | 12.1.9.4 | тэны и термпоры шнеков- прортяжка | 30min | 2024-04-10 09:00 | 2024-04-10 09:30 |  |  |  | 768.53d | start no earlier than 2024-04-10 09:00 | Черепанов И | 0.5h |  |
| 2692 | 12.1.9.5 | Чистка парогенератора | 1h | 2026-07-29 09:00 A | 2026-07-29 10:00 A | 100% |  |  |  | start no earlier than 2026-07-29 08:00 | Бундин В | 1h | 1h |
| 2693 | 12.1.9.6 | вскрытие электородов, чистка (при остановке линии на мойку, если не остановилась, передать по смене Бундину) | 1h | 2026-09-23 09:00 A | 2026-09-23 10:00 A | 100% |  |  |  | start no earlier than 2026-09-23 09:00 | Некрасов А | 1h | 1h |
| 2694 | 12.1.9.7 | вскрытие электородов, чистка (при остановке линии на мойку, если не остановилась, передать по смене Дедову) | 1h | 2026-09-29 09:00 A | 2026-09-29 10:00 A | 100% |  |  |  | start no earlier than 2026-09-29 08:00 | Бундин В; Дедов В | 2h | 2h |
| 2695 | 12.1.9.8 | **шкаф управления экструдером** | 163.03d | 2026-03-11 09:00 A | 2026-10-14 09:15 | 88% | 20.38d |  | 105.56d |  |  | 2h | 1.75h |
| 2696 | 12.1.9.8.1 | протяжка контактов | 30min | 2026-03-11 09:00 A | 2026-03-11 09:30 A | 100% |  |  |  | start no earlier than 2026-03-11 09:00 | Некрасов А | 0.5h | 0.5h |
| 2697 | 12.1.9.8.2 | частотные привода экструдера, ножей, питателя - продувка | 30min | 2026-05-27 09:00 A | 2026-05-27 09:30 A | 100% |  |  |  | start no earlier than 2026-05-27 09:00 | Бундин В | 0.5h | 0.5h |
| 2698 | 12.1.9.8.3 | частотные привода экструдера, ножей, питателя - продувка | 15min | 2026-07-16 09:00 A | 2026-07-16 09:15 A | 100% |  |  |  | start no earlier than 2026-07-16 09:00 | Бобренок В | 0.25h | 0.25h |
| 2699 | 12.1.9.8.4 | частотные привода экструдера, ножей, питателя - продувка | 15min | 2026-07-29 09:00 A | 2026-07-29 09:15 A | 100% |  |  |  | start no earlier than 2026-07-29 08:00 | Труфанов А | 0.25h | 0.25h |
| 2700 | 12.1.9.8.5 | частотные привода экструдера, ножей, питателя - продувка | 15min | 2026-09-23 09:00 A | 2026-09-23 09:15 A | 100% |  |  |  | start no earlier than 2026-09-23 09:00 | Труфанов А | 0.25h | 0.25h |
| 2701 | 12.1.9.8.6 | частотные привода экструдера, ножей, питателя - продувка | 15min | 2026-10-14 09:00 | 2026-10-14 09:15 |  |  |  | 105.56d | start no earlier than 2026-10-14 09:00 | Дедов В | 0.25h |  |

| ID | WBS | Task | Duration | Start | Finish | Complete | Remaining | Total slack | Constraint | Resources | Work | Actual work |
| --- | --- | --- | --- | --- | --- | --- | --- | --- | --- | --- | --- | --- |
| 2702 | 12.1.9.9 | **редуктор экструдера и маслянная станция** | 113.06d | 2026-05-20 09:00 A | 2026-10-14 09:30 | 88% | 14.13d | 105.53d |  |  | 5h | 4.5h |
| 2703 | 12.1.9.9.1 | чистка фильтра | 30min | 2026-06-02 09:00 A | 2026-06-02 09:30 A | 100% |  |  | start no earlier than 2026-06-02 09:00 | Тимофеев В | 0.5h | 0.5h |
| 2704 | 12.1.9.9.2 | чистка фильтра | 30min | 2026-05-20 09:00 A | 2026-05-20 09:30 A | 100% |  |  | start no earlier than 2026-05-20 09:00 | Тимофеев В | 0.5h | 0.5h |
| 2705 | 12.1.9.9.3 | муфта редутор-мотор проверка состояния | 30min | 2026-05-27 09:00 A | 2026-05-27 09:30 A | 100% |  |  | start no earlier than 2026-05-27 09:00 | Тимофеев В | 0.5h | 0.5h |
| 2706 | 12.1.9.9.4 | чистка фильтра | 30min | 2026-07-16 09:00 A | 2026-07-16 09:30 A | 100% |  |  | start no earlier than 2026-07-16 09:00 | Бобренок В | 0.5h | 0.5h |
| 2707 | 12.1.9.9.5 | Чистка фильтра | 30min | 2026-07-29 08:00 A | 2026-07-29 09:30 A | 100% |  |  | start no earlier than 2026-07-29 08:00 | Тимофеев В | 0.5h | 0.5h |
| 2708 | 12.1.9.9.6 | Осмотр редуктор-двигатель, нехороший шум, проверить втулки МУВП/заменить | 1h | 2026-09-23 09:00 A | 2026-09-23 10:00 A | 100% |  |  | start no earlier than 2026-09-23 09:00 | Бундин В; Некрасов А | 2h | 2h |
| 2709 | 12.1.9.9.7 | Чистка фильтра/тэны и термопары шнеков - протяжка | 30min | 2026-10-14 09:00 | 2026-10-14 09:30 |  |  | 105.53d | start no earlier than 2026-10-14 09:00 | Дедов В | 0.5h |  |
| 2710 | 12.1.9.10 | **блок тэнов сушки - протяжка** | 113.04d? | 2026-05-20 09:00 A | 2026-10-14 09:20 | 65% | 39.72d? | 105.55d |  |  | 12.33h | 8h |
| 2711 | 12.1.9.10.1 | ревизия, замена отгоревших жил, проверка токов | 3h | 2026-05-20 09:00 A | 2026-05-20 12:00 A | 100% |  |  | start no earlier than 2026-05-20 09:00 | Бобренок В | 3h | 3h |
| 2712 | 12.1.9.10.2 | ревизия, замена отгоревших жил, проверка токов | 4h? | 2026-09-11 09:00 | 2026-09-11 13:00 |  |  | 135.09d | start no earlier than 2026-09-11 09:00 | Тимофеев В | 4h |  |
| 2713 | 12.1.9.10.3 | Полное ТО шкафа управления, замена всех отгоревших жил/клемм, протяжка контактов | 5h | 2026-09-23 09:00 A | 2026-09-23 15:00 A | 100% |  |  | start no earlier than 2026-09-23 09:00 | Труфанов А | 5h | 5h |
| 2714 | 12.1.9.10.4 | Ревизия, проверка жил, проверка токов | 20min | 2026-10-14 09:00 | 2026-10-14 09:20 |  |  | 105.55d | start no earlier than 2026-10-14 09:00 | Дедов В | 0.33h |  |
| 2715 | 12.1.9.11 | **шкаф управления тэнами сушки** | 65.03d | 2026-05-20 09:00 A | 2026-08-19 09:15 | 83% | 10.84d | 153.56d |  |  | 1.5h | 1.25h |
| 2716 | 12.1.9.11.1 | протяжка контактов | 15min | 2026-05-20 09:00 A | 2026-05-20 09:15 A | 100% |  |  | start no earlier than 2026-05-20 09:00 | Бобренок В | 0.25h | 0.25h |
| 2717 | 12.1.9.11.2 | замена неисправных жил | 1h | 2026-05-20 09:00 A | 2026-05-20 10:00 A | 100% |  |  | start no earlier than 2026-05-20 09:00 | Бобренок В | 1h | 1h |
| 2718 | 12.1.9.11.3 | ревизия/ проверка токов | 15min | 2026-08-19 09:00 | 2026-08-19 09:15 |  |  | 153.56d | start no earlier than 2026-08-19 09:00 | Некрасов А | 0.25h |  |
| 2719 | 12.1.9.12 | конвейер №1 с печи в дрожировщик прорверка подшипники, реуктор | 30min | 2024-10-04 09:00 A | 2024-10-04 09:30 A | 100% |  |  | start no earlier than 2024-10-04 09:00 | Тимофеев В | 0.5h | 0.5h |
| 2720 | 12.1.9.13 | барабан смесительный дрожировка - прорверка подшипнки , реуктор | 30min | 2024-10-04 09:00 A | 2024-10-04 09:30 A | 100% |  |  | start no earlier than 2024-10-04 09:00 | Тимофеев В | 0.5h | 0.5h |
| 2721 | 12.1.9.14 | конвейер №2 с дрожировки в охладитель - проверка подшипники , редуктор | 30min | 2024-10-04 09:00 A | 2024-10-04 09:30 A | 100% |  |  | start no earlier than 2024-10-04 09:00 | Тимофеев В | 0.5h | 0.5h |
| 2722 | 12.1.9.15 | охладитель сеточный - смазка, натяжка цепи. Проверка редуктор | 1h | 2026-09-23 09:00 A | 2026-09-23 10:00 A | 100% |  |  | start no earlier than 2026-09-23 09:00 | Бундин В; Некрасов А | 2h | 2h |
| 2723 | 12.1.9.16 | вентиляторы обдува сушки | 2h | 2024-06-14 09:00 A | 2024-06-14 11:00 A | 100% |  |  | start no earlier than 2024-06-14 09:00 | ТО_2 | 2h | 2h |
| 2724 | 12.1.9.17 | дозатор сухой гидролизат - разборка, чистка, замена подшипников | 2h | 2026-08-20 09:00 A | 2026-08-20 11:00 A | 100% |  |  | start no earlier than 2026-08-20 09:00 | Макаревич А | 2h | 2h |
| 2725 | 12.1.9.18 | ревизия/ проверка токов/протяжка контактов | 15min | 2026-10-14 09:00 | 2026-10-14 09:15 |  |  | 105.56d | start no earlier than 2026-10-14 09:00 | Дедов В | 0.25h |  |

| ID | WBS | Task | Duration | Start | Finish | Complete | Remaining | Total slack | Constraint | Resources | Work | Actual work |
| --- | --- | --- | --- | --- | --- | --- | --- | --- | --- | --- | --- | --- |
| 2726 | 12.1.9.19 | **Насос гидролизата** | 85.06d | 2026-04-01 09:00 A | 2026-07-29 09:30 A | 100% |  |  |  |  | 1h | 1h |
| 2727 | 12.1.9.19.1 | Дефектовка - проверить подачу, вибрации, посторонние шумы. | 30min | 2026-04-01 09:00 A | 2026-04-01 09:30 A | 100% |  |  | start no earlier than 2026-04-01 09:00 | Тимофеев В | 0.5h | 0.5h |
| 2728 | 12.1.9.19.2 | Дефектовка - проверить подачу, вибрации, посторонние шумы. | 30min | 2026-07-29 08:00 A | 2026-07-29 09:30 A | 100% |  |  | start no earlier than 2026-07-29 08:00 | Тимофеев В | 0.5h | 0.5h |
| 2729 | 12.1.10 | **Квадропак** | 122.12d | 2026-04-22 09:00 A | 2026-09-30 10:00 A | 100% |  |  |  |  | 13.25h | 13.25h |
| 2730 | 12.1.10.1 | Установить дополнительные пружины на дозатор | 1h | 2026-09-30 09:00 A | 2026-09-30 10:00 A | 100% |  |  | start no earlier than 2026-09-30 09:00 | Труфанов А; Некрасов А | 2h | 2h |
| 2731 | 12.1.10.2 | проверить резьбу крепления встряхивателя №1, закрепить | 1h | 2026-06-02 09:00 A | 2026-06-02 10:00 A | 100% |  |  | start no earlier than 2026-06-02 09:00 | Макаревич А | 1h | 1h |
| 2732 | 12.1.10.3 | Замена резинки на воздушном редукторе находящемся под мультиголовой (весы) | 1h | 2026-04-22 09:00 A | 2026-04-22 10:00 A | 100% |  |  | start no earlier than 2026-04-22 09:00 | Бундин В | 1h | 1h |
| 2733 | 12.1.10.4 | ТО узла пайки. Чистка тен/ревизия термоизолятора пневморедуктора | 1h | 2026-05-27 09:00 A | 2026-05-27 10:00 A | 100% |  |  | start no earlier than 2026-05-27 09:00 | Тимофеев В | 1h | 1h |
| 2734 | 12.1.10.5 | ревизия привод встряхивателя | 30min | 2026-05-27 09:00 A | 2026-05-27 09:30 A | 100% |  |  | start no earlier than 2026-05-27 09:00 | Тимофеев В | 0.5h | 0.5h |
| 2735 | 12.1.10.6 | ревизия протяжки кинематики низ / верх | 30min | 2026-05-27 09:00 A | 2026-05-27 09:30 A | 100% |  |  | start no earlier than 2026-05-27 09:00 | Тимофеев В | 0.5h | 0.5h |
| 2736 | 12.1.10.7 | ревизия вакуумный насос | 15min | 2026-05-27 09:00 A | 2026-05-27 09:15 A | 100% |  |  | start no earlier than 2026-05-27 09:00 | Тимофеев В | 0.25h | 0.25h |
| 2737 | 12.1.10.8 | замена вал выход | 4h | 2026-06-15 09:00 A | 2026-06-15 13:00 A | 100% |  |  | start no earlier than 2026-06-15 09:00 | Тимофеев В | 4h | 4h |
| 2738 | 12.1.10.9 | проверить пневмоцилиндр на встряхивателе, если нужно заменить | 1h | 2026-05-20 09:00 A | 2026-05-20 10:00 A | 100% |  |  | start no earlier than 2026-05-20 09:00 | Некрасов А | 1h | 1h |
| 2739 | 12.1.10.10 | Закрепить, подровнять, слесарные работы которые требуются | 1h | 2026-09-30 09:00 A | 2026-09-30 10:00 A | 100% |  |  | start no earlier than 2026-09-30 09:00 | Труфанов А; Некрасов А | 2h | 2h |
| 2740 | 12.1.11 | **Парогенератор** | 6.25d | 2026-06-02 09:00 A | 2026-06-10 11:00 A | 100% |  |  |  |  | 3h | 3h |
| 2741 | 12.1.11.1 | читска парогенератора, если нужно замена электродов | 2h | 2026-06-10 09:00 A | 2026-06-10 11:00 A | 100% |  |  | start no earlier than 2026-06-10 09:00 | Дедов В | 2h | 2h |
| 2742 | 12.1.11.2 | читска парогенератора, если нужно замена электродов | 1h | 2026-06-02 09:00 A | 2026-06-02 10:00 A | 100% |  |  | start no earlier than 2026-06-02 09:00 | Тимофеев В | 1h | 1h |
| 2743 | 12.1.12 | **Дражжировка** | 37.03d | 2026-08-27 09:00 | 2026-10-07 09:15 |  |  |  |  |  | 2.67h |  |
| 2744 | 12.1.12.1 | Проверка подшипников на барабанах | 15min | 2026-08-27 09:00 | 2026-08-27 09:15 |  |  | 147.56d | start no earlier than 2026-08-27 09:00 | Тимофеев В | 0.25h |  |
| 2745 | 12.1.12.2 | Проверка фильтров | 10min | 2026-08-27 09:00 | 2026-08-27 09:10 |  |  | 147.57d | start no earlier than 2026-08-27 09:00 | Тимофеев В | 0.17h |  |
| 2746 | 12.1.12.3 | Ревизия насоса гидролизата | 2h | 2026-08-27 09:00 | 2026-08-27 11:00 |  |  | 147.34d | start no earlier than 2026-08-27 09:00 | Тимофеев В | 2h |  |
| 2747 | 12.1.12.4 | Дефектовка - проверить подачу, вибрации, посторонние шумы/проверка фильтров/насосов/фитингов | 15min | 2026-10-14 09:00 | 2026-10-14 09:15 |  |  | 105.56d | start no earlier than 2026-10-14 09:00 | Дедов В | 0.25h |  |
| 2748 | 12.1.13 | **жиротопка и насос перекачки жира** | 600.03d | 2024-04-10 09:00 A | 2026-07-29 09:15 | 25% | 450.02d | 168.56d |  |  | 1h | 0.25h |
| 2749 | 12.1.13.1 | блок тэнов -протяжка | 30min | 2024-04-10 09:00 | 2024-04-10 09:30 |  |  | 768.53d | start no earlier than 2024-04-10 08:00 | Тимофеев В | 0.5h |  |
| 2750 | 12.1.13.2 | насос, фильтр - осмотр, чистка | 15min | 2024-04-25 09:00 | 2024-04-25 09:15 |  |  | 757.56d | start no earlier than 2024-04-25 09:00 | Тимофеев В | 0.25h |  |
| 2751 | 12.1.13.3 | насос, фильтр - осмотр, чистка | 15min | 2026-07-29 09:00 A | 2026-07-29 09:15 A | 100% |  |  | start no earlier than 2026-07-29 08:00 | Труфанов А | 0.25h | 0.25h |

| ID | WBS | Task | Duration | Start | Finish | Complete | Remaining | Total slack | Constraint | Resources | Work | Actual work |
| --- | --- | --- | --- | --- | --- | --- | --- | --- | --- | --- | --- | --- |
| 2752 | 12.1.14 | **упаковщкики** | 441.25d | 2025-02-14 09:00 A | 2026-10-14 11:00 | 14% | 378.21d | 105.34d |  |  | 30h | 4h |
| 2753 | 12.1.14.1 | упаковщик ТЕКО 0,4кг | 2h | 2025-02-16 09:00 A | 2025-02-17 11:00 A | 100% |  |  | start no earlier than 2025-02-16 09:00 | Дедов В | 2h | 2h |
| 2754 | 12.1.14.2 | упаковщик ТЕКО 0,4кг | 2h | 2026-08-26 09:00 | 2026-08-26 11:00 |  |  | 148.34d | start no earlier than 2026-08-26 09:00 | Тимофеев В | 2h |  |
| 2755 | 12.1.14.3 | упаковщик НОТИС | 2h | 2025-02-17 09:00 | 2025-02-17 11:00 |  |  | 545.34d | start no earlier than 2025-02-16 09:00 | Дедов В | 2h |  |
| 2756 | 12.1.14.4 | упаковщик ТЕКО 1.5кг | 2h | 2025-02-17 09:00 | 2025-02-17 11:00 |  |  | 545.34d | start no earlier than 2025-02-16 09:00 | Дедов В | 2h |  |
| 2757 | 12.1.14.5 | упаковщик КВАДРОПАК | 2h | 2025-02-17 09:00 | 2025-02-17 11:00 |  |  | 545.34d | start no earlier than 2025-02-16 09:00 | Дедов В | 2h |  |
| 2758 | 12.1.14.6 | нория и вибробункер КВАДРОПАК | 2h | 2025-02-17 09:00 | 2025-02-17 11:00 |  |  | 545.34d | start no earlier than 2025-02-16 09:00 | Дедов В | 2h |  |
| 2759 | 12.1.14.7 | запайщик 1 | 2h | 2025-02-17 09:00 | 2025-02-17 11:00 |  |  | 545.34d | start no earlier than 2025-02-17 09:00 | Дедов В | 2h |  |
| 2760 | 12.1.14.8 | запайщик 2 | 2h | 2025-02-17 09:00 | 2025-02-17 11:00 |  |  | 545.34d | start no earlier than 2025-02-17 09:00 | Дедов В | 2h |  |
| 2761 | 12.1.14.9 | конвейер гп ТЕКО 1,5 | 2h | 2025-02-14 09:00 | 2025-02-14 11:00 |  |  | 546.34d | start no earlier than 2025-02-14 09:00 | Макаревич А | 2h |  |
| 2762 | 12.1.14.10 | конвейер гп ТЕКО 0,4 | 2h | 2025-02-14 09:00 | 2025-02-14 11:00 |  |  | 546.34d | start no earlier than 2025-02-14 09:00 | Макаревич А | 2h |  |
| 2763 | 12.1.14.11 | накопительный стол 1,5 | 2h | 2025-02-17 09:00 | 2025-02-17 11:00 |  |  | 545.34d | start no earlier than 2025-02-15 09:00 | Макаревич А | 2h |  |
| 2764 | 12.1.14.12 | накопительный стол 0,4 | 2h | 2025-02-17 09:00 | 2025-02-17 11:00 |  |  | 545.34d | start no earlier than 2025-02-15 09:00 | Макаревич А | 2h |  |
| 2765 | 12.1.14.13 | Осмотр всех упаковщиков/транспортеров/накопительных столов/ всех щитков оборудования | 2h | 2026-07-29 09:00 A | 2026-07-29 11:00 A | 100% |  |  | start no earlier than 2026-07-29 08:00 | Бундин В | 2h | 2h |
| 2766 | 12.1.14.14 | Осмотр всех упаковщиков/транспортеров/накопительных столов/ всех щитков оборудования | 2h | 2026-10-14 09:00 | 2026-10-14 11:00 |  |  | 105.34d | start no earlier than 2026-10-14 09:00 | Тимофеев В; Дедов В | 4h |  |
| 2767 | 12.1.15 | **электрооборудование** | 667.12d? | 2024-04-04 09:00 A | 2026-10-14 10:00 | 11% | 592.01d? | 105.47d |  | ТО | 5769.83h | 676h |
| 2768 | 12.1.15.1 | ВРУ1 | 15min | 2026-05-20 09:00 | 2026-05-20 09:15 |  |  | 218.56d | start no earlier than 2026-05-20 09:00 | ТО; Тимофеев В | 0.5h |  |
| 2769 | 12.1.15.2 | ВРУ2 | 15min | 2026-05-20 09:00 | 2026-05-20 09:15 |  |  | 218.56d | start no earlier than 2026-05-20 09:00 | ТО; Тимофеев В | 0.5h |  |
| 2770 | 12.1.15.3 | ЩР1 экструдер | 15min | 2026-05-20 09:00 | 2026-05-20 09:15 |  |  | 218.56d | start no earlier than 2026-05-20 09:00 | ТО; Тимофеев В | 0.5h |  |
| 2771 | 12.1.15.4 | ЩР2 упаковка №1 | 15min | 2026-05-20 09:00 | 2026-05-20 09:15 |  |  | 218.56d | start no earlier than 2026-05-20 09:00 | ТО; Тимофеев В | 0.5h |  |
| 2772 | 12.1.15.5 | ЩР3 упаковка №2 | 15min | 2026-05-20 09:00 | 2026-05-20 09:15 |  |  | 218.56d | start no earlier than 2026-05-20 09:00 | ТО; Тимофеев В | 0.5h |  |
| 2773 | 12.1.15.6 | ЩР жиротопка и зона жиров | 1h | 2026-05-20 09:00 | 2026-05-20 10:00 |  |  | 218.47d | start no earlier than 2026-05-20 09:00 | ТО; Некрасов А | 2h |  |
| 2774 | 12.1.15.7 | **Компрессор 1 цех** | 100.12d? | 2026-06-07 09:00 A | 2026-10-14 10:00 | 18% | 81.92d? | 105.47d |  | ТО | 756h | 112.4h |
| 2775 | 12.1.15.7.1 | продувка радиаторов осушителя и компрессора, слив конденсата | 1h | 2026-06-07 09:00 A | 2026-06-08 10:00 A | 100% |  |  | start no earlier than 2026-06-07 09:00 | Дедов В | 1h | 1h |
| 2776 | 12.1.15.7.2 | продувка радиаторов осушителя и компрессора, слив конденсата | 1h | 2026-10-14 09:00 | 2026-10-14 10:00 |  |  | 105.47d | start no earlier than 2026-10-14 09:00 | Дедов В | 1h |  |
| 2777 | 12.1.15.7.3 | продувка радиаторов осушителя и компрессора, слив конденсата | 1h | 2026-08-29 09:00 A | 2026-08-31 10:00 A | 100% |  |  | start no earlier than 2026-08-29 09:00 | Дедов В | 1h | 1h |
| 2778 | 12.1.15.7.4 | <Новая задача> | 1d? | 2026-08-28 09:00 | 2026-08-28 18:00 |  |  | 145.59d | start no earlier than 2026-08-28 08:00 |  |  |  |
| 2779 | 12.1.15.8 | осушитель 1 цех | 2h | 2024-04-04 09:00 | 2024-04-04 11:00 |  |  | 772.34d | start no earlier than 2023-12-28 09:00 | ТО | 2h |  |
| 2780 | 12.1.15.9 | осушитель 1 цех/слить конденсат | 30min | 2026-07-29 09:00 | 2026-07-29 09:30 |  |  | 168.53d | start no earlier than 2026-07-29 08:00 | Бундин В | 0.5h |  |
| 2781 | 12.1.15.10 | осушитель 1 цех/слить конденсат | 20min | 2026-10-14 09:00 | 2026-10-14 09:20 |  |  | 105.55d | start no earlier than 2026-10-14 09:00 | Дедов В | 0.33h |  |
| 2782 | 12.1.15.11 | бойлер 1 1 цех раковина | 2h | 2024-04-04 09:00 | 2024-04-04 11:00 |  |  | 772.34d | start no earlier than 2023-12-28 09:00 | ТО | 2h |  |
| 2783 | 12.1.15.12 | бойлер 2 1 цех раковина | 2h | 2024-04-04 09:00 | 2024-04-04 11:00 |  |  | 772.34d | start no earlier than 2023-12-28 09:00 | ТО | 2h |  |
| 2784 | 12.1.15.13 | бойлер 3 1 цех душ | 2h | 2024-04-04 09:00 | 2024-04-04 11:00 |  |  | 772.34d | start no earlier than 2023-12-28 09:00 | ТО | 2h |  |
| 2785 | 12.1.15.14 | насосная станция 1 цех | 2h | 2024-04-04 09:00 | 2024-04-04 11:00 |  |  | 772.34d | start no earlier than 2023-12-28 09:00 | ТО | 2h |  |
| 2786 | 12.1.15.15 | фильтр приточной вентиляции | 2h | 2024-04-04 09:00 | 2024-04-04 11:00 |  |  | 772.34d |  |  |  |  |
| 2787 | 12.1.15.16 | пульт управления вентиляцией, частототные приводы | 2h | 2024-04-04 09:00 | 2024-04-04 11:00 |  |  | 772.34d | start no earlier than 2023-12-28 09:00 | ТО | 2h |  |
| 2788 | 12.1.15.17 | кондиционер 1 продувка фильтров внутр / очистка наруж блок | 30min | 2026-06-02 09:00 A | 2026-06-02 09:30 A | 100% |  |  | start no earlier than 2026-06-02 09:00 | Некрасов А | 0.5h | 0.5h |
| 2789 | 12.1.15.18 | кондиционер 2 продувка фильтров внутр / очистка наруж блок | 30min | 2026-06-02 09:00 A | 2026-06-02 09:30 A | 100% |  |  | start no earlier than 2026-06-02 09:00 | Некрасов А | 0.5h | 0.5h |
| 2790 | 12.1.15.19 | кондиционер 3 продувка фильтров внутр / очистка наруж блок | 30min | 2026-06-02 09:00 A | 2026-06-02 09:30 A | 100% |  |  | start no earlier than 2026-06-02 09:00 | Некрасов А | 0.5h | 0.5h |
| 2791 | 12.1.15.20 | кондиционер 1 продувка фильтров внутр / очистка наруж блок (керхер взять у Мейхера) | 30min | 2026-06-10 09:00 | 2026-06-10 09:30 |  |  | 203.53d | start no earlier than 2026-06-10 09:00 | Некрасов А; Дедов В | 1h |  |
| 2792 | 12.1.15.21 | кондиционер 2 продувка фильтров внутр / очистка наруж блок (керхер взять у Мейхера) | 30min | 2026-06-10 09:00 | 2026-06-10 09:30 |  |  | 203.53d | start no earlier than 2026-06-10 09:00 | Некрасов А; Дедов В | 1h |  |
| 2793 | 12.1.15.22 | кондиционер 3 продувка фильтров внутр / очистка наруж блок (керхер взять у Мейхера) | 30min | 2026-06-10 09:00 | 2026-06-10 09:30 |  |  | 203.53d | start no earlier than 2026-06-10 09:00 | Некрасов А; Дедов В | 1h |  |
| 2794 | 12.1.16 | электроштабелер упаковка | 2h | 2023-12-28 09:00 | 2023-12-28 11:00 |  |  | 842.34d | start no earlier than 2023-12-28 09:00 | ТО | 2h |  |
| 2795 | 12.1.17 | электроштабелер навески | 2h | 2023-12-28 09:00 | 2023-12-28 11:00 |  |  | 842.34d | start no earlier than 2023-12-28 09:00 | ТО | 2h |  |

| ID | WBS | Task | Duration | Start | Finish | Complete | Remaining | Total slack | Constraint | Resources | Work | Actual work |
| --- | --- | --- | --- | --- | --- | --- | --- | --- | --- | --- | --- | --- |
| 2796 | 12.1.18 | **Квадропак** | 0.12d | 2026-10-07 09:00 | 2026-10-07 10:00 |  |  | 110.47d |  |  | 1h |  |
| 2797 | 12.1.18.1 | Смазка качающихся шарниров подачи пакета и сброса | 1h | 2026-10-07 09:00 | 2026-10-07 10:00 |  |  | 110.47d | start no earlier than 2026-10-07 09:00 | Тимофеев В | 1h |  |
| 2798 | 12.2 | **2 цех** | 772.25d? | 2023-12-28 09:00 A | 2026-12-02 11:00 | 66% | 261.99d? | 70.34d |  |  | 18393h | 15460.4h |
| 2799 | 12.2.1 | обдув пыли с вентиляции и балки кровли зона жир + экструдер + упаковка | 3h | 2026-08-20 09:00 A | 2026-08-20 12:00 A | 100% |  |  | start no earlier than 2026-08-20 09:00 | Некрасов А; Тимофеев В | 6h | 6h |
| 2800 | 12.2.2 | **прекондицинер экструдера** | 653.5d? | 2024-04-18 09:00 A | 2026-10-08 13:00 | 85% | 98.64d? | 109.09d |  |  | 30.5h | 22.5h |
| 2801 | 12.2.2.1 | замена заднего подшипника ведомый вал | 8h | 2026-05-26 09:00 A | 2026-05-26 18:00 A | 100% |  |  | start no earlier than 2026-05-26 09:00 | Тимофеев В | 8h | 8h |
| 2802 | 12.2.2.2 | замена подшипников | 1h | 2024-04-18 09:00 A | 2024-04-18 10:00 A | 100% |  |  | start no earlier than 2024-04-18 08:00 | Тимофеев В | 1h | 1h |
| 2803 | 12.2.2.3 | Ревизия масла редуктора | 30min | 2024-04-18 09:00 A | 2024-04-18 09:30 A | 100% |  |  | start no earlier than 2024-04-18 08:00 | Тимофеев В | 0.5h | 0.5h |
| 2804 | 12.2.2.4 | контроль крепления лопаток | 30min | 2026-05-21 09:00 A | 2026-05-21 09:30 A | 100% |  |  | start no earlier than 2026-03-05 09:00 | Тимофеев В | 0.5h | 0.5h |
| 2805 | 12.2.2.5 | шприцевание подшипников | 1h | 2026-05-21 08:00 A | 2026-05-21 10:00 A | 100% |  |  | start no earlier than 2026-05-21 08:00 | Тимофеев В | 1h | 1h |
| 2806 | 12.2.2.6 | Ревизия масла редуктора | 15min | 2026-07-21 09:00 A | 2026-07-21 09:15 A | 100% |  |  | start no earlier than 2026-07-21 09:00 | Труфанов А | 0.25h | 0.25h |
| 2807 | 12.2.2.7 | шприцевание подшипников | 30min | 2026-07-21 09:00 A | 2026-07-21 09:30 A | 100% |  |  | start no earlier than 2026-07-21 09:00 | Труфанов А | 0.5h | 0.5h |
| 2808 | 12.2.2.8 | Осмотр подшипников | 15min | 2026-07-30 09:00 A | 2026-07-30 09:15 A | 100% |  |  | start no earlier than 2026-07-30 09:00 | Тимофеев В | 0.25h | 0.25h |
| 2809 | 12.2.2.9 | Осмотр подшипников | 1d? | 2026-08-06 09:00 A | 2026-08-06 18:00 A | 100% |  |  | start no earlier than 2026-08-06 09:00 | Бундин В | 8h | 8h |
| 2810 | 12.2.2.10 | Осмотр подшипников / смазка / по необходимости замена | 1h | 2026-08-13 09:00 A | 2026-08-13 10:00 A | 100% |  |  | start no earlier than 2026-08-13 09:00 | Некрасов А | 1h | 1h |
| 2811 | 12.2.2.11 | Осмотр подшипников / смазка | 15min | 2026-08-20 09:00 A | 2026-08-20 09:15 A | 100% |  |  | start no earlier than 2026-08-20 09:00 | Некрасов А | 0.25h | 0.25h |
| 2812 | 12.2.2.12 | Замена водяного фильтра на прекондиционере/парогенератор | 15min | 2026-09-03 09:00 A | 2026-09-03 09:15 A | 100% |  |  | start no earlier than 2026-09-03 09:00 | Труфанов А | 0.25h | 0.25h |
| 2813 | 12.2.2.13 | Осмотр подшипников / смазка | 15min | 2026-09-17 09:00 A | 2026-09-17 09:15 A | 100% |  |  | start no earlier than 2026-09-17 09:00 | Некрасов А | 0.25h | 0.25h |
| 2814 | 12.2.2.14 | Осмотр подшипников / смазка | 15min | 2026-09-24 09:00 A | 2026-09-24 09:15 A | 100% |  |  | start no earlier than 2026-09-24 09:00 | Некрасов А | 0.25h | 0.25h |
| 2815 | 12.2.2.15 | Ревизия масла редуктора | 15min | 2026-09-24 09:00 A | 2026-09-24 09:15 A | 100% |  |  | start no earlier than 2026-09-24 09:00 | Некрасов А | 0.25h | 0.25h |
| 2816 | 12.2.2.16 | Ревизия масла редуктора/осмотр подшипников/ смазка при необходимости | 15min | 2026-09-29 09:00 A | 2026-09-29 09:15 A | 100% |  |  | start no earlier than 2026-09-29 08:00 | Бундин В | 0.25h | 0.25h |
| 2817 | 12.2.2.17 | Замена редуктора прекондиционера | 4h | 2026-10-08 09:00 | 2026-10-08 13:00 |  |  | 109.09d | start no earlier than 2026-10-08 09:00 | Труфанов А; Некрасов А | 8h |  |
| 2818 | 12.2.3 | **парогенератор** | 653d | 2024-04-18 10:00 A | 2026-10-08 10:00 | 88% | 77.74d | 109.47d |  |  | 22.5h | 18.5h |
| 2819 | 12.2.3.1 | читска | 1h | 2024-04-18 10:00 A | 2024-04-18 11:00 A | 100% |  |  | start no earlier than 2024-04-18 08:00 | Тимофеев В | 1h | 1h |
| 2820 | 12.2.3.2 | замена гильзы | 1h | 2024-04-18 10:00 A | 2024-04-18 11:00 A | 100% |  |  | start no earlier than 2024-04-18 08:00 | Тимофеев В | 1h | 1h |
| 2821 | 12.2.3.3 | чистка | 2h | 2026-03-05 09:30 A | 2026-03-05 11:30 A | 100% |  |  | start no earlier than 2026-03-04 09:00 | Бундин В | 2h | 2h |
| 2822 | 12.2.3.4 | прорвеп срабатывания защитного клапана | 10min | 2026-03-05 09:30 A | 2026-03-05 09:40 A | 100% |  |  | start no earlier than 2024-10-03 09:00 | Бундин В | 0.17h | 0.17h |
| 2823 | 12.2.3.5 | читска | 1h | 2026-03-19 09:00 A | 2026-03-19 10:00 A | 100% |  |  | start no earlier than 2026-03-19 09:00 | Тимофеев В | 1h | 1h |
| 2824 | 12.2.3.6 | чистка | 1h | 2026-03-12 09:00 A | 2026-03-12 10:00 A | 100% |  |  | start no earlier than 2026-03-12 09:00 | Бундин В; Тимофеев В | 2h | 2h |
| 2825 | 12.2.3.7 | чистка | 1h | 2026-05-14 09:00 A | 2026-05-14 10:00 A | 100% |  |  | start no earlier than 2026-05-14 09:00 | Некрасов А | 1h | 1h |
| 2826 | 12.2.3.8 | чистка | 2h | 2026-07-14 09:00 A | 2026-07-14 11:00 A | 100% |  |  | start no earlier than 2026-07-14 09:00 | Некрасов А | 2h | 2h |
| 2827 | 12.2.3.9 | Чистка | 1h | 2026-07-30 09:00 A | 2026-07-30 10:00 A | 100% |  |  | start no earlier than 2026-07-30 09:00 | Бундин В | 1h | 1h |
| 2828 | 12.2.3.10 | Чистка | 1h | 2026-08-06 09:00 A | 2026-08-06 10:00 A | 100% |  |  | start no earlier than 2026-08-06 09:00 | Тимофеев В | 1h | 1h |
| 2829 | 12.2.3.11 | Чистка | 1h | 2026-08-13 09:00 A | 2026-08-13 10:00 A | 100% |  |  | start no earlier than 2026-08-13 09:00 | Некрасов А | 1h | 1h |
| 2830 | 12.2.3.12 | Чистка | 1h | 2026-08-19 09:00 A | 2026-08-19 10:00 A | 100% |  |  | start no earlier than 2026-08-19 09:00 | Некрасов А | 1h | 1h |
| 2831 | 12.2.3.13 | Чистка | 1h | 2026-09-02 08:00 A | 2026-09-02 10:00 A | 100% |  |  | start no earlier than 2026-09-02 08:00 | Бобренок В | 1h | 1h |
| 2832 | 12.2.3.14 | Убрать грязь с парогенератора, привести в порядок внешний вид, где что отлеплено, прилепить | 20min | 2026-09-03 09:00 A | 2026-09-03 09:20 A | 100% |  |  | start no earlier than 2026-09-03 09:00 | Тимофеев В | 0.33h | 0.33h |
| 2833 | 12.2.3.15 | Чистка | 1h | 2026-09-09 09:00 A | 2026-09-09 10:00 A | 100% |  |  | start no earlier than 2026-09-09 08:00 | Тимофеев В | 1h | 1h |
| 2834 | 12.2.3.16 | Чистка | 1h | 2026-09-17 09:00 A | 2026-09-17 10:00 A | 100% |  |  | start no earlier than 2026-09-17 09:00 | Тимофеев В | 1h | 1h |
| 2835 | 12.2.3.17 | Чистка | 1h | 2026-09-23 09:00 A | 2026-09-23 10:00 A | 100% |  |  | start no earlier than 2026-09-23 09:00 | Дедов В | 1h | 1h |
| 2836 | 12.2.3.18 | Чистка | 1h | 2026-09-29 09:00 A | 2026-09-29 10:00 A | 100% |  |  | start no earlier than 2026-09-29 08:00 |  |  |  |
| 2837 | 12.2.3.19 | Чистка как остановятся, если не получится, передать по смене труфанову | 1h | 2026-10-07 09:00 | 2026-10-07 10:00 |  |  | 110.47d | start no earlier than 2026-10-07 08:00 | Бундин В | 1h |  |
| 2838 | 12.2.3.20 | Устранить травление пара между сбросником (клапан) и краном | 30min | 2026-10-08 09:00 | 2026-10-08 09:30 |  |  | 109.53d | start no earlier than 2026-10-08 09:00 | Труфанов А; Некрасов А | 1h |  |
| 2839 | 12.2.3.21 | Проверить гофротрубу на травление под площадкой, где стоит система из кранов/устранить/заменить | 1h | 2026-10-08 09:00 | 2026-10-08 10:00 |  |  | 109.47d | start no earlier than 2026-10-08 09:00 | Труфанов А; Некрасов А | 2h |  |

| ID | WBS | Task | Duration | Start | Finish | Predecessors | Complete | Remaining | Total slack | Constraint | Resources | Work | Actual work |
| --- | --- | --- | --- | --- | --- | --- | --- | --- | --- | --- | --- | --- | --- |
| 2840 | 12.2.4 | **привод сетки ПЕЧИ сушки** | 692.25d | 2024-04-18 08:00 A | 2026-12-02 11:00 |  | 84% | 111.25d | 70.34d |  |  | 9.33h | 7.83h |
| 2841 | 12.2.4.1 | прорверка масла редуктор / натяжка цепи/ ремень | 30min | 2024-04-18 08:00 A | 2024-04-18 09:30 A |  | 100% |  |  | start no earlier than 2024-04-18 08:00 | Тимофеев В | 0.5h | 0.5h |
| 2842 | 12.2.4.2 | прорверка масла редуктор / натяжка цепи/ ремень | 30min | 2026-03-05 09:00 A | 2026-03-05 09:30 A |  | 100% |  |  | start no earlier than 2026-03-05 09:00 | Тимофеев В | 0.5h | 0.5h |
| 2843 | 12.2.4.3 | прорверка масла редуктор / натяжка цепи/ ремень | 30min | 2026-03-19 09:00 A | 2026-03-19 09:30 A |  | 100% |  |  | start no earlier than 2026-03-19 09:00 | Тимофеев В | 0.5h | 0.5h |
| 2844 | 12.2.4.4 | прорверка масла редуктор / натяжка цепи/ ремень/осмотр сетки | 30min | 2026-07-14 09:00 A | 2026-07-14 09:30 A |  | 100% |  |  | start no earlier than 2026-07-14 09:00 | Труфанов А | 0.5h | 0.5h |
| 2845 | 12.2.4.5 | прорверка масла редуктор / натяжка цепи/ ремень/осмотр сетки | 30min | 2026-07-30 09:00 A | 2026-07-30 09:30 A |  | 100% |  |  | start no earlier than 2026-07-30 09:00 | Труфанов А | 0.5h | 0.5h |
| 2846 | 12.2.4.6 | прорверка масла редуктор / натяжка цепи/ ремень/осмотр сетки | 20min | 2026-08-13 09:00 A | 2026-08-13 09:20 A |  | 100% |  |  | start no earlier than 2026-08-13 09:00 | Некрасов А | 0.33h | 0.33h |
| 2847 | 12.2.4.7 | прорверка масла редуктор / натяжка цепи/ ремень/осмотр сетки | 20min | 2026-08-20 09:00 A | 2026-08-20 09:20 A |  | 100% |  |  | start no earlier than 2026-08-20 09:00 | Некрасов А | 0.33h | 0.33h |
| 2848 | 12.2.4.8 | прорверка масла редуктор / натяжка цепи/ ремень/осмотр сетки | 20min | 2026-08-20 09:00 A | 2026-08-20 09:20 A |  | 100% |  |  | start no earlier than 2026-08-20 09:00 | Некрасов А | 0.33h | 0.33h |
| 2849 | 12.2.4.9 | прорверка масла редуктор / натяжка цепи/ ремень/осмотр сетки | 20min | 2026-09-09 09:00 A | 2026-09-09 09:20 A |  | 100% |  |  | start no earlier than 2026-09-09 08:00 | Бобренок В | 0.33h | 0.33h |
| 2850 | 12.2.4.10 | ремонт шестерни привода - наварить | 1h | 2026-09-16 09:00 A | 2026-09-16 10:00 A |  | 100% |  |  | start no earlier than 2026-09-16 09:00 | Бундин В | 1h | 1h |
| 2851 | 12.2.4.11 | смазка цепей пищ смазкой | 1h | 2026-09-16 09:00 A | 2026-09-16 10:00 A |  | 100% |  |  | start no earlier than 2026-09-16 09:00 | Бобренок В | 1h | 1h |
| 2852 | 12.2.4.12 | Снятие шестерен привода (отнести домоводову) | 2h | 2026-09-17 09:00 A | 2026-09-17 11:00 A |  | 100% |  |  | start no earlier than 2026-09-17 09:00 | Труфанов А | 2h | 2h |
| 2853 | 12.2.4.13 | смазка цепей пищ смазкой по графику 3 мес | 1h | 2026-12-02 10:00 | 2026-12-02 11:00 | 2851FS+3mo |  |  | 70.34d | start no earlier than 2026-09-16 09:00 | Бобренок В | 1h |  |
| 2854 | 12.2.4.14 | прорверка масла редуктор / натяжка цепи/ ремень/осмотр сетки | 30min | 2026-10-08 09:00 | 2026-10-08 09:30 |  |  |  | 109.53d | start no earlier than 2026-10-08 09:00 | Дедов В | 0.5h |  |
| 2855 | 12.2.5 | **блок тэнов сушки** | 653.12d | 2024-04-18 08:00 A | 2026-10-08 10:00 |  | 89% | 72.57d | 109.47d |  |  | 13h | 12h |
| 2856 | 12.2.5.1 | вскрыть все блоки | 1h | 2024-04-18 08:00 A | 2024-04-18 10:00 A |  | 100% |  |  | start no earlier than 2024-04-18 08:00 | Тимофеев В | 1h | 1h |
| 2857 | 12.2.5.2 | ревизия / замена критичных | 4h | 2024-04-18 09:00 A | 2024-04-18 13:00 A |  | 100% |  |  | start no earlier than 2024-04-18 08:00 | Некрасов А; Черепанов И | 8h | 8h |
| 2858 | 12.2.5.3 | ревизия | 1h | 2026-03-19 09:00 A | 2026-03-19 10:00 A |  | 100% |  |  | start no earlier than 2026-03-19 09:00 | Бундин В | 1h | 1h |
| 2859 | 12.2.5.4 | ревизия | 1h | 2026-05-14 09:00 A | 2026-05-14 10:00 A |  | 100% |  |  | start no earlier than 2026-05-14 09:00 | Труфанов А | 1h | 1h |
| 2860 | 12.2.5.5 | ревизия перемычек | 1h | 2026-08-13 09:00 A | 2026-08-13 10:00 A |  | 100% |  |  | start no earlier than 2026-08-13 09:00 | Некрасов А | 1h | 1h |
| 2861 | 12.2.5.6 | ревизия перемычек | 1h | 2026-10-08 09:00 | 2026-10-08 10:00 |  |  |  | 109.47d | start no earlier than 2026-10-08 09:00 | Дедов В | 1h |  |
| 2862 | 12.2.6 | **смеситель СМ-1500** | 155.02d | 2026-03-05 09:00 A | 2026-09-29 09:10 A |  | 100% |  |  |  |  | 7.33h | 7.33h |
| 2863 | 12.2.6.1 | контроль масла | 15min | 2026-03-05 09:00 A | 2026-03-05 09:15 A |  | 100% |  |  | start no earlier than 2026-03-05 09:00 | Тимофеев В | 0.25h | 0.25h |
| 2864 | 12.2.6.2 | контроль масла | 15min | 2026-03-05 09:00 A | 2026-03-05 09:15 A |  | 100% |  |  | start no earlier than 2026-03-05 09:00 | Некрасов А | 0.25h | 0.25h |
| 2865 | 12.2.6.3 | замена сальника | 4h | 2026-04-16 09:00 A | 2026-04-16 13:00 A |  | 100% |  |  | start no earlier than 2026-04-16 09:00 | Тимофеев В | 4h | 4h |
| 2866 | 12.2.6.4 | контроль масла | 15min | 2026-07-30 09:00 A | 2026-07-30 09:15 A |  | 100% |  |  | start no earlier than 2026-07-30 09:00 | Тимофеев В | 0.25h | 0.25h |
| 2867 | 12.2.6.5 | ревизия подшипникой красного смесителя, просыпается мука со стороны редуктора | 1h | 2026-08-13 09:00 A | 2026-08-13 10:00 A |  | 100% |  |  | start no earlier than 2026-08-13 09:00 | Тимофеев В | 1h | 1h |
| 2868 | 12.2.6.6 | ревизия подшипникой красного смесителя, просыпается мука со стороны редуктора | 1h | 2026-08-27 09:00 A | 2026-08-27 10:00 A |  | 100% |  |  | start no earlier than 2026-08-27 09:00 | Тимофеев В | 1h | 1h |
| 2869 | 12.2.6.7 | контроль масла | 15min | 2026-09-03 09:00 A | 2026-09-03 09:15 A |  | 100% |  |  | start no earlier than 2026-09-03 09:00 | Тимофеев В | 0.25h | 0.25h |
| 2870 | 12.2.6.8 | контроль масла | 10min | 2026-09-09 09:00 A | 2026-09-09 09:10 A |  | 100% |  |  | start no earlier than 2026-09-09 08:00 | Бобренок В | 0.17h | 0.17h |
| 2871 | 12.2.6.9 | Осмотр подшипников/контроль масла | 10min | 2026-09-29 09:00 A | 2026-09-29 09:10 A |  | 100% |  |  | start no earlier than 2026-09-29 09:00 | Бундин В | 0.17h | 0.17h |

| ID | WBS | Task | Duration | Start | Finish | Complete | Remaining | Total slack | Constraint | Resources | Work | Actual work |
| --- | --- | --- | --- | --- | --- | --- | --- | --- | --- | --- | --- | --- |
| 2872 | 12.2.7 | **нория 2 выгрузки смесителя** | 163.12d | 2026-03-05 09:00 A | 2026-10-08 10:00 | 88% | 20.25d | 109.47d |  | ТО | 69.58h | 60.13h |
| 2873 | 12.2.7.1 | смазка подшипников | 30min | 2026-03-05 09:00 A | 2026-03-05 09:30 A | 100% |  |  | start no earlier than 2026-03-05 09:00 | Бундин В | 0.5h | 0.5h |
| 2874 | 12.2.7.2 | Осмотр подшипников/смазка по необходимости | 30min | 2026-07-30 09:00 A | 2026-07-30 09:30 A | 100% |  |  | start no earlier than 2026-07-30 09:00 | Бундин В | 0.5h | 0.5h |
| 2875 | 12.2.7.3 | ревизия крепления редуктора | 15min | 2026-03-05 09:00 A | 2026-03-05 09:15 A | 100% |  |  | start no earlier than 2026-03-05 09:00 | Бундин В | 0.25h | 0.25h |
| 2876 | 12.2.7.4 | ревизия ленты, обрезать нитки | 4h | 2026-03-26 09:00 A | 2026-03-26 13:00 A | 100% |  |  | start no earlier than 2026-03-26 09:00 | Тимофеев В | 4h | 4h |
| 2877 | 12.2.7.5 | вскрыть для чистки | 10min | 2026-05-19 09:00 A | 2026-05-19 09:10 A | 100% |  |  | start no earlier than 2026-05-21 09:00 | Труфанов А | 0.17h | 0.17h |
| 2878 | 12.2.7.6 | Вскрыть, осмотреть ленту (держится на одном ковше, закрепили на доп болты) | 30min | 2026-09-03 09:00 A | 2026-09-03 09:30 A | 100% |  |  | start no earlier than 2026-09-03 09:00 | Тимофеев В | 0.5h | 0.5h |
| 2879 | 12.2.7.7 | вскрыть для чистки, осмотреть ленту, закрыить после чистки | 10min | 2026-08-13 09:00 A | 2026-08-13 09:10 A | 100% |  |  | start no earlier than 2026-08-13 09:00 | Труфанов А | 0.17h | 0.17h |
| 2880 | 12.2.7.8 | Ревизия ленты, контроль соединения | 30min | 2026-09-17 09:00 A | 2026-09-17 09:30 A | 100% |  |  | start no earlier than 2026-09-17 09:00 | Тимофеев В | 0.5h | 0.5h |
| 2881 | 12.2.7.9 | ремонт стыка ленты - ревитзия, ремонт продлить | 4h | 2026-09-24 09:00 A | 2026-09-24 13:00 A | 100% |  |  | start no earlier than 2026-09-24 09:00 | Тимофеев В; Бундин В | 8h | 8h |
| 2882 | 12.2.7.10 | Ревизия ленты, контроль соединения | 30min | 2026-10-08 09:00 | 2026-10-08 09:30 |  |  | 109.53d | start no earlier than 2026-10-08 09:00 | Труфанов А; Некрасов А | 1h |  |
| 2883 | 12.2.7.11 | Проверка мотор редуктора на верху, почему трясет/устранить | 1h | 2026-10-08 09:00 | 2026-10-08 10:00 |  |  | 109.47d | start no earlier than 2026-10-08 09:00 | Труфанов А; Некрасов А | 2h |  |
| 2884 | 12.2.8 | **бункер-накопитель с шнековой разкгрузкой синий** | 113.01d | 2026-05-14 09:00 A | 2026-10-08 09:05 | 99% | 0.92d | 109.58d |  |  | 10.25h | 10.17h |
| 2885 | 12.2.8.1 | смазка подшипников, ревизия редуктора (нужно разбирать все для смазки). Задний | 4h | 2026-05-14 09:00 A | 2026-05-14 13:00 A | 100% |  |  | start no earlier than 2026-05-14 09:00 | Тимофеев В | 4h | 4h |
| 2886 | 12.2.8.2 | смазка подшипников, ревизия редуктора (нужно разбирать все для смазки). Передний | 4h | 2026-05-28 09:00 A | 2026-05-28 13:00 A | 100% |  |  | start no earlier than 2026-05-28 09:00 | Бундин В | 4h | 4h |
| 2887 | 12.2.8.3 | Осмотр редуктора со стороны мойки, скрипит | 1h | 2026-08-13 09:00 A | 2026-08-13 10:00 A | 100% |  |  | start no earlier than 2026-08-13 09:00 | Тимофеев В | 1h | 1h |
| 2888 | 12.2.8.4 | Осмотр | 5min | 2026-09-03 09:00 A | 2026-09-03 09:05 A | 100% |  |  | start no earlier than 2026-09-03 09:00 | Тимофеев В | 0.08h | 0.08h |
| 2889 | 12.2.8.5 | перенос датчика / доработать лопатки - что бы останавливался раньше, без спресовывания шнеком | 1h | 2026-09-24 09:00 A | 2026-09-24 10:00 A | 100% |  |  | start no earlier than 2026-09-24 09:00 | Труфанов А | 1h | 1h |
| 2890 | 12.2.8.6 | Осмотр | 5min | 2026-09-24 09:00 A | 2026-09-24 09:05 A | 100% |  |  | start no earlier than 2026-09-24 09:00 | Труфанов А | 0.08h | 0.08h |
| 2891 | 12.2.8.7 | Осмотр | 5min | 2026-10-08 09:00 | 2026-10-08 09:05 |  |  | 109.58d | start no earlier than 2026-10-08 09:00 | Дедов В | 0.08h |  |
| 2892 | 12.2.9 | **питатель экструдера** | 140.12d | 2026-03-26 09:00 A | 2026-09-29 10:00 A | 100% |  |  |  |  | 22h | 22h |
| 2893 | 12.2.9.1 | замена сальников питателя, сыпит муку | 4h | 2026-07-22 09:00 A | 2026-07-22 13:00 A | 100% |  |  | start no earlier than 2026-07-22 09:00 | Труфанов А | 4h | 4h |
| 2894 | 12.2.9.2 | ревизия подшипников, редутора, привода. Разборка/сборка (нужно разбирать) | 1h | 2026-03-26 09:00 A | 2026-03-26 10:00 A | 100% |  |  | start no earlier than 2026-03-26 09:00 | Тимофеев В | 1h | 1h |
| 2895 | 12.2.9.3 | ревизия подшипников, редутора, привода. Разборка/сборка (нужно разбирать) | 1h | 2026-08-19 09:00 A | 2026-08-19 10:00 A | 100% |  |  | start no earlier than 2026-08-19 09:00 | Тимофеев В | 1h | 1h |
| 2896 | 12.2.9.4 | замена шетсерен и подшипников узла. Поставили новый комплект | 4h | 2026-04-03 08:00 A | 2026-04-03 13:00 A | 100% |  |  | start no earlier than 2026-04-03 08:00 | Тимофеев В | 4h | 4h |
| 2897 | 12.2.9.5 | ревизия шестерни мал редуктора | 1h | 2026-04-16 09:00 A | 2026-04-16 10:00 A | 100% |  |  | start no earlier than 2026-04-16 09:00 | Тимофеев В | 1h | 1h |
| 2898 | 12.2.9.6 | ревизия шестерни мал редуктора | 2h | 2026-08-13 09:00 A | 2026-08-13 11:00 A | 100% |  |  | start no earlier than 2026-08-13 09:00 | Некрасов А; Зорькин В | 4h | 4h |
| 2899 | 12.2.9.7 | ревизия шестерни мал редуктора | 2h | 2026-08-27 09:00 A | 2026-08-27 11:00 A | 100% |  |  | start no earlier than 2026-08-27 09:00 | Некрасов А; Зорькин В | 4h | 4h |
| 2900 | 12.2.9.8 | ревизия шестерен питателя | 1h | 2026-09-03 09:00 A | 2026-09-03 10:00 A | 100% |  |  | start no earlier than 2026-09-03 09:00 | Некрасов А | 1h | 1h |
| 2901 | 12.2.9.9 | Ревизия шестерен и подшипников | 1h | 2026-09-17 09:00 A | 2026-09-17 10:00 A | 100% |  |  | start no earlier than 2026-09-17 09:00 | Тимофеев В | 1h | 1h |
| 2902 | 12.2.9.10 | Ревизия шестерен и подшипников | 1h | 2026-09-29 09:00 A | 2026-09-29 10:00 A | 100% |  |  | start no earlier than 2026-09-29 09:00 | Бундин В | 1h | 1h |

| ID | WBS | Task | Duration | Start | Finish | Predecessors | Complete | Remaining | Total slack | Constraint | Resources | Work | Actual work |
| --- | --- | --- | --- | --- | --- | --- | --- | --- | --- | --- | --- | --- | --- |
| 2903 | 12.2.10 | **привод прекондиционера** | 163.02d | 2026-03-05 09:00 A | 2026-10-08 09:10 |  | 95% | 8.81d | 109.57d |  |  | 10.5h | 9.83h |
| 2904 | 12.2.10.1 | проверка масла | 5min | 2026-03-05 09:00 A | 2026-03-05 09:05 A |  | 100% |  |  | start no earlier than 2026-03-05 09:00 | Тимофеев В | 0.08h | 0.08h |
| 2905 | 12.2.10.2 | контроль крепления шестерен | 5min | 2026-03-05 09:00 A | 2026-03-05 09:05 A |  | 100% |  |  | start no earlier than 2026-03-05 09:00 | Тимофеев В | 0.08h | 0.08h |
| 2906 | 12.2.10.3 | ревизия подшипников и стопорных винтов | 30min | 2026-03-05 09:00 A | 2026-03-05 09:30 A |  | 100% |  |  | start no earlier than 2026-03-05 09:00 | Бундин В | 0.5h | 0.5h |
| 2907 | 12.2.10.4 | Осмотр шестерён(стоит звон), подшипников, сальников | 30min | 2026-09-03 09:00 A | 2026-09-03 09:30 A |  | 100% |  |  | start no earlier than 2026-09-03 09:00 | Тимофеев В | 0.5h | 0.5h |
| 2908 | 12.2.10.5 | Замена подшипников кореных и передних | 4h | 2026-09-09 09:00 A | 2026-09-09 13:00 A |  | 100% |  |  | start no earlier than 2026-09-09 08:00 | Труфанов А; Некрасов А | 8h | 8h |
| 2909 | 12.2.10.6 | Осмотр подшипников, муфты, шестерен | 20min | 2026-09-17 09:00 A | 2026-09-17 09:20 A |  | 100% |  |  | start no earlier than 2026-09-17 09:00 | Некрасов А | 0.33h | 0.33h |
| 2910 | 12.2.10.7 | Осмотр подшипников, муфты, шестерен | 20min | 2026-09-29 09:00 A | 2026-09-29 09:20 A |  | 100% |  |  | start no earlier than 2026-09-29 08:00 | Бундин В | 0.33h | 0.33h |
| 2911 | 12.2.10.8 | Осмотр подшипников, муфты, шестерен | 10min | 2026-10-08 09:00 | 2026-10-08 09:10 |  |  |  | 109.57d | start no earlier than 2026-10-08 09:00 | Труфанов А; Некрасов А | 0.33h |  |
| 2912 | 12.2.10.9 | Поставить защитный кожух | 10min | 2026-10-08 09:00 | 2026-10-08 09:10 |  |  |  | 109.57d | start no earlier than 2026-10-08 09:00 | Труфанов А; Некрасов А | 0.33h |  |
| 2913 | 12.2.11 | **мотор-редуктор привод шнеков** | 43.06d | 2026-08-20 09:00 A | 2026-10-08 09:30 |  | 24% | 32.81d | 109.53d |  |  | 4h | 0.83h |
| 2914 | 12.2.11.1 | замена масла | 2h | 2026-08-20 09:00 | 2026-08-20 11:00 |  |  |  | 152.34d | start no earlier than 2026-08-20 09:00 | Тимофеев В | 2h |  |
| 2915 | 12.2.11.2 | Проверка масла (долил уровень) | 10min | 2026-09-03 09:00 A | 2026-09-03 09:10 A |  | 100% |  |  | start no earlier than 2026-09-03 09:00 | Труфанов А | 0.17h | 0.17h |
| 2916 | 12.2.11.3 | Проверка масла | 10min | 2026-09-09 09:00 A | 2026-09-09 09:10 A |  | 100% |  |  | start no earlier than 2026-09-09 08:00 | Бобренок В | 0.17h | 0.17h |
| 2917 | 12.2.11.4 | Проверка масла | 10min | 2026-09-17 09:00 A | 2026-09-17 09:10 A |  | 100% |  |  | start no earlier than 2026-09-17 09:00 | Некрасов А | 0.17h | 0.17h |
| 2918 | 12.2.11.5 | Проверка масла | 10min | 2026-09-24 09:00 A | 2026-09-24 09:10 A |  | 100% |  |  | start no earlier than 2026-09-24 09:00 | Некрасов А | 0.17h | 0.17h |
| 2919 | 12.2.11.6 | Проверка масла | 10min | 2026-09-29 09:00 A | 2026-09-29 09:10 A |  | 100% |  |  | start no earlier than 2026-09-29 08:00 | Бундин В | 0.17h | 0.17h |
| 2920 | 12.2.11.7 | Проверка муфту соединенной цепью, есть сильный люфт, при выявлении откланений сообщить/устранить | 30min | 2026-10-08 09:00 | 2026-10-08 09:30 |  |  |  | 109.53d | start no earlier than 2026-10-08 09:00 | Труфанов А; Некрасов А | 1h |  |
| 2921 | 12.2.11.8 | Проверка масла | 10min | 2026-10-08 09:00 | 2026-10-08 09:10 |  |  |  | 109.57d | start no earlier than 2026-10-08 09:00 | Дедов В | 0.17h |  |
| 2922 | 12.2.12 | **редуктор шнеков экструдера - проверка масла** | 436.03d | 2025-02-17 09:00 A | 2026-10-08 09:15 |  | 93% | 29.87d | 109.56d |  |  | 6.08h | 5.67h |
| 2923 | 12.2.12.1 | чистка фильтра редуктора | 15min | 2026-03-05 09:00 A | 2026-03-05 09:15 A |  | 100% |  |  | start no earlier than 2026-03-05 09:00 | Тимофеев В | 0.25h | 0.25h |
| 2924 | 12.2.12.2 | контоль цепи муфты привода | 5min | 2026-03-05 09:15 A | 2026-03-05 09:20 A | 2923, 2925, 2926, 2928, 2932, 2933 | 100% |  |  | start no earlier than 2026-03-04 08:00 | Тимофеев В | 0.08h | 0.08h |
| 2925 | 12.2.12.3 | чистка фильтра редуктора | 15min | 2026-03-19 09:00 A | 2026-03-19 09:15 A |  | 100% |  |  | start no earlier than 2026-03-19 09:00 | Тимофеев В | 0.25h | 0.25h |
| 2926 | 12.2.12.4 | чистка фильтра редуктора | 15min | 2026-06-18 09:00 A | 2026-06-18 09:15 A |  | 100% |  |  | start no earlier than 2026-06-18 09:00 | Тимофеев В | 0.25h | 0.25h |
| 2927 | 12.2.12.5 | чистка фильтра редуктора | 30min | 2026-08-06 08:00 A | 2026-08-06 09:30 A |  | 100% |  |  | start no earlier than 2026-08-06 08:00 | Тимофеев В | 0.5h | 0.5h |
| 2928 | 12.2.12.6 | чистка фильтра редуктора | 15min | 2026-07-14 09:00 A | 2026-07-14 09:15 A |  | 100% |  |  | start no earlier than 2026-07-14 09:00 | Бундин В | 0.25h | 0.25h |
| 2929 | 12.2.12.7 | тэны и термпоры шнеков | 2h | 2025-02-17 09:00 A | 2025-02-17 11:00 A |  | 100% |  |  | start no earlier than 2025-02-17 09:00 | Дедов В | 2h | 2h |
| 2930 | 12.2.12.8 | проверка масла | 5min | 2026-08-06 09:00 A | 2026-08-06 09:05 A |  | 100% |  |  | start no earlier than 2026-08-06 09:00 | Тимофеев В | 0.08h | 0.08h |
| 2931 | 12.2.12.9 | Проверка масла | 10min | 2026-07-30 09:00 A | 2026-07-30 09:10 A |  | 100% |  |  | start no earlier than 2026-07-30 09:00 | Бундин В | 0.17h | 0.17h |
| 2932 | 12.2.12.10 | чистка фильтра редуктора | 15min | 2026-08-13 09:00 A | 2026-08-13 09:15 A |  | 100% |  |  | start no earlier than 2026-08-13 09:00 | Тимофеев В | 0.25h | 0.25h |
| 2933 | 12.2.12.11 | чистка фильтра редуктора | 15min | 2026-08-20 09:00 A | 2026-08-20 09:15 A |  | 100% |  |  | start no earlier than 2026-08-20 09:00 | Тимофеев В | 0.25h | 0.25h |
| 2934 | 12.2.12.12 | Чистка фильтра | 15min | 2026-09-03 09:00 A | 2026-09-03 09:15 A |  | 100% |  |  | start no earlier than 2026-09-03 09:00 | Труфанов А | 0.25h | 0.25h |
| 2935 | 12.2.12.13 | Чистка фильтра | 15min | 2026-09-09 09:00 A | 2026-09-09 09:15 A |  | 100% |  |  | start no earlier than 2026-09-09 08:00 | Бобренок В | 0.25h | 0.25h |
| 2936 | 12.2.12.14 | Проверка масла | 5min | 2026-09-09 09:00 A | 2026-09-09 09:05 A |  | 100% |  |  | start no earlier than 2026-09-09 08:00 | Бобренок В | 0.08h | 0.08h |
| 2937 | 12.2.12.15 | Проверка масла/чистка фильтра | 15min | 2026-09-17 09:00 A | 2026-09-17 09:15 A |  | 100% |  |  | start no earlier than 2026-09-17 09:00 | Некрасов А | 0.25h | 0.25h |
| 2938 | 12.2.12.16 | Чистка фильтра | 15min | 2026-09-24 09:00 A | 2026-09-24 09:15 A |  | 100% |  |  | start no earlier than 2026-09-24 09:00 | Некрасов А | 0.25h | 0.25h |
| 2939 | 12.2.12.17 | Чистка фильтра | 15min | 2026-09-29 09:00 A | 2026-09-29 09:15 A |  | 100% |  |  | start no earlier than 2026-09-29 08:00 | Бундин В | 0.25h | 0.25h |
| 2940 | 12.2.12.18 | Проверка масла | 10min | 2026-10-08 09:00 | 2026-10-08 09:10 |  |  |  | 109.57d | start no earlier than 2026-10-08 09:00 | Дедов В | 0.17h |  |
| 2941 | 12.2.12.19 | Чистка фильтра | 15min | 2026-10-08 09:00 | 2026-10-08 09:15 |  |  |  | 109.56d | start no earlier than 2026-10-08 09:00 | Дедов В | 0.25h |  |

| ID | WBS | Task | Duration | Start | Finish | Predecessors | Complete | Remaining | Total slack | Constraint | Resources | Work | Actual work |
| --- | --- | --- | --- | --- | --- | --- | --- | --- | --- | --- | --- | --- | --- |
| 2942 | 12.2.13 | **шкаф управления экструдером** | 163.02d | 2026-03-05 09:00 A | 2026-10-08 09:10 |  | 91% | 14.82d | 109.57d |  |  | 1.83h | 1.67h |
| 2943 | 12.2.13.1 | продувка частотного привода | 10min | 2026-03-05 09:00 A | 2026-03-05 09:10 A |  | 100% |  |  | start no earlier than 2026-03-05 09:00 | Труфанов А | 0.17h | 0.17h |
| 2944 | 12.2.13.2 | продувка частотного привода | 10min | 2026-08-06 09:00 A | 2026-08-06 09:10 A |  | 100% |  |  | start no earlier than 2026-08-06 09:00 | Бундин В | 0.17h | 0.17h |
| 2945 | 12.2.13.3 | уложить и закрепить провода | 5min | 2026-03-05 09:10 A | 2026-03-05 09:15 A | 2943, 2944, 2947, 2948, 2949, 2950 | 100% |  |  | start no earlier than 2026-03-04 08:00 | Труфанов А | 0.08h | 0.08h |
| 2946 | 12.2.13.4 | протяжка контактов | 5min | 2026-03-05 09:15 A | 2026-03-05 09:20 A | 2945 | 100% |  |  | start no earlier than 2026-03-04 08:00 | Труфанов А | 0.08h | 0.08h |
| 2947 | 12.2.13.5 | продувка частотного привода | 10min | 2026-03-19 09:00 A | 2026-03-19 09:10 A |  | 100% |  |  | start no earlier than 2026-03-19 09:00 | Дедов В | 0.17h | 0.17h |
| 2948 | 12.2.13.6 | продувка частотного привода | 10min | 2026-05-14 09:00 A | 2026-05-14 09:10 A |  | 100% |  |  | start no earlier than 2026-05-14 09:00 | Макаревич А | 0.17h | 0.17h |
| 2949 | 12.2.13.7 | продувка частотного привода | 10min | 2026-08-13 09:00 A | 2026-08-13 09:10 A |  | 100% |  |  | start no earlier than 2026-08-13 09:00 | Некрасов А | 0.17h | 0.17h |
| 2950 | 12.2.13.8 | продувка частотного привода | 10min | 2026-08-20 09:00 A | 2026-08-20 09:10 A |  | 100% |  |  | start no earlier than 2026-08-20 09:00 | Дедов В | 0.17h | 0.17h |
| 2951 | 12.2.13.9 | продувка частотного привода | 10min | 2026-09-03 09:00 A | 2026-09-03 09:10 A |  | 100% |  |  | start no earlier than 2026-09-03 09:00 | Труфанов А | 0.17h | 0.17h |
| 2952 | 12.2.13.10 | продувка частотного привода | 10min | 2026-09-17 09:00 A | 2026-09-17 09:10 A |  | 100% |  |  | start no earlier than 2026-09-17 09:00 | Некрасов А | 0.17h | 0.17h |
| 2953 | 12.2.13.11 | продувка частотного привода | 10min | 2026-09-29 09:00 A | 2026-09-29 09:10 A |  | 100% |  |  | start no earlier than 2026-09-29 09:00 | Бундин В | 0.17h | 0.17h |
| 2954 | 12.2.13.12 | продувка частотного привода | 10min | 2026-10-08 09:00 | 2026-10-08 09:10 |  |  |  | 109.57d | start no earlier than 2026-10-08 09:00 | Дедов В | 0.17h |  |
| 2955 | 12.2.14 | **пневотранспорт роторный питатель** | 140.04d | 2026-03-19 09:00 A | 2026-09-24 09:20 |  | 52% | 67.22d | 122.55d |  |  | 6.17h | 2.17h |
| 2956 | 12.2.14.1 | замена на ЗИП / вывод на ремонт промывку | 2h | 2026-06-25 09:00 | 2026-06-25 11:00 |  |  |  | 192.34d | start no earlier than 2026-06-25 09:00 | Труфанов А; Некрасов А | 4h |  |
| 2957 | 12.2.14.2 | проверка масла - высок температурная смазка | 1h | 2026-03-19 09:00 A | 2026-03-19 10:00 A |  | 100% |  |  | start no earlier than 2026-03-19 09:00 | Труфанов А | 1h | 1h |
| 2958 | 12.2.14.3 | Ревизия узлов/масла | 30min | 2026-07-30 09:00 A | 2026-07-30 09:30 A |  | 100% |  |  | start no earlier than 2026-07-30 09:00 | Труфанов А | 0.5h | 0.5h |
| 2959 | 12.2.14.4 | Ревизия узлов/масла (смазку свежую набил) | 20min | 2026-09-03 09:00 A | 2026-09-03 09:20 A |  | 100% |  |  | start no earlier than 2026-09-03 09:00 | Труфанов А | 0.33h | 0.33h |
| 2960 | 12.2.14.5 | Ревизия узлов/масла. Очистка мотора от пыли | 20min | 2026-09-24 09:00 A | 2026-09-24 09:20 A |  | 100% |  |  | start no earlier than 2026-09-24 09:00 | Бундин В | 0.33h | 0.33h |
| 2961 | 12.2.15 | **печь - валы этажей, подшипники, цепи** | 158.12d | 2026-03-19 09:00 A | 2026-10-15 10:00 |  | 70% | 47.81d | 104.47d |  |  | 7.17h | 5h |
| 2962 | 12.2.15.1 | осмотр смазка | 30min | 2026-03-19 09:00 A | 2026-03-19 09:30 A |  | 100% |  |  | start no earlier than 2026-03-19 09:00 | Тимофеев В | 0.5h | 0.5h |
| 2963 | 12.2.15.2 | осмотр смазка сетки | 2h | 2026-05-14 09:00 A | 2026-05-14 11:00 A |  | 100% |  |  | start no earlier than 2026-05-14 09:00 | Макаревич А | 2h | 2h |
| 2964 | 12.2.15.3 | натяжка цепей | 30min | 2026-08-13 09:00 A | 2026-08-13 09:30 A |  | 100% |  |  | start no earlier than 2026-08-13 09:00 | Некрасов А | 0.5h | 0.5h |
| 2965 | 12.2.15.4 | натяжка цепей, контроль привода | 30min | 2026-09-03 09:00 A | 2026-09-03 09:30 A |  | 100% |  |  | start no earlier than 2026-09-03 09:00 | Труфанов А | 0.5h | 0.5h |
| 2966 | 12.2.15.5 | Контроль редуктора, осмотр, проверка масла | 30min | 2026-09-17 09:00 A | 2026-09-17 09:30 A |  | 100% |  |  | start no earlier than 2026-09-17 09:00 | Труфанов А | 0.5h | 0.5h |
| 2967 | 12.2.15.6 | Контроль редуктора, осмотр, проверка масла | 30min | 2026-09-24 09:00 A | 2026-09-24 09:30 A |  | 100% |  |  | start no earlier than 2026-09-24 09:00 | Некрасов А | 0.5h | 0.5h |
| 2968 | 12.2.15.7 | Смазка всех цепей (если не смазаны) | 1h | 2026-10-15 09:00 | 2026-10-15 10:00 |  |  |  | 104.47d | start no earlier than 2026-10-15 09:00 | Бобренок В | 1h |  |
| 2969 | 12.2.15.8 | Контроль редуктора, осмотр, проверка масла | 30min | 2026-09-29 09:00 A | 2026-09-29 09:30 A |  | 100% |  |  | start no earlier than 2026-09-29 08:00 | Бундин В | 0.5h | 0.5h |
| 2970 | 12.2.15.9 | Контроль состояния шестерен привода | 10min | 2026-10-08 09:00 | 2026-10-08 09:10 |  |  |  | 109.57d | start no earlier than 2026-10-08 09:00 | Дедов В | 0.17h |  |
| 2971 | 12.2.15.10 | Проверка редуктора и выявление причины его шума и шатания/устранить | 1h | 2026-10-08 09:00 | 2026-10-08 10:00 |  |  |  | 109.47d | start no earlier than 2026-10-08 09:00 | Дедов В | 1h |  |

| ID | WBS | Task | Duration | Start | Finish | Complete | Remaining | Total slack | Constraint | Resources | Work | Actual work |
| --- | --- | --- | --- | --- | --- | --- | --- | --- | --- | --- | --- | --- |
| 2972 | 12.2.16 | **вентиляторы обдува сушки** | 150.25d? | 2026-03-05 09:00 A | 2026-09-24 11:00 | 20% | 120.2d? | 122.34d |  | ТО | 1206h | 12h |
| 2973 | 12.2.16.1 | чистка крыльчатки | 1d? | 2026-03-05 09:00 | 2026-03-05 18:00 |  |  | 271.59d | start no earlier than 2026-03-05 09:00 |  |  |  |
| 2974 | 12.2.16.2 | замена подшипников | 1d? | 2026-03-05 09:00 | 2026-03-05 18:00 |  |  | 271.59d | start no earlier than 2026-03-05 09:00 |  |  |  |
| 2975 | 12.2.16.3 | Осмотр, чистка | 2h | 2026-09-17 09:00 A | 2026-09-17 11:00 A | 100% |  |  | start no earlier than 2026-09-17 09:00 | Бобренок В | 2h | 2h |
| 2976 | 12.2.16.4 | Осмотр, очистка от пыли | 2h | 2026-09-24 09:00 A | 2026-09-24 11:00 A | 100% |  |  | start no earlier than 2026-09-24 09:00 | Некрасов А | 2h | 2h |
| 2977 | 12.2.17 | **шкаф управления тэнами сушки главный** | 155.02d | 2026-03-05 09:00 A | 2026-09-29 09:10 | 90% | 15.12d | 117.57d |  |  | 6.67h | 6.17h |
| 2978 | 12.2.17.1 | протяжка контактов, продувка шкафа, частотного привода | 10min | 2026-03-05 09:00 A | 2026-03-05 09:10 A | 100% |  |  | start no earlier than 2026-03-05 09:00 | Труфанов А | 0.17h | 0.17h |
| 2979 | 12.2.17.2 | протяжка контактов, продувка шкафа, частотного привода | 10min | 2026-07-14 09:00 A | 2026-07-14 09:10 A | 100% |  |  | start no earlier than 2026-07-14 09:00 | Некрасов А | 0.17h | 0.17h |
| 2980 | 12.2.17.3 | осмотср замена подгоревших кабелей | 30min | 2026-05-21 09:00 A | 2026-05-21 09:30 A | 100% |  |  | start no earlier than 2026-05-21 09:00 | Тимофеев В | 0.5h | 0.5h |
| 2981 | 12.2.17.4 | протяжка контактов, продувка шкафа, частотного привода | 30min | 2026-08-06 09:00 | 2026-08-06 09:30 |  |  | 162.53d | start no earlier than 2026-08-06 08:00 | Бундин В | 0.5h |  |
| 2982 | 12.2.17.5 | осмотср замена подгоревших кабелей | 30min | 2026-05-21 09:00 A | 2026-05-21 09:30 A | 100% |  |  | start no earlier than 2026-05-21 09:00 | Некрасов А | 0.5h | 0.5h |
| 2983 | 12.2.17.6 | продуть, протяжка контактов | 1h | 2026-05-21 08:00 A | 2026-05-21 10:00 A | 100% |  |  | start no earlier than 2026-05-21 08:00 | Тимофеев В | 1h | 1h |
| 2984 | 12.2.17.7 | осмотср замена подгоревших кабелей | 30min | 2026-07-14 09:00 A | 2026-07-14 09:30 A | 100% |  |  | start no earlier than 2026-07-14 09:00 | Труфанов А | 0.5h | 0.5h |
| 2985 | 12.2.17.8 | осмотср замена подгоревших кабелей | 1h | 2026-08-13 09:00 A | 2026-08-13 10:00 A | 100% |  |  | start no earlier than 2026-08-13 09:00 | Труфанов А | 1h | 1h |
| 2986 | 12.2.17.9 | продувка | 10min | 2026-09-03 09:00 A | 2026-09-03 09:10 A | 100% |  |  | start no earlier than 2026-09-03 09:00 | Труфанов А | 0.17h | 0.17h |
| 2987 | 12.2.17.10 | Продувка | 10min | 2026-09-17 09:00 A | 2026-09-17 09:10 A | 100% |  |  | start no earlier than 2026-09-17 09:00 | Некрасов А | 0.17h | 0.17h |
| 2988 | 12.2.17.11 | Продувка. Замена подогретых жил | 2h | 2026-09-24 09:00 A | 2026-09-24 11:00 A | 100% |  |  | start no earlier than 2026-09-24 09:00 | Труфанов А | 2h | 2h |
| 2989 | 12.2.17.12 | протяжка контактов, продувка шкафа, частотного привода | 10min | 2026-09-29 09:00 | 2026-09-29 09:10 |  |  | 117.57d | start no earlier than 2026-09-29 08:00 |  |  |  |
| 2990 | 12.2.18 | **шкаф управления тэнами твердотельный** | 155.02d | 2026-03-05 09:00 A | 2026-09-29 09:10 A | 100% |  |  |  |  | 3.67h | 3.67h |
| 2991 | 12.2.18.1 | продувка, протяжка | 10min | 2026-03-05 09:00 A | 2026-03-05 09:10 A | 100% |  |  | start no earlier than 2026-03-05 09:00 | Труфанов А | 0.17h | 0.17h |
| 2992 | 12.2.18.2 | продувка, протяжка | 10min | 2026-07-14 09:00 A | 2026-07-14 09:10 A | 100% |  |  | start no earlier than 2026-07-14 09:00 | Труфанов А | 0.17h | 0.17h |
| 2993 | 12.2.18.3 | продувка, протяжка | 10min | 2026-08-06 09:00 A | 2026-08-06 09:10 A | 100% |  |  | start no earlier than 2026-08-06 08:00 | Бундин В | 0.17h | 0.17h |
| 2994 | 12.2.18.4 | замена подгоревших кабелей | 30min | 2026-08-13 09:00 A | 2026-08-13 09:30 A | 100% |  |  | start no earlier than 2026-08-13 09:00 | Труфанов А | 0.5h | 0.5h |
| 2995 | 12.2.18.5 | продувка, протяжка | 10min | 2026-08-06 09:00 A | 2026-08-06 09:10 A | 100% |  |  | start no earlier than 2026-08-06 08:00 | Труфанов А | 0.17h | 0.17h |
| 2996 | 12.2.18.6 | продувка, протяжка | 10min | 2026-09-03 09:00 A | 2026-09-03 09:10 A | 100% |  |  | start no earlier than 2026-09-03 09:00 | Труфанов А | 0.17h | 0.17h |
| 2997 | 12.2.18.7 | Продувка | 10min | 2026-09-17 09:00 A | 2026-09-17 09:10 A | 100% |  |  | start no earlier than 2026-09-17 09:00 | Некрасов А | 0.17h | 0.17h |
| 2998 | 12.2.18.8 | Продувка. Замена подогретых жил | 2h | 2026-09-24 09:00 A | 2026-09-24 11:00 A | 100% |  |  | start no earlier than 2026-09-24 09:00 | Труфанов А | 2h | 2h |
| 2999 | 12.2.18.9 | Продувка | 10min | 2026-09-29 09:00 A | 2026-09-29 09:10 A | 100% |  |  | start no earlier than 2026-09-29 08:00 | Бундин В | 0.17h | 0.17h |

| ID | WBS | Task | Duration | Start | Finish | Complete | Remaining | Total slack | Constraint | Resources | Work | Actual work |
| --- | --- | --- | --- | --- | --- | --- | --- | --- | --- | --- | --- | --- |
| 3000 | 12.2.19 | **конвейер №1 с печи в дрожировщик** | 150.06d | 2026-03-05 09:00 A | 2026-09-24 09:30 A | 100% |  |  |  |  | 3.08h | 3.08h |
| 3001 | 12.2.19.1 | ослабить ленту для чистки барабана / натяжка после чистки | 30min | 2026-03-05 09:00 A | 2026-03-05 09:30 A | 100% |  |  | start no earlier than 2026-03-05 09:00 | Тимофеев В | 0.5h | 0.5h |
| 3002 | 12.2.19.2 | ревизия люфтов, фиксации смазки подшипников | 30min | 2026-03-05 09:00 A | 2026-03-05 09:30 A | 100% |  |  | start no earlier than 2026-03-05 09:00 | Тимофеев В | 0.5h | 0.5h |
| 3003 | 12.2.19.3 | ослабить ленту для чистки барабана / натяжка после чистки | 10min | 2026-03-12 09:00 A | 2026-03-12 09:10 A | 100% |  |  | start no earlier than 2026-03-12 09:00 | Тимофеев В | 0.17h | 0.17h |
| 3004 | 12.2.19.4 | чистка ленты контроль операторов, если нужно ослаить | 15min | 2026-08-13 09:00 A | 2026-08-13 09:15 A | 100% |  |  | start no earlier than 2026-08-13 09:00 | Тимофеев В | 0.25h | 0.25h |
| 3005 | 12.2.19.5 | ревизия люфтов, фиксации смазки подшипников | 30min | 2026-09-03 09:00 A | 2026-09-03 09:30 A | 100% |  |  | start no earlier than 2026-09-03 09:00 | Тимофеев В | 0.5h | 0.5h |
| 3006 | 12.2.19.6 | ослабить ленту для чистки барабана / натяжка после чистки | 10min | 2026-09-03 09:00 A | 2026-09-03 09:10 A | 100% |  |  | start no earlier than 2026-09-03 09:00 | Тимофеев В | 0.17h | 0.17h |
| 3007 | 12.2.19.7 | ревизия люфтов, фиксации смазки подшипников | 30min | 2026-09-17 09:00 A | 2026-09-17 09:30 A | 100% |  |  | start no earlier than 2026-09-17 09:00 | Тимофеев В | 0.5h | 0.5h |
| 3008 | 12.2.19.8 | очистка валов и ленты / контроль крепления редуктора / состояния подшипника | 30min | 2026-09-24 09:00 A | 2026-09-24 09:30 A | 100% |  |  | start no earlier than 2026-09-24 09:00 | Тимофеев В | 0.5h | 0.5h |
| 3009 | 12.2.20 | **барабан смесительный дрожировка** | 733.03d | 2023-12-28 09:00 A | 2026-10-08 09:15 | 78% | 161.16d | 109.56d |  | ТО | 125.75h | 98.1h |
| 3010 | 12.2.20.1 | ревизия состяния валов, подшипников | 2h | 2026-02-25 09:00 A | 2026-02-25 11:00 A | 100% |  |  | start no earlier than 2026-02-25 09:00 | Тимофеев В | 2h | 2h |
| 3011 | 12.2.20.2 | ремонт вала временный. 11 час | 2h | 2026-02-25 09:00 A | 2026-02-25 11:00 A | 100% |  |  | start no earlier than 2026-02-25 09:00 | Тимофеев В | 2h | 2h |
| 3012 | 12.2.20.3 | замена подшипников мотора привода | 2h | 2026-02-25 09:00 A | 2026-02-25 11:00 A | 100% |  |  | start no earlier than 2026-02-25 09:00 | Тимофеев В | 2h | 2h |
| 3013 | 12.2.20.4 | заменаить вал дрожировки по стрелкам на 11час / после прихода с ремонта | 2h | 2026-04-30 09:00 A | 2026-04-30 11:00 A | 100% |  |  | start no earlier than 2026-04-30 09:00 | Тимофеев В | 2h | 2h |
| 3014 | 12.2.20.5 | насос подачи жира и смесительный узел, баки подогрева | 2h | 2023-12-28 09:00 | 2023-12-28 11:00 |  |  | 842.34d | start no earlier than 2023-12-28 09:00 | ТО | 2h |  |
| 3015 | 12.2.20.6 | Осмотр подшипников редукторов | 20min | 2026-07-30 09:00 A | 2026-07-30 09:20 A | 100% |  |  | start no earlier than 2026-07-30 09:00 | Труфанов А | 0.33h | 0.33h |
| 3016 | 12.2.20.7 | Осмотр подшипников редукторов | 15min | 2026-08-13 09:00 A | 2026-08-13 09:15 A | 100% |  |  | start no earlier than 2026-08-13 09:00 | Тимофеев В | 0.25h | 0.25h |
| 3017 | 12.2.20.8 | Осмотр подшипников редукторов | 15min | 2026-09-03 09:00 A | 2026-09-03 09:15 A | 100% |  |  | start no earlier than 2026-09-03 09:00 | Тимофеев В | 0.25h | 0.25h |
| 3018 | 12.2.20.9 | Осмотр соединений фитингов, трехходового крана бежит/не бежит | 10min | 2026-09-03 09:00 A | 2026-09-03 09:10 A | 100% |  |  | start no earlier than 2026-09-03 09:00 | Тимофеев В | 0.17h | 0.17h |
| 3019 | 12.2.20.10 | Осмотр соединений фитингов, трехходового крана бежит/не бежит | 10min | 2026-09-17 09:00 A | 2026-09-17 09:10 A | 100% |  |  | start no earlier than 2026-09-17 09:00 | Тимофеев В | 0.17h | 0.17h |
| 3020 | 12.2.20.11 | Осмотр соединений фитингов, трехходового крана бежит/не бежит | 10min | 2026-09-18 09:00 | 2026-09-18 09:10 |  |  | 128.57d | start no earlier than 2026-09-18 09:00 | Тимофеев В | 0.17h |  |
| 3021 | 12.2.20.12 | Осмотр подшипников редукторов | 15min | 2026-10-08 09:00 | 2026-10-08 09:15 |  |  | 109.56d | start no earlier than 2026-10-08 09:00 | Тимофеев В | 0.25h |  |
| 3022 | 12.2.20.13 | Осмотр соединений фитингов, трехходового крана бежит/не бежит | 10min | 2026-10-08 09:00 | 2026-10-08 09:10 |  |  | 109.57d | start no earlier than 2026-10-08 09:00 | Тимофеев В | 0.17h |  |
| 3023 | 12.2.21 | **Узел подачи гидролизата** | 70.02d | 2026-07-14 09:00 A | 2026-10-08 09:10 | 96% | 3.04d | 109.57d |  |  | 3.83h | 3.67h |
| 3024 | 12.2.21.1 | Дефектовка/ выяснить причу почему еле крутит/ устранить | 2h | 2026-07-14 09:00 A | 2026-07-14 11:00 A | 100% |  |  | start no earlier than 2026-07-14 09:00 | Бундин В | 2h | 2h |
| 3025 | 12.2.21.2 | осмотр цепи, редуктора, протяжка | 20min | 2026-08-13 09:00 A | 2026-08-13 09:20 A | 100% |  |  | start no earlier than 2026-08-13 09:00 | Тимофеев В | 0.33h | 0.33h |
| 3026 | 12.2.21.3 | Осмотр/ревизия насоса гидролизата, проверка всех соединений | 10min | 2026-09-03 09:00 A | 2026-09-03 09:10 A | 100% |  |  | start no earlier than 2026-09-03 09:00 | Тимофеев В | 0.17h | 0.17h |
| 3027 | 12.2.21.4 | Осмотр/ревизия насоса гидролизата, проверка всех соединений | 10min | 2026-09-17 09:00 A | 2026-09-17 09:10 A | 100% |  |  | start no earlier than 2026-09-17 09:00 | Тимофеев В | 0.17h | 0.17h |
| 3028 | 12.2.21.5 | перенос розеток со стола на раму | 1h | 2026-09-17 09:00 A | 2026-09-17 10:00 A | 100% |  |  | start no earlier than 2026-09-17 09:00 | Тимофеев В | 1h | 1h |
| 3029 | 12.2.21.6 | Осмотр/ревизия насоса гидролизата, проверка всех соединений | 10min | 2026-10-08 09:00 | 2026-10-08 09:10 |  |  | 109.57d | start no earlier than 2026-10-08 09:00 | Тимофеев В | 0.17h |  |

| ID | WBS | Task | Duration | Start | Finish | Complete | Remaining | Total slack | Constraint | Resources | Work | Actual work |
| --- | --- | --- | --- | --- | --- | --- | --- | --- | --- | --- | --- | --- |
| 3030 | 12.2.22 | **конвейер №2 с дрожировки в охладитель** | 150.06d | 2026-03-05 09:00 A | 2026-09-24 09:30 A | 100% |  |  |  |  | 3.17h | 3.17h |
| 3031 | 12.2.22.1 | ослабить ленту для чистки барабана / натяжка после чистки | 30min | 2026-03-05 09:00 A | 2026-03-05 09:30 A | 100% |  |  | start no earlier than 2026-03-05 09:00 | Тимофеев В | 0.5h | 0.5h |
| 3032 | 12.2.22.2 | ревизия люфтов, фиксации смазки подшипников | 30min | 2026-03-05 09:00 A | 2026-03-05 09:30 A | 100% |  |  | start no earlier than 2026-03-05 09:00 | Тимофеев В | 0.5h | 0.5h |
| 3033 | 12.2.22.3 | ослабить ленту для чистки барабана / натяжка после чистки | 10min | 2026-03-12 09:00 A | 2026-03-12 09:10 A | 100% |  |  | start no earlier than 2026-03-12 09:00 | Тимофеев В | 0.17h | 0.17h |
| 3034 | 12.2.22.4 | чистка ленты контроль операторов, если нужно ослаить | 15min | 2026-08-13 09:00 A | 2026-08-13 09:15 A | 100% |  |  | start no earlier than 2026-08-13 09:00 | Тимофеев В | 0.25h | 0.25h |
| 3035 | 12.2.22.5 | чистка ленты контроль операторов, если нужно ослаить | 15min | 2026-08-13 09:00 A | 2026-08-13 09:15 A | 100% |  |  | start no earlier than 2026-08-13 09:00 | Тимофеев В | 0.25h | 0.25h |
| 3036 | 12.2.22.6 | ослабить ленту для чистки барабана / натяжка после чистки | 30min | 2026-09-03 09:00 A | 2026-09-03 09:30 A | 100% |  |  | start no earlier than 2026-09-03 09:00 | Тимофеев В | 0.5h | 0.5h |
| 3037 | 12.2.22.7 | ревизия люфтов, фиксации смазки подшипников | 30min | 2026-09-17 09:00 A | 2026-09-17 09:30 A | 100% |  |  | start no earlier than 2026-09-17 09:00 | Тимофеев В | 0.5h | 0.5h |
| 3038 | 12.2.22.8 | ревизия люфтов, фиксации смазки подшипников | 30min | 2026-09-24 09:00 A | 2026-09-24 09:30 A | 100% |  |  | start no earlier than 2026-09-24 09:00 | Тимофеев В | 0.5h | 0.5h |
| 3039 | 12.2.23 | **охладитель сеточный** | 645.06d? | 2024-04-18 09:00 A | 2026-09-29 09:30 | 65% | 227.4d? | 117.53d |  |  | 18.17h | 18h |
| 3040 | 12.2.23.1 | ревизия осей сетки, замена шплинтов | 2h | 2024-04-18 09:00 A | 2024-04-18 11:00 A | 100% |  |  | start no earlier than 2024-04-18 08:00 | Некрасов А; Черепанов И | 4h | 4h |
| 3041 | 12.2.23.2 | ревизия привода - масло, ремень (не проверено масло) | 10min | 2026-03-19 09:00 A | 2026-03-19 09:10 A | 100% |  |  | start no earlier than 2026-03-05 09:00 | Тимофеев В | 0.17h | 0.17h |
| 3042 | 12.2.23.3 | ревизия привода - масло, ремень (не проверено масло) | 10min | 2026-07-14 09:00 | 2026-07-14 09:10 |  |  | 179.57d | start no earlier than 2026-07-14 09:00 | Некрасов А | 0.17h |  |
| 3043 | 12.2.23.4 | ревизия состояния сетки | 2h | 2026-07-14 09:00 A | 2026-07-14 11:00 A | 100% |  |  | start no earlier than 2026-07-14 08:00 | Некрасов А | 2h | 2h |
| 3044 | 12.2.23.5 | ревизия состояния сетки | 1h | 2026-07-30 09:00 A | 2026-07-30 10:00 A | 100% |  |  | start no earlier than 2026-07-30 09:00 | Бундин В | 1h | 1h |
| 3045 | 12.2.23.6 | ревизия состояния сетки | 1d? | 2026-08-20 09:00 | 2026-08-20 18:00 |  |  | 151.59d | start no earlier than 2026-08-20 09:00 |  |  |  |
| 3046 | 12.2.23.7 | контроль натяжки цепей | 20min | 2026-03-05 09:00 A | 2026-03-05 09:20 A | 100% |  |  | start no earlier than 2026-03-05 09:00 | Бундин В | 0.33h | 0.33h |
| 3047 | 12.2.23.8 | текущий ремонт силиконовых уплотнений | 30min | 2026-03-05 09:00 A | 2026-03-05 09:30 A | 100% |  |  | start no earlier than 2026-03-05 09:00 | Бундин В | 0.5h | 0.5h |
| 3048 | 12.2.23.9 | осмотр ремней, натяжка цепей, ремонт силиконовых отбортовок | 1h | 2026-05-14 09:00 A | 2026-05-14 10:00 A | 100% |  |  | start no earlier than 2026-05-14 09:00 | Макаревич А | 1h | 1h |
| 3049 | 12.2.23.10 | осмотр ремней, натяжка цепей, ремонт силиконовых отбортовок | 1h | 2026-07-14 09:00 A | 2026-07-14 10:00 A | 100% |  |  | start no earlier than 2026-07-14 09:00 | Некрасов А | 1h | 1h |
| 3050 | 12.2.23.11 | осмотр ремней, натяжка цепей, ремонт силиконовых отбортовок | 1h | 2026-07-30 09:00 A | 2026-07-30 10:00 A | 100% |  |  | start no earlier than 2026-07-30 09:00 | Бундин В | 1h | 1h |
| 3051 | 12.2.23.12 | осмотр ремней, натяжка цепей, ремонт силиконовых отбортовок | 1h | 2026-08-20 09:00 A | 2026-08-20 10:00 A | 100% |  |  | start no earlier than 2026-08-20 09:00 | Труфанов А; Некрасов А | 2h | 2h |
| 3052 | 12.2.23.13 | осмотр ремней, натяжка цепей, ремонт силиконовых отбортовок | 1h | 2026-08-20 09:00 A | 2026-08-20 10:00 A | 100% |  |  | start no earlier than 2026-08-20 09:00 | Дедов В | 1h | 1h |
| 3053 | 12.2.23.14 | Ревизия сетки, контроль роспуска, подогнуть, где что можно, что бы не зацепилось | 1h | 2026-09-24 09:00 A | 2026-09-24 10:00 A | 100% |  |  | start no earlier than 2026-09-24 09:00 | Труфанов А | 1h | 1h |
| 3054 | 12.2.23.15 | Смазка подшипников привод охладителя | 30min | 2026-09-24 09:00 A | 2026-09-24 09:30 A | 100% |  |  | start no earlier than 2026-09-24 09:00 | Труфанов А | 0.5h | 0.5h |
| 3055 | 12.2.23.16 | Смазка всех цепей | 2h | 2026-09-24 09:00 A | 2026-09-24 11:00 A | 100% |  |  | start no earlier than 2026-09-24 09:00 | Труфанов А | 2h | 2h |
| 3056 | 12.2.23.17 | Ремонт уголка на охладителе, позвонить мне, перешлю видео | 30min | 2026-09-29 09:00 A | 2026-09-29 09:30 A | 100% |  |  | start no earlier than 2026-09-29 08:00 | Бундин В | 0.5h | 0.5h |

| ID | WBS | Task | Duration | Start | Finish | Predecessors | Complete | Remaining | Total slack | Free slack | Constraint | Resources | Work | Actual work |
| --- | --- | --- | --- | --- | --- | --- | --- | --- | --- | --- | --- | --- | --- | --- |
| 3057 | 12.2.24 | **конвейер 3 с охладителя в упаковку** | 43.03d | 2026-08-12 09:00 A | 2026-10-01 09:15 |  | 80% | 8.61d | 115.56d |  |  | ТО | 337.5h | 97.19h |
| 3058 | 12.2.24.1 | ослабить ленту для чистки барабана / натяжка после чистки | 15min | 2026-08-12 09:00 A | 2026-08-12 09:15 A |  | 100% |  |  |  | start no earlier than 2026-08-12 09:00 | Тимофеев В | 0.25h | 0.25h |
| 3059 | 12.2.24.2 | ревизия люфтов, фиксации, смазки подшипников | 15min | 2026-08-12 09:00 A | 2026-08-12 09:15 A |  | 100% |  |  |  | start no earlier than 2026-08-12 09:00 | Тимофеев В | 0.25h | 0.25h |
| 3060 | 12.2.24.3 | ослабить ленту для чистки барабана / натяжка после чистки | 15min | 2026-09-03 09:00 A | 2026-09-03 09:15 A |  | 100% |  |  |  | start no earlier than 2026-09-03 09:00 | Макаревич А | 0.25h | 0.25h |
| 3061 | 12.2.24.4 | ревизия люфтов, фиксации, смазки подшипников | 15min | 2026-09-17 09:00 A | 2026-09-17 09:15 A |  | 100% |  |  |  | start no earlier than 2026-09-17 09:00 | Некрасов А | 0.25h | 0.25h |
| 3062 | 12.2.24.5 | ревизия люфтов, фиксации, смазки подшипников | 15min | 2026-10-01 09:00 | 2026-10-01 09:15 |  |  |  | 115.56d |  | start no earlier than 2026-10-01 09:00 | Некрасов А | 0.25h |  |
| 3063 | 12.2.25 | **упаковка** | 720.12d | 2023-12-28 09:00 A | 2026-09-24 10:00 A |  | 100% |  |  |  |  | ТО | 5101h | 5101h |
| 3064 | 12.2.25.1 | НОТИС 1 | 2h | 2023-12-28 09:00 A | 2023-12-28 11:00 A |  | 100% |  |  |  | start no earlier than 2023-12-28 09:00 | ТО | 2h | 2h |
| 3065 | 12.2.25.2 | НОТИС 2 | 2h | 2023-12-28 09:00 A | 2023-12-28 11:00 A |  | 100% |  |  |  | start no earlier than 2023-12-28 09:00 | ТО | 2h | 2h |
| 3066 | 12.2.25.3 | запайщик 1 | 2h | 2026-06-18 09:00 A | 2026-06-18 11:00 A |  | 100% |  |  |  | start no earlier than 2026-06-18 09:00 | Труфанов А | 2h | 2h |
| 3067 | 12.2.25.4 | запайщик 2 | 2h | 2026-06-18 09:00 A | 2026-06-18 11:00 A |  | 100% |  |  |  | start no earlier than 2026-06-18 09:00 | Труфанов А | 2h | 2h |
| 3068 | 12.2.25.5 | запайщик 1 проверка перемычек/тефлона замена при необходимости | 2h | 2026-09-03 09:00 A | 2026-09-03 11:00 A |  | 100% |  |  |  | start no earlier than 2026-09-03 09:00 | Макаревич А | 2h | 2h |
| 3069 | 12.2.25.6 | запайщик 1 проверка перемычек/тефлона замена при необходимости | 2h | 2026-09-03 09:00 A | 2026-09-03 11:00 A |  | 100% |  |  |  | start no earlier than 2026-09-03 09:00 | Макаревич А | 2h | 2h |
| 3070 | 12.2.25.7 | запайщик 1 и 2 проверка перемычек/тефлона замена при необходимости | 1h | 2026-09-24 09:00 A | 2026-09-24 10:00 A |  | 100% |  |  |  | start no earlier than 2026-09-24 09:00 | Некрасов А | 1h | 1h |
| 3071 | 12.2.26 | **квадропак** | 43.19d | 2026-08-12 09:00 A | 2026-10-01 10:30 |  | 55% | 19.63d | 115.41d |  |  |  | 5.5h | 3h |
| 3072 | 12.2.26.1 | смазка вращающиющихся механизмов | 30min | 2026-10-01 09:00 | 2026-10-01 09:30 |  |  |  | 115.41d | 0d | start no earlier than 2026-10-01 09:00 | Бундин В | 0.5h |  |
| 3073 | 12.2.26.2 | протяжка креплений поворотных лап захвата | 30min | 2026-10-01 09:30 | 2026-10-01 10:00 | 3072 |  |  | 115.41d | 0d | start no earlier than 2026-03-05 09:00 | Бундин В | 0.5h |  |
| 3074 | 12.2.26.3 | чистка вала ленты выгрзного транспортера | 30min | 2026-10-01 10:00 | 2026-10-01 10:30 | 3073 |  |  | 115.41d |  | start no earlier than 2026-03-31 08:00 | Бундин В | 0.5h |  |
| 3075 | 12.2.26.4 | осмотр приводной системы нории / смазка | 30min | 2026-08-12 09:00 | 2026-08-12 09:30 |  |  |  | 158.53d |  | start no earlier than 2026-08-12 09:00 | Тимофеев В | 0.5h |  |
| 3076 | 12.2.26.5 | осмотр приводной системы нории / смазка | 30min | 2026-08-20 09:00 | 2026-08-20 09:30 |  |  |  | 152.53d |  | start no earlier than 2026-08-20 09:00 | Бобренок В | 0.5h |  |
| 3077 | 12.2.26.6 | осмотр приводной системы нории / смазка | 30min | 2026-09-03 09:00 A | 2026-09-03 09:30 A |  | 100% |  |  |  | start no earlier than 2026-09-03 09:00 | Макаревич А | 0.5h | 0.5h |
| 3078 | 12.2.26.7 | протяжка креплений поворотных лап захвата | 30min | 2026-09-03 09:00 A | 2026-09-03 09:30 A |  | 100% |  |  |  | start no earlier than 2026-09-03 09:00 | Макаревич А | 0.5h | 0.5h |
| 3079 | 12.2.26.8 | снимать ковши для доступка к подшинику, нуждающего в смазке( сообщил Некрасов) | 2h | 2026-09-24 09:00 A | 2026-09-24 11:00 A |  | 100% |  |  |  | start no earlier than 2026-09-24 09:00 | Бундин В | 2h | 2h |
| 3080 | 12.2.27 | **БЕСТРОМ** | 733.5d | 2023-12-28 09:00 A | 2026-10-08 13:00 |  | 66% | 246.17d | 109.09d |  |  | ТО | 1104.83h | 72.33h |
| 3081 | 12.2.27.1 | чистка тен с демантожем | 2.5h | 2026-03-05 09:00 A | 2026-03-05 11:30 A |  | 100% |  |  |  | start no earlier than 2026-03-05 09:00 | Бундин В | 2.5h | 2.5h |
| 3082 | 12.2.27.2 | ослабить ленту для чистки барабана / натяжка после чистки | 10min | 2026-03-12 09:00 A | 2026-03-12 09:10 A |  | 100% |  |  |  | start no earlier than 2026-03-12 09:00 | Бундин В | 0.17h | 0.17h |
| 3083 | 12.2.27.3 | чистка тенов | 1h | 2026-05-14 09:00 A | 2026-05-14 10:00 A |  | 100% |  |  |  | start no earlier than 2026-05-14 09:00 | Макаревич А | 1h | 1h |
| 3084 | 12.2.27.4 | чистка тенов | 2h | 2026-07-14 09:00 | 2026-07-14 11:00 |  |  |  | 179.34d |  | start no earlier than 2026-07-14 09:00 | Бундин В | 2h |  |
| 3085 | 12.2.27.5 | конвейер и вибробункер БЕСТРОМ | 2h | 2023-12-28 09:00 | 2023-12-28 11:00 |  |  |  | 842.34d |  | start no earlier than 2023-12-28 09:00 | ТО | 2h |  |
| 3086 | 12.2.27.6 | бестром чистка тен, проверка тефлона, роликов (согласовать с мастером) | 2h | 2026-07-08 09:00 A | 2026-07-08 11:00 A |  | 100% |  |  |  | start no earlier than 2026-07-08 09:00 | Бобренок В | 2h | 2h |
| 3087 | 12.2.27.7 | бестром чистка тен, проверка тефлона, роликов (согласовать с мастером) | 1h | 2026-07-30 09:00 A | 2026-07-30 10:00 A |  | 100% |  |  |  | start no earlier than 2026-07-30 09:00 | Тимофеев В | 1h | 1h |
| 3088 | 12.2.27.8 | бестром чистка тен, проверка тефлона, роликов (согласовать с мастером) | 1h | 2026-08-13 09:00 A | 2026-08-13 10:00 A |  | 100% |  |  |  | start no earlier than 2026-08-13 09:00 | Тимофеев В | 1h | 1h |
| 3089 | 12.2.27.9 | бестром чистка тен, проверка тефлона, роликов (согласовать с мастером) | 1h | 2026-08-20 09:00 A | 2026-08-20 10:00 A |  | 100% |  |  |  | start no earlier than 2026-08-20 09:00 | Дедов В | 1h | 1h |
| 3090 | 12.2.27.10 | бестром чистка тен, проверка тефлона, роликов (согласовать с мастером) | 1h | 2026-09-03 09:00 A | 2026-09-03 10:00 A |  | 100% |  |  |  | start no earlier than 2026-09-03 09:00 | Макаревич А | 1h | 1h |
| 3091 | 12.2.27.11 | Замена линейного подшипника ISKRA KH2030-PP (согласование с Домоводовым) не делали, все норм там) | 2h | 2026-09-03 09:00 A | 2026-09-03 11:00 A |  | 100% |  |  |  | start no earlier than 2026-09-03 09:00 | Макаревич А | 2h | 2h |
| 3092 | 12.2.27.12 | ослабить ленту для чистки барабана / натяжка после чистки | 10min | 2026-09-10 09:00 | 2026-09-10 09:10 |  |  |  | 136.57d |  | start no earlier than 2026-09-10 09:00 | Макаревич А | 0.17h |  |
| 3093 | 12.2.27.13 | Замена поролоновой губки на горизонтальных тенах запайки пакетов | 30min | 2026-09-17 09:00 A | 2026-09-17 09:30 A |  | 100% |  |  |  | start no earlier than 2026-09-17 09:00 | Бобренок В | 0.5h | 0.5h |
| 3094 | 12.2.27.14 | Чистка ТЭНов | 2h | 2026-09-16 09:00 A | 2026-09-16 11:00 A |  | 100% |  |  |  | start no earlier than 2026-09-16 08:00 | Бундин В | 2h | 2h |
| 3095 | 12.2.27.15 | Чистка ТЭНов | 2h | 2026-09-24 09:00 A | 2026-09-24 11:00 A |  | 100% |  |  |  | start no earlier than 2026-09-24 09:00 | Бундин В | 2h | 2h |
| 3096 | 12.2.27.16 | Проверка контактов их продувка и их протяжка. Проверка эелектрической части, устранение неисправностей. | 4h | 2026-10-08 09:00 | 2026-10-08 13:00 |  |  |  | 109.09d |  | start no earlier than 2026-10-08 09:00 | Дедов В | 4h |  |

| ID | WBS | Task | Duration | Start | Finish | Complete | Remaining | Total slack | Constraint | Resources | Work | Actual work |
| --- | --- | --- | --- | --- | --- | --- | --- | --- | --- | --- | --- | --- |
| 3097 | 12.2.28 | **электрооборудование** | 700.02d? | 2023-12-28 09:00 A | 2026-09-03 09:10 |  | 696.66d? | 142.57d |  |  | 69.33h | 0.33h |
| 3098 | 12.2.28.1 | ВРУ3 | 30min | 2024-10-03 09:00 | 2024-10-03 09:30 |  |  | 642.53d | start no earlier than 2024-10-03 09:00 | Тимофеев В | 0.5h |  |
| 3099 | 12.2.28.2 | ВРУ4 | 2h | 2023-12-28 09:00 | 2023-12-28 11:00 |  |  | 842.34d | start no earlier than 2023-12-28 09:00 | ТО | 2h |  |
| 3100 | 12.2.28.3 | ВРУ5 | 2h | 2023-12-28 09:00 | 2023-12-28 11:00 |  |  | 842.34d | start no earlier than 2023-12-28 09:00 | ТО | 2h |  |
| 3101 | 12.2.28.4 | ВРУ6 | 2h | 2023-12-28 09:00 | 2023-12-28 11:00 |  |  | 842.34d | start no earlier than 2023-12-28 09:00 | ТО | 2h |  |
| 3102 | 12.2.28.5 | ЩР4 у печи | 2h | 2023-12-28 09:00 | 2023-12-28 11:00 |  |  | 842.34d | start no earlier than 2023-12-28 09:00 | ТО | 2h |  |
| 3103 | 12.2.28.6 | ЩО1 у печи | 30min | 2024-10-03 09:00 | 2024-10-03 09:30 |  |  | 642.53d | start no earlier than 2024-10-03 09:00 | Тимофеев В | 0.5h |  |
| 3104 | 12.2.28.7 | ЩР5 у жиротопки | 2h | 2023-12-28 09:00 | 2023-12-28 11:00 |  |  | 842.34d | start no earlier than 2023-12-28 09:00 | ТО | 2h |  |
| 3105 | 12.2.28.8 | ЩР6 упаковка стна жир | 2h | 2023-12-28 09:00 | 2023-12-28 11:00 |  |  | 842.34d | start no earlier than 2023-12-28 09:00 | ТО | 2h |  |
| 3106 | 12.2.28.9 | ЩР7 упаковка колонна | 2h | 2023-12-28 09:00 | 2023-12-28 11:00 |  |  | 842.34d | start no earlier than 2023-12-28 09:00 | ТО | 2h |  |
| 3107 | 12.2.28.10 | ЩР8 склад навесок | 2h | 2023-12-28 09:00 | 2023-12-28 11:00 |  |  | 842.34d | start no earlier than 2023-12-28 09:00 | ТО | 2h |  |
| 3108 | 12.2.28.11 | ЩР9 2 этаж | 2h | 2023-12-28 09:00 | 2023-12-28 11:00 |  |  | 842.34d | start no earlier than 2023-12-28 09:00 | ТО | 2h |  |
| 3109 | 12.2.28.12 | электрокотел 1 - 2 цех | 2h | 2023-12-28 09:00 | 2023-12-28 11:00 |  |  | 842.34d | start no earlier than 2023-12-28 09:00 | ТО | 2h |  |
| 3110 | 12.2.28.13 | электрокотел 2 - 2 цех | 1d? | 2023-12-28 09:00 | 2023-12-28 18:00 |  |  | 841.59d | start no earlier than 2023-12-28 09:00 | ТО | 8h |  |
| 3111 | 12.2.28.14 | электрокотел 3 - 2 цех | 1d? | 2023-12-28 09:00 | 2023-12-28 18:00 |  |  | 841.59d | start no earlier than 2023-12-28 09:00 | ТО | 8h |  |
| 3112 | 12.2.28.15 | бойлер 4 2 цех раковина | 1d? | 2023-12-28 09:00 | 2023-12-28 18:00 |  |  | 841.59d | start no earlier than 2023-12-28 09:00 | ТО | 8h |  |
| 3113 | 12.2.28.16 | бойлер 5 2 цех душ М | 1d? | 2023-12-28 09:00 | 2023-12-28 18:00 |  |  | 841.59d | start no earlier than 2023-12-28 09:00 | ТО | 8h |  |
| 3114 | 12.2.28.17 | бойлер 6 2 цех душ Ж | 1d? | 2023-12-28 09:00 | 2023-12-28 18:00 |  |  | 841.59d | start no earlier than 2023-12-28 09:00 | ТО | 8h |  |
| 3115 | 12.2.28.18 | насос санитарный | 1d? | 2023-12-28 09:00 | 2023-12-28 18:00 |  |  | 841.59d | start no earlier than 2023-12-28 09:00 | ТО | 8h |  |
| 3116 | 12.2.28.19 | ЩР4 у печи продувка | 10min | 2026-09-03 09:00 A | 2026-09-03 09:10 A | 100% |  |  | start no earlier than 2026-09-03 09:00 | Труфанов А | 0.17h | 0.17h |
| 3117 | 12.2.28.20 | ЩО1 у печи продувка | 10min | 2026-09-03 09:00 A | 2026-09-03 09:10 A | 100% |  |  | start no earlier than 2026-09-03 09:00 | Труфанов А | 0.17h | 0.17h |
| 3118 | 12.2.29 | **Компрессор 2 цех** | 33.06d | 2026-08-06 09:00 A | 2026-09-17 09:30 | 99% | 0d | 0d |  | ТО | 4h | 4h |
| 3119 | 12.2.29.1 | продувка фильтров | 30min | 2026-08-06 09:00 A | 2026-08-06 09:30 A | 100% |  |  | start no earlier than 2026-08-06 09:00 | Тимофеев В | 0.5h | 0.5h |
| 3120 | 12.2.29.2 | слив конденсат с осушителя | 30min | 2026-08-06 09:00 A | 2026-08-06 09:30 A | 100% |  |  | start no earlier than 2026-08-06 09:00 | Тимофеев В | 0.5h | 0.5h |
| 3121 | 12.2.29.3 | слив конденсат с осушителя | 30min | 2026-08-20 09:00 A | 2026-08-20 09:30 A | 100% |  |  | start no earlier than 2026-08-20 09:00 | Дедов В | 0.5h | 0.5h |
| 3122 | 12.2.29.4 | продувка фильтров | 30min | 2026-08-29 09:00 A | 2026-08-31 09:30 A | 100% |  |  | start no earlier than 2026-08-29 09:00 | Макаревич А | 0.5h | 0.5h |
| 3123 | 12.2.29.5 | слив конденсат с осушителя | 30min | 2026-08-29 09:00 A | 2026-08-31 09:30 A | 100% |  |  | start no earlier than 2026-08-29 09:00 | Макаревич А | 0.5h | 0.5h |
| 3124 | 12.2.29.6 | слив конденсат с осушителя | 30min | 2026-08-29 09:00 A | 2026-08-31 09:30 A | 100% |  |  | start no earlier than 2026-08-29 09:00 | Макаревич А | 0.5h | 0.5h |
| 3125 | 12.2.29.7 | слив конденсат с осушителя | 30min | 2026-09-03 09:00 A | 2026-09-03 09:30 A | 100% |  |  | start no earlier than 2026-09-03 09:00 | Макаревич А | 0.5h | 0.5h |
| 3126 | 12.2.29.8 | продувка фильтров (дать размеры фильтра) | 30min | 2026-09-17 09:00 A | 2026-09-17 09:30 A | 100% |  |  | start no earlier than 2026-09-17 09:00 | Труфанов А | 0.5h | 0.5h |

| ID | WBS | Task | Duration | Start | Finish | Complete | Remaining | Total slack | Constraint | Resources | Work | Actual work |
| --- | --- | --- | --- | --- | --- | --- | --- | --- | --- | --- | --- | --- |
| 3127 | 12.2.30 | **насосная станция 2 цех** | 130.06d | 2026-03-05 09:00 A | 2026-09-03 09:30 A | 100% |  |  |  |  | 1h | 1h |
| 3128 | 12.2.30.1 | замена фильтров | 30min | 2026-03-05 09:00 A | 2026-03-05 09:30 A | 100% |  |  | start no earlier than 2026-03-05 09:00 | Тимофеев В | 0.5h | 0.5h |
| 3129 | 12.2.30.2 | замена фильтров | 30min | 2026-09-03 09:00 A | 2026-09-03 09:30 A | 100% |  |  | start no earlier than 2026-09-03 09:00 | Труфанов А | 0.5h | 0.5h |
| 3130 | 12.2.31 | **приточнго-вытяжная венгтиляция и смесительный узел** | 127.06d | 2026-04-16 09:00 A | 2026-10-01 09:30 A | 100% |  |  |  |  | 2.5h | 2.5h |
| 3131 | 12.2.31.1 | замена фильтра | 1h | 2026-04-16 09:00 A | 2026-04-16 10:00 A | 100% |  |  | start no earlier than 2026-04-16 09:00 | Труфанов А; Некрасов А | 2h | 2h |
| 3132 | 12.2.31.2 | Осмотр состояния фильтра приточки/замена | 30min | 2026-10-01 09:00 A | 2026-10-01 09:30 A | 100% |  |  | start no earlier than 2026-10-01 09:00 | Труфанов А | 0.5h | 0.5h |
| 3133 | 12.2.32 | **кондиционер 1** | 640.04d? | 2024-04-18 09:00 A | 2026-09-24 09:20 | 99% | 0d? | 0d |  | ТО | 5070.33h | 4827.32h |
| 3134 | 12.2.32.1 | чистка фильтра | 1h | 2024-04-18 09:00 A | 2024-04-18 10:00 A | 100% |  |  | start no earlier than 2024-04-18 08:00 | Черепанов И; Некрасов А | 2h | 2h |
| 3135 | 12.2.32.2 | чистка фильтра | 20min | 2026-03-05 09:00 A | 2026-03-05 09:20 A | 100% |  |  | start no earlier than 2026-03-05 09:00 | Некрасов А; Бундин В | 0.67h | 0.67h |
| 3136 | 12.2.32.3 | чистка фильтров | 1d? | 2026-06-25 09:00 A | 2026-06-25 18:00 A | 100% |  |  | start no earlier than 2026-06-25 09:00 | Тимофеев В; Дедов В | 16h | 16h |
| 3137 | 12.2.32.4 | чистка фильтров | 20min | 2026-07-14 09:00 A | 2026-07-14 09:20 A | 100% |  |  | start no earlier than 2026-07-14 09:00 | Некрасов А; Бундин В | 0.67h | 0.67h |
| 3138 | 12.2.32.5 | чистка фильтров | 20min | 2026-08-13 09:00 A | 2026-08-13 09:20 A | 100% |  |  | start no earlier than 2026-08-13 09:00 | Некрасов А; Труфанов А | 0.67h | 0.67h |
| 3139 | 12.2.32.6 | чистка фильтров | 20min | 2026-09-03 09:00 A | 2026-09-03 09:20 A | 100% |  |  | start no earlier than 2026-09-03 09:00 | Некрасов А; Тимофеев В | 0.67h | 0.67h |
| 3140 | 12.2.32.7 | чистка фильтров | 20min | 2026-09-17 09:00 A | 2026-09-17 09:20 A | 100% |  |  | start no earlier than 2026-09-17 09:00 | Тимофеев В; Бобренок В | 0.67h | 0.67h |
| 3141 | 12.2.32.8 | чистка фильтров | 20min | 2026-09-24 09:00 A | 2026-09-24 09:20 A | 100% |  |  | start no earlier than 2026-09-24 09:00 | Тимофеев В; Бундин В | 0.67h | 0.67h |
| 3142 | 12.2.33 | **кондиционер 2** | 640.04d? | 2024-04-18 09:00 A | 2026-09-24 09:20 | 99% | 0d? | 0d |  | ТО | 5071.5h | 4983.33h |
| 3143 | 12.2.33.1 | чистка фильтров | 1d? | 2026-06-25 09:00 A | 2026-06-25 18:00 A | 100% |  |  | start no earlier than 2026-06-25 09:00 | Тимофеев В; Дедов В | 16h | 16h |
| 3144 | 12.2.33.2 | чистка фильтра | 1h | 2024-04-18 09:00 A | 2024-04-18 10:00 A | 100% |  |  | start no earlier than 2024-04-18 08:00 | Черепанов И; Некрасов А | 2h | 2h |
| 3145 | 12.2.33.3 | чистка фильтра | 20min | 2026-03-05 09:00 A | 2026-03-05 09:20 A | 100% |  |  | start no earlier than 2026-03-05 09:00 | Некрасов А; Бундин В | 0.67h | 0.67h |
| 3146 | 12.2.33.4 | чистка фильтров | 20min | 2026-07-14 09:00 A | 2026-07-14 09:20 A | 100% |  |  | start no earlier than 2026-07-14 09:00 | Некрасов А; Бундин В | 0.67h | 0.67h |
| 3147 | 12.2.33.5 | чистка фильтров | 20min | 2026-08-13 09:00 A | 2026-08-13 09:20 A | 100% |  |  | start no earlier than 2026-08-13 09:00 | Некрасов А; Труфанов А | 0.67h | 0.67h |
| 3148 | 12.2.33.6 | чистка фильтров | 20min | 2026-08-13 09:00 A | 2026-08-13 09:20 A | 100% |  |  | start no earlier than 2026-08-13 09:00 | Некрасов А; Труфанов А | 0.67h | 0.67h |
| 3149 | 12.2.33.7 | чистка фильтров | 20min | 2026-09-03 09:00 A | 2026-09-03 09:20 A | 100% |  |  | start no earlier than 2026-09-03 09:00 | Некрасов А; Тимофеев В | 0.67h | 0.67h |
| 3150 | 12.2.33.8 | чистка фильтров | 30min | 2026-09-17 09:00 A | 2026-09-17 09:30 A | 100% |  |  | start no earlier than 2026-09-17 09:00 | Тимофеев В; Бобренок В | 1h | 1h |
| 3151 | 12.2.33.9 | чистка фильтров | 20min | 2026-09-24 09:00 A | 2026-09-24 09:20 A | 100% |  |  | start no earlier than 2026-09-24 09:00 | Тимофеев В; Бундин В | 0.67h | 0.67h |

| ID | WBS | Task | Type | Duration | Start | Finish | Complete | Total slack | Constraint | Resources | Work | Actual work |
| --- | --- | --- | --- | --- | --- | --- | --- | --- | --- | --- | --- | --- |
| 3152 | 12.2.34 | **кондиционер 3** |  | 150.04d | 2026-03-05 09:00 A | 2026-09-24 09:20 A | 100% |  |  |  | 4.67h | 4.67h |
| 3153 | 12.2.34.1 | чистка фильтра |  | 20min | 2026-03-05 09:00 A | 2026-03-05 09:20 A | 100% |  | start no earlier than 2026-03-05 09:00 | Некрасов А; Бундин В | 0.67h | 0.67h |
| 3154 | 12.2.34.2 | чистка фильтров |  | 20min | 2026-07-14 09:00 A | 2026-07-14 09:20 A | 100% |  | start no earlier than 2026-07-14 09:00 | Некрасов А; Бундин В | 0.67h | 0.67h |
| 3155 | 12.2.34.3 | чистка фильтров |  | 20min | 2026-08-13 09:00 A | 2026-08-13 09:20 A | 100% |  | start no earlier than 2026-08-13 09:00 | Некрасов А; Труфанов А | 0.67h | 0.67h |
| 3156 | 12.2.34.4 | чистка фильтров |  | 20min | 2026-08-13 09:00 A | 2026-08-13 09:20 A | 100% |  | start no earlier than 2026-08-13 09:00 | Некрасов А; Труфанов А | 0.67h | 0.67h |
| 3157 | 12.2.34.5 | чистка фильтров |  | 20min | 2026-09-03 09:00 A | 2026-09-03 09:20 A | 100% |  | start no earlier than 2026-09-03 09:00 | Некрасов А; Тимофеев В | 0.67h | 0.67h |
| 3158 | 12.2.34.6 | чистка фильтров |  | 20min | 2026-09-17 09:00 A | 2026-09-17 09:20 A | 100% |  | start no earlier than 2026-09-17 09:00 | Тимофеев В; Бобренок В | 0.67h | 0.67h |
| 3159 | 12.2.34.7 | чистка фильтров |  | 20min | 2026-09-24 09:00 A | 2026-09-24 09:20 A | 100% |  | start no earlier than 2026-09-24 09:00 | Тимофеев В; Бундин В | 0.67h | 0.67h |
| 3160 | 12.2.35 | **электроштабелер** |  | 2.38d | 2026-08-11 09:00 A | 2026-08-13 12:00 A | 100% |  |  | ТО | 22.25h | 22.25h |
| 3161 | 12.2.35.1 | **хруст в колесе устранить** |  | 2.38d | 2026-08-11 09:00 A | 2026-08-13 12:00 A | 100% |  |  |  | 3.25h | 3.25h |
| 3162 | 12.2.35.1.1 | хруст с правой стороны штабелера- ревизия, скорее всего подшипник (экструдер). Осмотр, доложить | manual | 15min | 2026-08-11 09:00 A | 2026-08-11 09:15 A | 100% |  | start no earlier than 2026-08-11 09:00 | Тимофеев В | 0.25h | 0.25h |
| 3163 | 12.2.35.1.2 | ремонт замена подшипник колесо штабелер |  | 3h | 2026-08-13 09:00 A | 2026-08-13 12:00 A | 100% |  | start no earlier than 2026-08-13 09:00 | Тимофеев В | 3h | 3h |
| 3164 | 12.2.36 | **Лаборатория** |  | 0.25d | 2026-09-18 09:00 A | 2026-09-18 11:00 A | 100% |  |  |  | 2h | 2h |
| 3165 | 12.2.36.1 | Прочистка дистилятора/ТО, очистка накипи, инструкция смотреть в лаборатории |  | 2h | 2026-09-18 09:00 A | 2026-09-18 11:00 A | 100% |  | start no earlier than 2026-09-18 09:00 | Бобренок В | 2h | 2h |
| 3166 | 12.3 | **3 цех** |  | 1d? | 2023-12-28 09:00 | 2023-12-28 18:00 |  | 841.59d |  | ТО | 88h |  |
| 3167 | 12.3.1 | **электрооборудование** |  | 1d? | 2023-12-28 09:00 | 2023-12-28 18:00 |  | 841.59d |  | ТО | 48h |  |
| 3168 | 12.3.1.1 | ВРУ7 |  | 1d? | 2023-12-28 09:00 | 2023-12-28 18:00 |  | 841.59d | start no earlier than 2023-12-28 09:00 | ТО | 8h |  |
| 3169 | 12.3.1.2 | ОЩР |  | 1d? | 2023-12-28 09:00 | 2023-12-28 18:00 |  | 841.59d | start no earlier than 2023-12-28 09:00 | ТО | 8h |  |
| 3170 | 12.3.1.3 | электрокотел 4 - 3 цех |  | 1d? | 2023-12-28 09:00 | 2023-12-28 18:00 |  | 841.59d | start no earlier than 2023-12-28 09:00 | ТО | 8h |  |
| 3171 | 12.3.1.4 | электрокотел 5 - 3 цех |  | 1d? | 2023-12-28 09:00 | 2023-12-28 18:00 |  | 841.59d | start no earlier than 2023-12-28 09:00 | ТО | 8h |  |
| 3172 | 12.3.1.5 | электрокотел 6 - 3 цех |  | 1d? | 2023-12-28 09:00 | 2023-12-28 18:00 |  | 841.59d | start no earlier than 2023-12-28 09:00 | ТО | 8h |  |
| 3173 | 12.3.2 | электроштабелер 1 |  | 1d? | 2023-12-28 09:00 | 2023-12-28 18:00 |  | 841.59d | start no earlier than 2023-12-28 09:00 | ТО | 8h |  |
| 3174 | 12.3.3 | электроштабелер 2 |  | 1d? | 2023-12-28 09:00 | 2023-12-28 18:00 |  | 841.59d | start no earlier than 2023-12-28 09:00 | ТО | 8h |  |
| 3175 | 12.3.4 | вилочный погрузчик 1 |  | 1d? | 2023-12-28 09:00 | 2023-12-28 18:00 |  | 841.59d | start no earlier than 2023-12-28 09:00 | ТО | 8h |  |
| 3176 | 12.3.5 | вилочный погрузчик 2 |  | 1d? | 2023-12-28 09:00 | 2023-12-28 18:00 |  | 841.59d | start no earlier than 2023-12-28 09:00 | ТО | 8h |  |

| ID | WBS | Task | Type | Duration | Start | Finish | Complete | Remaining | Total slack | Constraint | Resources | Work | Actual work |
| --- | --- | --- | --- | --- | --- | --- | --- | --- | --- | --- | --- | --- | --- |
| 3177 | 12.4 | **5 цех** |  | 656.25d? | 2023-12-28 09:00 A | 2026-07-03 11:00 | 10% | 593.75d? | 186.34d |  | ТО | 6302h | 906.67h |
| 3178 | 12.4.1 | насосная станция 5 цех |  | 1d? | 2023-12-28 09:00 | 2023-12-28 18:00 |  |  | 841.59d | start no earlier than 2023-12-28 09:00 | ТО | 8h |  |
| 3179 | 12.4.2 | растариватель |  | 1d? | 2023-12-28 09:00 | 2023-12-28 18:00 |  |  | 841.59d | start no earlier than 2023-12-28 09:00 | ТО | 8h |  |
| 3180 | 12.4.3 | **шнек 1 растариватель-смеситель** |  | 65.25d | 2026-04-03 09:00 A | 2026-07-03 11:00 | 67% | 21.75d | 0d |  | ТО | 492h | 342.67h |
| 3181 | 12.4.3.1 | замена подшипник нижний | manual | 2h | 2026-04-03 09:00 A | 2026-04-03 11:00 A | 100% |  |  |  | Некрасов А; Труфанов А | 4h | 4h |
| 3182 | 12.4.3.2 | ревизия подшипник верхний - не снимается.ревизия - все ок, мазка | manual | 2h | 2026-04-03 09:00 A | 2026-04-03 11:00 A | 100% |  |  |  | Некрасов А; Труфанов А | 4h | 4h |
| 3183 | 12.4.3.3 | осмотр износа, смазка | manual | 2h | 2026-07-03 09:00 | 2026-07-03 11:00 |  |  |  |  | Тимофеев В | 2h |  |
| 3184 | 12.4.4 | смеситель СМ1500 |  | 1d? | 2023-12-28 09:00 | 2023-12-28 18:00 |  |  | 841.59d | start no earlier than 2023-12-28 09:00 | ТО | 8h |  |
| 3185 | 12.4.5 | **шнек 2 смеситель -дробилка** |  | 68.5d? | 2026-03-24 09:00 A | 2026-06-26 13:00 | 67% | 22.83d? | 191.09d |  | ТО | 440h | 64h |
| 3186 | 12.4.5.1 | ремонт вала, т.к съело посадку на верх подшипник |  | 1d? | 2026-03-24 09:00 A | 2026-03-24 18:00 A | 100% |  |  | start no earlier than 2026-03-24 09:00 | Труфанов А; Некрасов А | 16h | 16h |
| 3187 | 12.4.5.2 | осмотр износа |  | 4h | 2026-06-26 09:00 | 2026-06-26 13:00 |  |  | 191.09d | start no earlier than 2026-06-26 09:00 | Тимофеев В | 4h |  |
| 3188 | 12.4.6 | **дробилка ДМС3** |  | 0.5d | 2026-05-11 09:00 | 2026-05-11 13:00 |  |  | 225.09d |  | ТО | 8h |  |
| 3189 | 12.4.6.1 | замена подшипник буксы сторона мотора |  | 4h | 2026-05-11 09:00 | 2026-05-11 13:00 |  |  | 225.09d | start no earlier than 2026-05-10 09:00 | Бундин В | 4h |  |
| 3190 | 12.4.7 | шнек 3 дробилка-накопитель |  | 1d? | 2023-12-28 09:00 | 2023-12-28 18:00 |  |  | 841.59d | start no earlier than 2023-12-28 09:00 | ТО | 8h |  |
| 3191 | 12.4.8 | дробилка 11квт |  | 1d? | 2023-12-28 09:00 | 2023-12-28 18:00 |  |  | 841.59d | start no earlier than 2023-12-28 09:00 | ТО | 8h |  |
| 3192 | 12.4.9 | дробилка 7,5квт |  | 1d? | 2023-12-28 09:00 | 2023-12-28 18:00 |  |  | 841.59d | start no earlier than 2023-12-28 09:00 | ТО | 8h |  |
| 3193 | 12.4.10 | вибросито А |  | 1d? | 2023-12-28 09:00 | 2023-12-28 18:00 |  |  | 841.59d | start no earlier than 2023-12-28 09:00 | ТО | 8h |  |
| 3194 | 12.4.11 | вибросито Б |  | 1d? | 2023-12-28 09:00 | 2023-12-28 18:00 |  |  | 841.59d | start no earlier than 2023-12-28 09:00 | ТО | 8h |  |
| 3195 | 12.4.12 | **электрооборудование** |  | 1d? | 2023-12-28 09:00 | 2023-12-28 18:00 |  |  | 841.59d |  | ТО | 48h |  |
| 3196 | 12.4.12.1 | ВРУ7 |  | 1d? | 2023-12-28 09:00 | 2023-12-28 18:00 |  |  | 841.59d | start no earlier than 2023-12-28 09:00 | ТО | 8h |  |
| 3197 | 12.4.12.2 | ЩР2 |  | 1d? | 2023-12-28 09:00 | 2023-12-28 18:00 |  |  | 841.59d | start no earlier than 2023-12-28 09:00 | ТО | 8h |  |
| 3198 | 12.4.12.3 | котельная газовая 5 цех |  | 1d? | 2023-12-28 09:00 | 2023-12-28 18:00 |  |  | 841.59d | start no earlier than 2023-12-28 09:00 | ТО | 8h |  |
| 3199 | 12.4.12.4 | бойлеры душ |  | 1d? | 2023-12-28 09:00 | 2023-12-28 18:00 |  |  | 841.59d | start no earlier than 2023-12-28 09:00 | ТО | 8h |  |
| 3200 | 12.4.12.5 | вентилятор вытяжной в дробилке |  | 1d? | 2023-12-28 09:00 | 2023-12-28 18:00 |  |  | 841.59d | start no earlier than 2023-12-28 09:00 | ТО | 8h |  |

| ID | WBS | Task | Type | Duration | Start | Finish | Complete | Remaining | Total slack | Constraint | Resources | Work | Actual work |
| --- | --- | --- | --- | --- | --- | --- | --- | --- | --- | --- | --- | --- | --- |
| 3201 | 12.5 | **адм корпус** |  | 1d? | 2023-12-28 09:00 | 2023-12-28 18:00 |  |  | 841.59d |  | ТО | 24h |  |
| 3202 | 12.5.1 | бойлер туалет |  | 1d? | 2023-12-28 09:00 | 2023-12-28 18:00 |  |  | 841.59d | start no earlier than 2023-12-28 09:00 | ТО | 8h |  |
| 3203 | 12.5.2 | ОЩР |  | 1d? | 2023-12-28 09:00 | 2023-12-28 18:00 |  |  | 841.59d | start no earlier than 2023-12-28 09:00 | ТО | 8h |  |
| 3204 | 12.6 | **склад упаковки** |  | 1d? | 2023-12-28 09:00 | 2023-12-28 18:00 |  |  | 841.59d |  | ТО | 32h |  |
| 3205 | 12.6.1 | **электрооборудование** |  | 1d? | 2023-12-28 09:00 | 2023-12-28 18:00 |  |  | 841.59d |  | ТО | 24h |  |
| 3206 | 12.6.1.1 | ЩО и ЩР |  | 1d? | 2023-12-28 09:00 | 2023-12-28 18:00 |  |  | 841.59d | start no earlier than 2023-12-28 09:00 | ТО | 8h |  |
| 3207 | 12.6.1.2 | санитарный насос |  | 1d? | 2023-12-28 09:00 | 2023-12-28 18:00 |  |  | 841.59d | start no earlier than 2023-12-28 09:00 | ТО | 8h |  |
| 3208 | 12.7 | **цех наполнителей** |  | 1d? | 2023-12-28 09:00 | 2023-12-28 18:00 |  |  | 841.59d |  | ТО | 56h |  |
| 3209 | 12.7.1 | ЩО и ЩР |  | 1d? | 2023-12-28 09:00 | 2023-12-28 18:00 |  |  | 841.59d | start no earlier than 2023-12-28 09:00 | ТО | 8h |  |
| 3210 | 12.7.2 | комппрессор |  | 1d? | 2023-12-28 09:00 | 2023-12-28 18:00 |  |  | 841.59d | start no earlier than 2023-12-28 09:00 | ТО | 8h |  |
| 3211 | 12.7.3 | конвейер загрузки |  | 1d? | 2023-12-28 09:00 | 2023-12-28 18:00 |  |  | 841.59d | start no earlier than 2023-12-28 09:00 | ТО | 8h |  |
| 3212 | 12.7.4 | дозатор НОТИС |  | 1d? | 2023-12-28 09:00 | 2023-12-28 18:00 |  |  | 841.59d | start no earlier than 2023-12-28 09:00 | ТО | 8h |  |
| 3213 | 12.7.5 | запайщик |  | 1d? | 2023-12-28 09:00 | 2023-12-28 18:00 |  |  | 841.59d | start no earlier than 2023-12-28 09:00 | ТО | 8h |  |
| 3214 | 12.7.6 | вилочный погрузчик тойота |  | 1d? | 2023-12-28 09:00 | 2023-12-28 18:00 |  |  | 841.59d | start no earlier than 2023-12-28 09:00 | ТО | 8h |  |
| 3215 | 12.8 | Установка розетки под литийионный аккумклятор 3-х фазный, установить рядом с существующей ВРУ |  | 2h | 2026-07-08 09:00 | 2026-07-08 11:00 |  |  | 183.34d | start no earlier than 2026-07-08 08:00 | Бундин В | 2h |  |
| 3216 | 13 | **синий склад** |  | 111.38d | 2026-05-07 09:00 A | 2026-09-30 12:00 | 52% | 53.27d | 116.22d |  |  | 23h | 12h |
| 3217 | 13.1 | установить на место крышки вентиляторов |  | 1h | 2026-08-17 09:00 A | 2026-08-17 10:00 A | 100% |  |  | start no earlier than 2026-08-17 09:00 | Бобренок В | 1h | 1h |
| 3218 | 13.2 | Монтаж доп освещения |  | 2h | 2026-09-26 09:00 A | 2026-09-26 11:00 A | 100% |  |  | start no earlier than 2026-09-26 09:00 | Бобренок В | 2h | 2h |
| 3219 | 13.3 | монтаж включателя света с улицы, возле вход. Двери |  | 3h | 2026-09-30 09:00 | 2026-09-30 12:00 |  |  | 116.22d | start no earlier than 2026-09-30 09:00 | Бобренок В | 3h |  |
| 3220 | 13.4 | расширить проем вверху для проезда погрузчиков, врезаются | manual | 1d | 2026-09-21 09:00 | 2026-09-21 18:00 |  |  |  | start no earlier than 2026-09-21 09:00 | Олег | 8h |  |
| 3221 | 13.5 | замерить диаметр крыльчатки двигателя экструдера, инфу передать мне |  | 1h | 2026-06-13 09:00 A | 2026-06-15 10:00 A | 100% |  |  | start no earlier than 2026-06-13 09:00 | Бобренок В | 1h | 1h |
| 3222 | 13.6 | найти амперметры 30А и 150А (сказать кол-во) |  | 2h | 2026-06-10 09:00 A | 2026-06-10 11:00 A | 100% |  |  | start no earlier than 2026-06-10 09:00 | Труфанов А | 2h | 2h |
| 3223 | 13.7 | Навести порядок на входе в синий склад |  | 2h | 2026-07-23 09:00 A | 2026-07-23 11:00 A | 100% |  |  | start no earlier than 2026-07-24 09:00 | Бундин В | 2h | 2h |
| 3224 | 13.8 | проверить и подписать все материалы в синем складе с Алексеем |  | 4h | 2026-05-07 09:00 A | 2026-05-07 13:00 A | 100% |  |  | start no earlier than 2026-05-07 09:00 | Шуранов Ю | 4h | 4h |

| ID | WBS | Task | Duration | Start | Finish | Predecessors | Complete | Constraint | Resources | Work | Actual work |
| --- | --- | --- | --- | --- | --- | --- | --- | --- | --- | --- | --- |
| 3225 | 14 | **хим лаб** | 652.25d? | 2024-01-11 08:00 A | 2026-07-13 11:00 A |  | 100% |  |  | 71.75h | 71.75h |
| 3226 | 14.1 | замена кран РР | 2h | 2026-07-13 09:00 A | 2026-07-13 11:00 A |  | 100% | start no earlier than 2026-07-13 09:00 | Тимофеев В | 2h | 2h |
| 3227 | 14.2 | ремонт термоконтроллера - замена реле / перепаять с сзоны ALARM | 1h | 2026-06-09 09:00 A | 2026-06-09 10:00 A |  | 100% | start no earlier than 2026-06-09 09:00 | Дедов В | 1h | 1h |
| 3228 | 14.3 | **усилить питание хим лаб, что бы не отключался автомат при вкл быт приборов** | 0.12d | 2026-05-29 09:00 A | 2026-05-29 10:00 A |  | 100% |  |  | 2h | 2h |
| 3229 | 14.3.1 | переключение питания хим лаб на отдельный ШУ | 1h | 2026-05-29 09:00 A | 2026-05-29 10:00 A |  | 100% | start no earlier than 2026-05-29 09:00 | Некрасов А; Бобренок В | 2h | 2h |
| 3230 | 14.4 | **ремонт бойлер вода - ПУН** | 10.25d | 2026-05-14 08:00 A | 2026-05-28 11:00 A |  | 100% |  |  | 4.75h | 4.75h |
| 3231 | 14.4.1 | замена из ЗИП | 1h | 2026-05-14 08:00 A | 2026-05-14 10:00 A |  | 100% | start no earlier than 2026-05-14 08:00 | Тимофеев В | 1h | 1h |
| 3232 | 14.4.2 | диагностика неисправности. Бойлер в слесарне | 1h | 2026-05-14 08:00 A | 2026-05-14 10:00 A |  | 100% | start no earlier than 2026-05-14 08:00 | Бобренок В | 1h | 1h |
| 3233 | 14.4.3 | заявка предохарнитель | 30min | 2026-05-15 09:00 A | 2026-05-15 09:30 A | 3232 | 100% | start no earlier than 2026-05-15 08:00 | Шуранов Ю | 0.5h | 0.5h |
| 3234 | 14.4.4 | контроль поставки | 15min | 2026-05-22 09:30 A | 2026-05-22 09:45 A | 3233FS+7d | 100% | start no earlier than 2026-05-15 08:00 | Шуранов Ю | 0.25h | 0.25h |
| 3235 | 14.4.5 | заменить на бойлере в слесарке термостата WY-S37A | 2h | 2026-05-28 09:00 A | 2026-05-28 11:00 A |  | 100% | start no earlier than 2026-05-28 09:00 | Тимофеев В | 2h | 2h |
| 3236 | 14.5 | **ремонт дистилятор** | 31d? | 2026-04-27 09:00 A | 2026-06-08 18:00 A |  | 100% |  |  | 17h | 17h |
| 3237 | 14.5.1 | заявка тен | 1h | 2026-04-27 09:00 A | 2026-04-27 10:00 A |  | 100% | start no earlier than 2026-04-27 09:00 | Шуранов Ю | 1h | 1h |
| 3238 | 14.5.2 | доставка | 1d? | 2026-06-05 09:00 A | 2026-06-05 18:00 A | 3237 | 100% | finish no earlier than 2026-06-05 18:00 | Карабанов | 8h | 8h |
| 3239 | 14.5.3 | замена. Больше не выбиывает | 1d? | 2026-06-05 18:00 A | 2026-06-08 18:00 A | 3238 | 100% | start no earlier than 2026-05-13 09:00 | Тимофеев В | 8h | 8h |
| 3240 | 14.6 | **ремонт АКВ_шесть** | 30d? | 2026-04-27 09:00 A | 2026-06-05 18:00 A |  | 100% |  |  | 11h | 11h |
| 3241 | 14.6.1 | заявка тен | 1h | 2026-04-27 09:00 A | 2026-04-27 10:00 A |  | 100% | start no earlier than 2026-04-27 09:00 | Шуранов Ю | 1h | 1h |
| 3242 | 14.6.2 | доставка | 1d? | 2026-06-05 09:00 A | 2026-06-05 18:00 A | 3241 | 100% | finish no earlier than 2026-06-05 18:00 | Карабанов | 8h | 8h |
| 3243 | 14.6.3 | замена | 2h | 2026-05-24 09:00 A | 2026-05-25 11:00 A |  | 100% | start no earlier than 2026-05-24 09:00 | Дедов В | 2h | 2h |
| 3244 | 14.7 | проверить прибор | 1d? | 2026-05-06 09:00 A | 2026-05-06 18:00 A |  | 100% | start no earlier than 2026-05-06 08:00 | Шуранов Ю | 8h | 8h |
| 3245 | 14.8 | датчик температуры ?? Заявка | 1d? | 2026-04-27 09:00 A | 2026-04-27 18:00 A |  | 100% | start no earlier than 2026-04-27 08:00 | Шуранов Ю | 8h | 8h |
| 3246 | 14.9 | дистилятор отключается ?? Заявка | 1d? | 2026-04-27 09:00 A | 2026-04-27 18:00 A |  | 100% | start no earlier than 2026-04-27 08:00 | Шуранов Ю | 8h | 8h |
| 3247 | 14.10 | перенос старый прибор в архив 5ц | 30min | 2026-04-20 09:00 A | 2026-04-20 09:30 A |  | 100% | start no earlier than 2026-04-20 08:00 | Кладовщики | 0.5h | 0.5h |
| 3248 | 14.11 | замена 2 вентилятора | 4h | 2024-01-16 08:00 A | 2024-01-16 13:00 A |  | 100% | start no earlier than 2024-01-16 08:00 | Бобренок В | 4h | 4h |
| 3249 | 14.12 | ремонт соленоид | 2h | 2024-01-16 08:00 A | 2024-01-16 11:00 A |  | 100% | start no earlier than 2024-01-16 08:00 | Тимофеев В | 2h | 2h |
| 3250 | 14.13 | ремонт вытяжка №2 диагностика вентилятор | 30min | 2024-01-11 08:00 A | 2024-01-11 09:30 A |  | 100% | start no earlier than 2024-01-11 08:00 | Дедов В | 0.5h | 0.5h |
| 3251 | 14.14 | замена насос " агрегат | 1h | 2024-01-11 08:00 A | 2024-01-11 10:00 A |  | 100% | start no earlier than 2024-01-11 08:00 | Дедов В | 1h | 1h |
| 3252 | 14.15 | замена тен по доставке | 2h | 2026-03-17 09:00 A | 2026-03-17 11:00 A |  | 100% | start no earlier than 2026-03-17 09:00 | Макаревич А | 2h | 2h |

| ID | WBS | Task | Duration | Start | Finish | Predecessors | Complete | Remaining | Total slack | Constraint | Resources | Work | Actual work |
| --- | --- | --- | --- | --- | --- | --- | --- | --- | --- | --- | --- | --- | --- |
| 3253 | 15 | **цех наполнителей** | 194.12d | 2025-07-14 09:00 A | 2026-04-10 10:00 A |  | 100% |  |  |  |  | 10h | 10h |
| 3254 | 15.1 | взять со склада АКБ и клеммы заменить на погрузчике, старый АКБ отдать на 2 этаж склад | 1h | 2026-04-10 09:00 A | 2026-04-10 10:00 A |  | 100% |  |  | start no earlier than 2026-04-10 09:00 | Тимофеев В | 1h | 1h |
| 3255 | 15.2 | поменять пневмоцилиндр на нотис | 1h | 2026-04-09 09:00 A | 2026-04-09 10:00 A |  | 100% |  |  | start no earlier than 2026-04-10 09:00 | Тимофеев В | 1h | 1h |
| 3256 | 15.3 | проверить дист. Воду в АКБ погрузчика | 1h | 2026-04-01 09:00 A | 2026-04-01 10:00 A |  | 100% |  |  | start no earlier than 2026-04-01 09:00 | Тимофеев В | 1h | 1h |
| 3257 | 15.4 | просверлить больше, нарезать резьбу для крепления стола запайщика, резьба сорвана | 1h | 2026-03-20 09:00 A | 2026-03-20 10:00 A |  | 100% |  |  | start no earlier than 2026-03-20 09:00 | Бундин В | 1h | 1h |
| 3258 | 15.5 | ремонт компрессор. Проверка конденсаторов/не запускается мотор. Ключь у кладовщиков | 4h | 2025-07-14 09:00 A | 2025-07-14 13:00 A |  | 100% |  |  | start no earlier than 2025-07-14 09:00 | Бобренок В | 4h | 4h |
| 3259 | 15.6 | ТО компрессор / конвейер / запайщик | 2h | 2026-03-09 09:00 A | 2026-03-09 11:00 A |  | 100% |  |  | start no earlier than 2026-03-09 09:00 | Тимофеев В | 2h | 2h |
| 3260 | 16 | **офис** | 944.25d? | 2023-03-10 09:00 A | 2026-10-12 11:00 |  | 97% | 26.27d? | 107.34d |  |  | 223.67h | 217.17h |
| 3262 | 16.1 | Кинуть времянку в серверную | 1h | 2026-10-02 09:00 A | 2026-10-02 10:00 A |  | 100% |  |  | start no earlier than 2026-10-02 09:00 | Некрасов А; Труфанов А | 2h | 2h |
| 3263 | 16.2 | монтаж полочка Курдюмова продожить | 1h | 2026-09-22 09:00 A | 2026-09-22 10:00 A |  | 100% |  |  | start no earlier than 2026-09-22 09:00 | Тимофеев В | 1h | 1h |
| 3264 | 16.3 | **Ремонт бойлера** | 13.25d? | 2026-09-08 09:00 A | 2026-09-21 11:00 A |  | 100% |  |  |  |  | 7h | 7h |
| 3265 | 16.3.1 | Заявка тэна | 1d? | 2026-09-08 09:00 A | 2026-09-08 18:00 A |  | 100% |  |  | start no earlier than 2026-09-08 09:00 |  |  |  |
| 3266 | 16.3.2 | контроль доставка | 1d? | 2026-09-14 09:00 A | 2026-09-14 18:00 A |  | 100% |  |  | start no earlier than 2026-09-14 09:00 |  |  |  |
| 3267 | 16.3.3 | Повесить отремонтированный бойлер обратно в офис - проверить работу | 1h | 2026-09-18 09:00 A | 2026-09-18 10:00 A |  | 100% |  |  | start no earlier than 2026-09-18 09:00 | Тимофеев В | 1h | 1h |
| 3268 | 16.3.4 | устранить утечку / монтаж | 2h | 2026-09-21 09:00 A | 2026-09-21 11:00 A |  | 100% |  |  | start no earlier than 2026-09-21 09:00 | Некрасов А; Труфанов А | 4h | 4h |
| 3269 | 16.3.5 | Замена ТЭНа на бойлере, который в слесарке, получить на складе упаковки | 1h | 2026-09-16 09:00 A | 2026-09-16 10:00 A |  | 100% |  |  | start no earlier than 2026-09-16 08:00 | Бундин В | 1h | 1h |
| 3270 | 16.3.6 | Дефектовка бойлера, лежит в слесарке, проверка ТЭНов и анода, показывал кз по тэнам | 1h | 2026-09-14 09:00 A | 2026-09-14 10:00 A |  | 100% |  |  | start no earlier than 2026-09-14 08:00 | Макаревич А | 1h | 1h |
| 3271 | 16.4 | демонтаж шурупы с наличиников | 10min | 2026-07-10 09:00 A | 2026-07-10 09:10 A |  | 100% |  |  | start no earlier than 2026-07-10 09:00 | Тимофеев В | 0.17h | 0.17h |
| 3272 | 16.5 | взять на складе ламочку Е27 малого размера и поменять в муж. Туалете и закрыть плафоном | 1h | 2026-06-29 09:00 A | 2026-06-29 10:00 A |  | 100% |  |  | start no earlier than 2026-06-29 09:00 | Тимофеев В | 1h | 1h |
| 3273 | 16.6 | собрать аккуратно стеллаж для Буслаева (стеллаж на складе у Веры, подписан буквами ГД, мечковская) | 3h | 2026-06-13 09:00 A | 2026-06-15 12:00 A |  | 100% |  |  | start no earlier than 2026-06-13 09:00 | Бобренок В | 3h | 3h |
| 3274 | 16.7 | посмотреть что с розеткой у Ширяевой в кабинете | 1h | 2026-06-22 09:00 A | 2026-06-22 10:00 A |  | 100% |  |  | start no earlier than 2026-06-22 09:00 | Тимофеев В | 1h | 1h |
| 3275 | 16.8 | бухгалтерия настройка язычка двери, что бы дверь закрывалась без усилия | 1h | 2026-05-28 09:00 A | 2026-05-28 10:00 A |  | 100% |  |  | start no earlier than 2026-05-28 09:00 | Тимофеев В | 1h | 1h |
| 3276 | 16.9 | **полка мебельная** | 25.12d | 2026-05-18 09:00 A | 2026-06-22 10:00 A |  | 100% |  |  |  |  | 1.5h | 1.5h |
| 3277 | 16.9.1 | заявка крепеж | 15min | 2026-05-18 09:00 A | 2026-05-18 09:15 A |  | 100% |  |  | start no earlier than 2026-05-18 09:00 | Шуранов Ю | 0.25h | 0.25h |
| 3278 | 16.9.2 | контроль доставка | 15min | 2026-05-27 09:15 A | 2026-05-27 09:30 A | 3277FS+7d | 100% |  |  | start no earlier than 2026-05-15 08:00 | Шуранов Ю | 0.25h | 0.25h |
| 3279 | 16.9.3 | крепеж полки у Юли в кабинете (уголки на складе) | 1h | 2026-06-22 09:00 A | 2026-06-22 10:00 A | 3278 | 100% |  |  | start no earlier than 2026-06-22 09:00 | Тимофеев В | 1h | 1h |
| 3280 | 16.10 | монтаж диплом на стену нач хим лаб | 30min | 2026-05-15 09:00 A | 2026-05-15 09:30 A |  | 100% |  |  | start no earlier than 2026-05-15 09:00 | Тимофеев В | 0.5h | 0.5h |
| 3281 | 16.11 | монтаж розеток в серверной продолжить | 2h | 2026-04-23 09:00 A | 2026-04-23 11:00 A |  | 100% |  |  | start no earlier than 2026-04-23 09:00 | Тимофеев В; Бобренок В | 4h | 4h |
| 3282 | 16.12 | ремонт стул в столовая, спинка | 1h | 2026-04-21 09:00 A | 2026-04-21 10:00 A |  | 100% |  |  | start no earlier than 2026-04-21 09:00 | Тимофеев В | 1h | 1h |

| ID | WBS | Task | Type | Duration | Start | Finish | Complete | Total slack | Constraint | Resources | Work | Actual work |
| --- | --- | --- | --- | --- | --- | --- | --- | --- | --- | --- | --- | --- |
| 3283 | 16.13 | **полочка под пк** |  | 0.12d | 2026-06-26 09:00 A | 2026-06-26 10:00 A | 100% |  |  | Тимофеев В | 2h | 2h |
| 3284 | 16.13.1 | замер |  | 1h | 2026-06-26 09:00 A | 2026-06-26 10:00 A | 100% |  | start no earlier than 2026-06-26 09:00 | Тимофеев В | 1h | 1h |
| 3285 | 16.14 | прикрутить декоративную пластину на ручке в столовой |  | 1h | 2026-04-15 09:00 A | 2026-04-15 10:00 A | 100% |  | start no earlier than 2026-04-17 08:00 | Макаревич А | 1h | 1h |
| 3286 | 16.15 | монтаж розеток 4 шт. в серверной |  | 2h | 2026-04-15 09:00 A | 2026-04-15 11:00 A | 100% |  | start no earlier than 2026-04-17 08:00 | Макаревич А | 2h | 2h |
| 3287 | 16.16 | протянуть кабель UTP от кабинета Курдюмовой до переговорки |  | 2h | 2026-04-17 08:00 A | 2026-04-17 11:00 A | 100% |  | start no earlier than 2026-04-17 08:00 | Тимофеев В; Некрасов А | 4h | 4h |
| 3288 | 16.17 | убрать шнурок у Курдюмовой в кабинете |  | 1h | 2026-04-17 08:00 A | 2026-04-17 10:00 A | 100% |  | start no earlier than 2026-04-17 08:00 | Тимофеев В | 1h | 1h |
| 3289 | 16.18 | ремонт кровля над каб Курдюмовой |  | 20d | 2026-06-15 09:00 A | 2026-07-10 18:00 A | 100% |  | start no earlier than 2026-06-15 09:00 | Олег | 160h | 160h |
| 3290 | 16.19 | ремонт крепеж пано каб продаж |  | 1h | 2026-03-24 08:00 A | 2026-03-24 10:00 A | 100% |  | start no earlier than 2026-03-24 08:00 | Тимофеев В | 1h | 1h |
| 3291 | 16.20 | крепить розетку для проектора |  | 2h | 2025-04-09 09:00 A | 2025-04-09 11:00 A | 100% |  | start no earlier than 2025-04-09 09:00 | Тимофеев В | 2h | 2h |
| 3292 | 16.21 | упорядочить кабеля под тв |  | 2h | 2025-04-09 09:00 A | 2025-04-09 11:00 A | 100% |  | start no earlier than 2025-04-09 09:00 | Некрасов А | 2h | 2h |
| 3293 | 16.22 | выбивает автомат у Монича, нет селективности, замена автоматов. Ремонт освещения корридор |  | 4h | 2026-09-29 09:00 | 2026-09-29 13:00 |  | 117.09d | start no earlier than 2026-09-29 09:00 | Дедов В | 4h |  |
| 3294 | 16.23 | монтаж ключница для пожарной двери 2 и 3 этаж |  | 1h | 2026-03-16 09:00 A | 2026-03-16 10:00 A | 100% |  | start no earlier than 2026-03-16 09:00 | Тимофеев В | 1h | 1h |
| 3295 | 16.24 | замена регистр отопления нач снабжения |  | 2h | 2026-10-12 09:00 | 2026-10-12 11:00 |  | 107.34d | start no earlier than 2026-10-12 09:00 | Некрасов А | 2h |  |
| 3296 | 16.25 | сделать заглушки в комнату пищи |  | 30min | 2026-09-01 09:00 | 2026-09-01 09:30 |  | 144.53d | start no earlier than 2026-09-01 09:00 | Домоводов К | 0.5h |  |
| 3297 | 16.26 | **вентиляция в переговорке и к приема пищи** |  | 812d? | 2023-03-10 09:00 A | 2026-04-20 18:00 A | 100% |  |  |  | 17h | 17h |
| 3298 | 16.26.1 | взять на желтом складе (наша половина) вентилятор канальный и проверить работает или нет |  | 1h | 2023-03-10 09:00 A | 2023-03-10 10:00 A | 100% |  |  | Бундин В | 1h | 1h |
| 3299 | 16.26.2 | заявка на КП = 300к |  | 4h | 2026-03-13 09:00 A | 2026-03-13 13:00 A | 100% |  | start no earlier than 2026-03-13 09:00 | Домоводов К | 4h | 4h |
| 3300 | 16.26.3 | монтаж ВК200 + кабель |  | 6h | 2026-04-20 09:00 A | 2026-04-20 16:00 A | 100% |  | start no earlier than 2026-04-20 08:00 | Некрасов А; Труфанов А | 12h | 12h |
| 3301 | 16.26.4 | установка на крыше офиса, приточка в переговорку |  | 1d? | 2026-04-20 09:00 A | 2026-04-20 18:00 A | 100% |  | start no earlier than 2026-04-20 09:00 |  |  |  |
| 3302 | 16.27 | **подсветка продукции в пепреговорке вращающийся лаезерный круг с эмблемой** |  | 0.12d | 2026-03-13 09:00 A | 2026-03-13 10:00 A | 100% |  |  |  | 1h | 1h |
| 3303 | 16.27.1 | найти поставщика / узнать стоимость |  | 1h | 2026-03-13 09:00 A | 2026-03-13 10:00 A | 100% |  | start no earlier than 2026-03-13 09:00 | Зорькин В | 1h | 1h |
| 3304 | 17 | **склад упаковки** |  | 145d? | 2026-04-02 09:00 A | 2026-10-11 11:00 A | 100% |  |  |  | 397.25h | 397.25h |
| 3305 | 17.1 | Замена терморегулятора о котором ты мне говорил на болере склада упаковки, новые должны быть на складе, если нет, снять со старого в контейнере | manual | 2h | 2026-10-11 09:00 A | 2026-10-11 11:00 A | 100% |  | start no earlier than 2026-10-11 09:00 | Бобренок В | 2h | 2h |
| 3306 | 17.2 | Установить новый бойлер, старый на ремонт в слесарку |  | 30min | 2026-10-08 09:00 A | 2026-10-08 09:30 A | 100% |  | start no earlier than 2026-10-08 08:00 | Бобренок В | 0.5h | 0.5h |
| 3307 | 17.3 | Повесить доп светильники 3 шт (спросить у Лехи, где нужны) |  | 3h | 2026-10-02 09:00 A | 2026-10-02 12:00 A | 100% |  | start no earlier than 2026-10-02 09:00 | Труфанов А; Некрасов А | 6h | 6h |
| 3308 | 17.4 | переделать крепление рамы наруж блока - к МК здания, анкера убрать |  | 4h | 2026-10-07 09:00 A | 2026-10-07 13:00 A | 100% |  | start no earlier than 2026-10-07 09:00 | Некрасов А; Труфанов А | 8h | 8h |
| 3309 | 17.5 | установить светильники над столом Веры и перенести светильник над стеллажами |  | 3h | 2026-08-25 09:00 A | 2026-08-25 12:00 A | 100% |  | start no earlier than 2026-08-25 09:00 | Тимофеев В; Некрасов А | 6h | 6h |
| 3310 | 17.6 | втягиваем кабель 5х4 от реф, для подключения кондиционера, место установки щитка покажу- подключаем кондиционер |  | 1d? | 2026-07-31 08:00 A | 2026-07-31 18:00 A | 100% |  | start no earlier than 2026-07-31 08:00 | Труфанов А; Бобренок В | 16h | 16h |
| 3311 | 17.7 | сделать акты списания по результатам инвентаризации |  | 1d? | 2026-06-22 09:00 A | 2026-06-22 18:00 A | 100% |  | start no earlier than 2026-06-22 09:00 | Шуранов Ю | 8h | 8h |

| ID | WBS | Task | Type | Duration | Start | Finish | Predecessors | Complete | Remaining | Total slack | Free slack | Constraint | Resources | Work | Actual work |
| --- | --- | --- | --- | --- | --- | --- | --- | --- | --- | --- | --- | --- | --- | --- | --- |
| 3312 | 17.8 | **установить бойлер** |  | 92.12d | 2026-06-01 09:00 A | 2026-09-28 10:00 A |  | 100% |  |  |  |  |  | 13h | 13h |
| 3313 | 17.8.1 | Замена тэна на бойлере |  | 1h | 2026-09-28 09:00 A | 2026-09-28 10:00 A |  | 100% |  |  |  | start no earlier than 2026-09-28 08:00 | Бобренок В | 1h | 1h |
| 3314 | 17.8.2 | монтаж кабель + розетка с щитка 1 этажа на 2 этаж |  | 4h | 2026-06-03 09:00 A | 2026-06-03 13:00 A |  | 100% |  |  |  | start no earlier than 2026-06-03 09:00 | Некрасов А; Бундин В | 8h | 8h |
| 3315 | 17.8.3 | монтаж бойлер на стену |  | 2h | 2026-06-01 09:00 A | 2026-06-01 11:00 A | 3314 | 100% |  |  |  | start no earlier than 2026-06-01 09:00 | Тимофеев В | 2h | 2h |
| 3316 | 17.8.4 | подключение сантехника |  | 2h | 2026-06-16 09:00 A | 2026-06-16 11:00 A | 3315 | 100% |  |  |  | start no earlier than 2026-06-16 09:00 | Тимофеев В | 2h | 2h |
| 3317 | 17.9 | отремонтировать ручку на входной двери |  | 1h | 2026-05-16 09:00 A | 2026-05-18 10:00 A |  | 100% |  |  |  | start no earlier than 2026-05-16 09:00 |  |  |  |
| 3318 | 17.10 | **анкерить стеллажи** |  | 26d | 2026-05-15 09:00 A | 2026-06-21 13:00 A |  | 100% |  |  |  |  |  | 4.75h | 4.75h |
| 3319 | 17.10.1 | заявка анкеры |  | 30min | 2026-05-15 09:00 A | 2026-05-15 09:30 A |  | 100% |  |  |  | start no earlier than 2026-05-15 09:00 | Шуранов Ю | 0.5h | 0.5h |
| 3320 | 17.10.2 | контроль доставка |  | 15min | 2026-05-27 09:30 A | 2026-05-27 09:45 A | 3319FS+10d | 100% |  |  |  | start no earlier than 2026-05-14 08:00 | Шуранов Ю | 0.25h | 0.25h |
| 3321 | 17.10.3 | монтаж / указать доделать оставшиеся анкера | manual | 4h | 2026-06-21 09:00 A | 2026-06-21 13:00 A | 3320 | 100% |  |  |  | start no earlier than 2026-06-21 09:00 | Бундин В | 4h | 4h |
| 3322 | 17.11 | заменить тросик на воротах |  | 2h | 2026-04-29 09:00 A | 2026-04-29 11:00 A |  | 100% |  |  |  | start no earlier than 2026-04-29 09:00 | Тимофеев В; Бундин В | 4h | 4h |
| 3323 | 17.12 | **замена двери** |  | 40.12d? | 2026-04-02 09:00 A | 2026-05-28 10:00 A |  | 100% |  |  |  |  |  | 329h | 329h |
| 3324 | 17.12.1 | заказ замерщика / получить счет |  | 1h | 2026-04-02 09:00 A | 2026-04-02 10:00 A |  | 100% |  |  |  | start no earlier than 2026-04-02 08:00 | Домоводов К | 1h | 1h |
| 3325 | 17.12.2 | изготовление |  | 40d | 2026-04-02 10:00 A | 2026-05-28 10:00 A | 3324 | 100% |  |  |  | start no earlier than 2026-04-02 08:00 | Подрядчик | 320h | 320h |
| 3326 | 17.12.3 | замена |  | 1d? | 2026-05-19 10:00 A | 2026-05-20 10:00 A | 3325 | 100% |  |  |  | start no earlier than 2026-04-02 08:00 | Подрядчик | 8h | 8h |
| 3327 | 18 | **РЭФ контейнеры** |  | 212.59d? | 2026-05-28 09:00 A | 2027-03-10 14:45 |  | 15% | 181.57d? | 0d |  |  |  | 66.25h | 13.5h |
| 3328 | 18.1 | уложить палеты в проходе к площадке / вырубить кусты с дворником |  | 1h | 2026-05-28 09:00 A | 2026-05-28 10:00 A |  | 100% |  |  |  | start no earlier than 2026-05-28 09:00 | Некрасов А; Бобренок В | 1h | 1h |
| 3329 | 18.2 | монтаж площадка обслуживания внешнего блока. 4 стойки труба 100 + лист 5 |  | 7h | 2026-05-28 09:00 A | 2026-05-28 17:00 A |  | 100% |  |  |  | start no earlier than 2026-05-28 09:00 | Некрасов А; Бобренок В | 12h | 12h |
| 3330 | 18.3 | **ремонт сплит система холодильная камера №1** |  | 27.12d | 2026-08-12 09:00 A | 2026-09-15 10:00 |  | 40% | 16.27d | 131.47d |  |  |  | 1.25h | 0.5h |
| 3331 | 18.3.1 | отправить фото участка |  | 15min | 2026-08-12 09:00 A | 2026-08-12 09:15 A |  | 100% |  |  |  | start no earlier than 2026-08-12 09:00 | Домоводов К | 0.25h | 0.25h |
| 3332 | 18.3.2 | получить счет на ремонт |  | 15min | 2026-09-08 09:00 A | 2026-09-08 09:15 A |  | 100% |  |  |  | start no earlier than 2026-09-08 09:00 | Домоводов К | 0.25h | 0.25h |
| 3333 | 18.3.3 | оплата |  | 15min | 2026-09-09 09:15 | 2026-09-09 09:30 | 3332FS+1d |  |  | 131.47d | 0d | start no earlier than 2026-09-09 09:00 | Домоводов К | 0.25h |  |
| 3334 | 18.3.4 | контроль даты ремонта |  | 15min | 2026-09-14 09:30 | 2026-09-14 09:45 | 3333FS+5d |  |  | 131.47d | 0d | start no earlier than 2026-08-10 08:00 | Зорькин В | 0.25h |  |
| 3335 | 18.3.5 | приемка работ |  | 15min | 2026-09-15 09:45 | 2026-09-15 10:00 | 3334FS+1d |  |  | 131.47d |  | start no earlier than 2026-08-10 08:00 | Зорькин В | 0.25h |  |

| ID | WBS | Task | Type | Duration | Start | Finish | Predecessors | Complete | Remaining | Total slack | Free slack | Constraint | Resources | Work | Actual work |
| --- | --- | --- | --- | --- | --- | --- | --- | --- | --- | --- | --- | --- | --- | --- | --- |
| 3336 | 18.4 | **монтаж холодильной машины №2** |  | 6.59d? | 2027-03-02 09:00 | 2027-03-10 14:45 |  |  |  | 0d |  |  |  | 45h |  |
| 3337 | 18.4.1 | решение какую ставить машину - на весну |  | 30min | 2027-03-02 09:00 | 2027-03-02 09:30 |  |  |  | 0d |  | start no earlier than 2027-03-02 09:00 | Домоводов К | 0.5h |  |
| 3338 | 18.4.2 | заключение договор |  | 3d | 2027-03-02 09:30 | 2027-03-05 09:30 | 3337 |  |  | 0d |  | start no earlier than 2026-08-12 09:00 | Домоводов К | 24h |  |
| 3339 | 18.4.3 | оплата |  | 15min | 2027-03-08 09:30 | 2027-03-08 09:45 | 3338FS+1d |  |  | 0d |  | start no earlier than 2026-08-18 09:00 | Домоводов К | 0.25h |  |
| 3340 | 18.4.4 | контроль доставки , начала работ |  | 1d? | 2027-03-08 09:45 | 2027-03-09 09:45 | 3339 |  |  | 0d |  | start no earlier than 2026-08-10 08:00 | Зорькин В | 8h |  |
| 3341 | 18.4.5 | **монтаж кабель силовой** |  | 0.5d | 2027-03-09 09:45 | 2027-03-09 14:45 | 3340 |  |  | 0d |  |  |  | 4.25h |  |
| 3342 | 18.4.5.1 | проверка поставки |  | 15min | 2027-03-09 09:45 | 2027-03-09 10:00 |  |  |  | 0.47d |  | start no earlier than 2026-08-10 08:00 | Зорькин В | 0.25h |  |
| 3343 | 18.4.5.2 | монтаж |  | 4h | 2027-03-09 09:45 | 2027-03-09 14:45 |  |  |  | 0d |  | start no earlier than 2026-08-10 08:00 | Некрасов А | 4h |  |
| 3344 | 18.4.6 | монтаж |  | 1d? | 2027-03-09 14:45 | 2027-03-10 14:45 | 3341 |  |  | 0d |  | start no earlier than 2026-08-10 08:00 | Подрядчик | 8h |  |
| 3345 | 18.5 | **утепление контейнера №2 под рефрежератор** |  | 0.5d | 2026-08-21 09:00 | 2026-08-21 13:00 |  |  |  | 0d |  |  |  | 7h |  |
| 3346 | 18.5.1 | продолжить выравнивание пены по периметру ножовкой для будующей установки профлиста (задание, если нечем заняться) | manual | 2h | 2026-08-21 09:00 | 2026-08-21 11:00 |  |  |  |  |  | start no earlier than 2026-08-21 09:00 | Некрасов А; Дедов В | 4h |  |
| 3347 | 18.5.2 | установка профлиста |  | 2h | 2026-08-21 11:00 | 2026-08-21 13:00 | 3346 |  |  | 151.09d |  | start no earlier than 2026-08-11 09:00 | Некрасов А; Дедов В | 3h |  |
| 3348 | 19 | **обучение** |  | 608.5d? | 2024-05-14 09:00 A | 2026-09-10 13:00 |  | 42% | 350.5d? | 136.09d |  |  |  | 130h | 58h |
| 3349 | 19.1 | **инструкция управлления дозаций жира** |  | 1.5d | 2026-09-09 09:00 | 2026-09-10 13:00 |  |  |  | 136.09d |  |  |  | 12h |  |
| 3350 | 19.1.1 | подготовка гидравлической и функциональной схем системы |  | 4h | 2026-09-09 09:00 | 2026-09-09 13:00 |  |  |  | 136.09d | 0d | start no earlier than 2026-09-09 09:00 | Зорькин В | 4h |  |
| 3351 | 19.1.2 | описание принципов регулирования |  | 4h | 2026-09-09 14:00 | 2026-09-09 18:00 | 3350 |  |  | 136.09d | 0d | start no earlier than 2026-08-31 09:00 | Зорькин В | 4h |  |
| 3352 | 19.1.3 | пошаговый алогритм действий по операциям замена фильтров, остановка пуск, настройка режимов |  | 4h | 2026-09-10 09:00 | 2026-09-10 13:00 | 3351 |  |  | 136.09d |  | start no earlier than 2026-08-31 09:00 | Зорькин В | 4h |  |
| 3353 | 19.2 | настройка и ремонты упаковщиков |  | 1h | 2026-02-27 09:00 A | 2026-02-27 10:00 A |  | 100% |  |  |  | start no earlier than 2026-02-27 08:00 | Труфанов А; Бундин В | 2h | 2h |
| 3354 | 19.3 | подготовить памятку по чистке ножа для бестром |  | 4h | 2026-09-04 09:00 A | 2026-09-04 13:00 A |  | 100% |  |  |  | start no earlier than 2026-09-04 09:00 | Зорькин В | 4h | 4h |
| 3355 | 19.4 | бестром |  | 2h | 2025-09-02 09:00 A | 2025-09-02 11:00 A |  | 100% |  |  |  | start no earlier than 2025-09-02 09:00 | Труфанов А; Зорькин В | 4h | 4h |
| 3356 | 19.5 | квадропак |  | 2h | 2025-09-02 11:00 A | 2025-09-02 13:00 A | 3355 | 100% |  |  |  | start no earlier than 2025-09-02 09:00 | Труфанов А; Зорькин В | 4h | 4h |
| 3357 | 19.6 | инструкция парогенератор управление по датчику давления |  | 4h | 2025-01-16 09:00 A | 2025-01-16 13:00 A |  | 100% |  |  |  | start no earlier than 2025-01-16 09:00 | Зорькин В | 4h | 4h |
| 3358 | 19.7 | инструкция по работе на теко 1.5 новый |  | 2d | 2025-01-17 09:00 A | 2025-01-20 18:00 A | 3357 | 100% |  |  |  | start no earlier than 2025-01-17 09:00 | Зорькин В | 16h | 16h |
| 3359 | 19.8 | инструкция ремонт запайщика |  | 1d? | 2025-01-17 09:00 A | 2025-01-17 18:00 A |  | 100% |  |  |  | start no earlier than 2025-01-17 09:00 | Зорькин В | 8h | 8h |
| 3360 | 19.9 | Составить список ЗИП - ежедневно вносить приход / расход |  | 1h | 2024-05-14 09:00 | 2024-05-14 10:00 |  |  |  | 744.47d |  | start no earlier than 2024-05-14 09:00 | Шуранов Ю | 1h |  |
| 3361 | 19.10 | составить инструкцию по затягиванию фильеры и соосности муфты |  | 4h | 2024-05-14 09:00 | 2024-05-14 13:00 |  |  |  | 744.09d |  | start no earlier than 2024-05-14 09:00 | Шуранов Ю | 4h |  |
| 3362 | 19.11 | составитьт инструкцию настройка бестром - формирование шва |  | 4h | 2024-05-14 09:00 | 2024-05-14 13:00 |  |  |  | 744.09d |  | start no earlier than 2024-05-14 09:00 | Шуранов Ю | 4h |  |
| 3363 | 19.12 | составитьт инструкцию настройка бестром - заправка ленты зип лок |  | 4h | 2024-05-14 09:00 | 2024-05-14 13:00 |  |  |  | 744.09d |  | start no earlier than 2024-05-14 09:00 | Шуранов Ю | 4h |  |

| ID | WBS | Task | Duration | Start | Finish | Predecessors | Complete | Remaining | Total slack | Free slack | Constraint | Resources | Work | Actual work |
| --- | --- | --- | --- | --- | --- | --- | --- | --- | --- | --- | --- | --- | --- | --- |
| 3364 | 19.13 | **формирование шаблона настройки оборудования** | 4d | 2024-09-06 09:00 A | 2024-09-11 18:00 |  | 67% | 1.33d | 657.59d |  |  |  | 21h | 14h |
| 3365 | 19.13.1 | **БЕСТРОМ** | 2.25d | 2024-09-06 09:00 A | 2024-09-10 11:00 A |  | 100% |  |  |  |  |  | 7h | 7h |
| 3366 | 19.13.1.1 | определить базовые точки относительно которых будет проводится замер в 3х плоскостях - флажки верх, флажки низ, смыкание ножа, центр трубы | 1h | 2024-09-06 09:00 A | 2024-09-06 10:00 A |  | 100% |  |  |  | start no earlier than 2024-09-06 08:00 | Зорькин В | 1h | 1h |
| 3367 | 19.13.1.2 | обвести в PAINT фото методику измерений, присвоить \имя каждому размеру | 2h | 2024-09-06 10:00 A | 2024-09-06 12:00 A | 3366 | 100% |  |  |  | start no earlier than 2024-09-06 09:00 | Зорькин В | 2h | 2h |
| 3368 | 19.13.1.3 | создать карту / таблицу настройки. Размер-дата-фио | 2h | 2024-09-09 09:00 A | 2024-09-09 11:00 A | 3367 | 100% |  |  |  | start no earlier than 2024-09-09 09:00 | Зорькин В | 2h | 2h |
| 3369 | 19.13.1.4 | оформить ведение карты в журнал | 2h | 2024-09-10 09:00 A | 2024-09-10 11:00 A | 3368 | 100% |  |  |  | start no earlier than 2024-09-10 09:00 | Зорькин В | 2h | 2h |
| 3370 | 19.13.2 | **ТЕКО 1.5** | 0.88d | 2024-09-10 11:00 A | 2024-09-11 10:00 A | 3365 | 100% |  |  |  |  |  | 7h | 7h |
| 3371 | 19.13.2.1 | определить базовые точки относительно которых будет проводится замер в 3х плоскостях - флажки верх, флажки низ, смыкание ножа, центр трубы | 1h | 2024-09-10 11:00 A | 2024-09-10 12:00 A |  | 100% |  |  |  | start no earlier than 2024-09-10 09:00 | Зорькин В | 1h | 1h |
| 3372 | 19.13.2.2 | обвести в PAINT фото методику измерений, присвоить \имя каждому размеру | 2h | 2024-09-10 12:00 A | 2024-09-10 15:00 A | 3371 | 100% |  |  |  | start no earlier than 2024-09-06 08:00 | Зорькин В | 2h | 2h |
| 3373 | 19.13.2.3 | создать карту / таблицу настройки. Размер-дата-фио | 2h | 2024-09-10 15:00 A | 2024-09-10 17:00 A | 3372 | 100% |  |  |  | start no earlier than 2024-09-06 08:00 | Зорькин В | 2h | 2h |
| 3374 | 19.13.2.4 | оформить ведение карты в журнал | 2h | 2024-09-10 17:00 A | 2024-09-11 10:00 A | 3373 | 100% |  |  |  | start no earlier than 2024-09-06 08:00 | Зорькин В | 2h | 2h |
| 3375 | 19.13.3 | **ТЕКО 0,4** | 0.88d | 2024-09-11 10:00 | 2024-09-11 18:00 | 3370 |  |  | 657.59d |  |  |  | 7h |  |
| 3376 | 19.13.3.1 | определить базовые точки относительно которых будет проводится замер в 3х плоскостях - флажки верх, флажки низ, смыкание ножа, центр трубы | 1h | 2024-09-11 10:00 | 2024-09-11 11:00 |  |  |  | 657.59d | 0d | start no earlier than 2024-09-06 08:00 | Зорькин В | 1h |  |
| 3377 | 19.13.3.2 | обвести в PAINT фото методику измерений, присвоить \имя каждому размеру | 2h | 2024-09-11 11:00 | 2024-09-11 13:00 | 3376 |  |  | 657.59d | 0d | start no earlier than 2024-09-06 08:00 | Зорькин В | 2h |  |
| 3378 | 19.13.3.3 | создать карту / таблицу настройки. Размер-дата-фио | 2h | 2024-09-11 14:00 | 2024-09-11 16:00 | 3377 |  |  | 657.59d | 0d | start no earlier than 2024-09-06 08:00 | Зорькин В | 2h |  |
| 3379 | 19.13.3.4 | оформить ведение карты в журнал | 2h | 2024-09-11 16:00 | 2024-09-11 18:00 | 3378 |  |  | 657.59d |  | start no earlier than 2024-09-06 08:00 | Зорькин В | 2h |  |
| 3380 | 19.14 | **наполнение базы данных по занятиям, запись видео уроки** | 5.12d | 2024-09-09 09:00 A | 2024-09-16 10:00 |  | 5% | 4.88d | 655.47d |  |  |  | 42h | 2h |
| 3381 | 19.14.1 | заяавка фотокамера, штатив | 1h | 2024-09-09 09:00 A | 2024-09-09 10:00 A |  | 100% |  |  |  | start no earlier than 2024-09-09 09:00 | Зорькин В | 1h | 1h |
| 3382 | 19.14.2 | доставка | 5d | 2024-09-09 10:00 | 2024-09-16 10:00 | 3381 |  |  | 655.47d |  | start no earlier than 2024-09-06 08:00 | Мультан | 40h |  |
| 3383 | 19.14.3 | **Бестром** | 0.12d | 2024-09-16 09:00 A | 2024-09-16 10:00 A |  | 100% |  |  |  |  |  | 1h | 1h |
| 3384 | 19.14.3.1 | урок 1 | 1h | 2024-09-16 09:00 A | 2024-09-16 10:00 A | 3382 | 100% |  |  |  | start no earlier than 2024-09-16 09:00 | Зорькин В | 1h | 1h |
| 3385 | 20 | **администрантивные** | 131.25d | 2026-03-19 09:00 A | 2026-09-15 11:00 |  | 89% | 14.45d | 131.34d |  |  |  | 99.92h | 88.92h |
| 3386 | 20.1 | спсиание материалов | 6h | 2026-09-01 09:00 | 2026-09-01 16:00 |  |  |  | 143.84d |  | start no earlier than 2026-09-01 09:00 | Шуранов Ю | 6h |  |
| 3387 | 20.2 | составить список остатков шнеков в таблицу зип | 2h | 2026-09-01 09:00 | 2026-09-01 11:00 |  |  |  | 144.34d |  | start no earlier than 2026-09-01 09:00 | Шуранов Ю | 2h |  |
| 3388 | 20.3 | подготовить спсток перчаток | 3h | 2026-03-19 09:00 A | 2026-03-19 12:00 A |  | 100% |  |  |  | start no earlier than 2026-03-19 08:00 | Зорькин В | 3h | 3h |
| 3389 | 20.4 | подготовка данных дебеторская задолжность | 3h | 2026-03-19 09:00 A | 2026-03-19 12:00 A |  | 100% |  |  |  | start no earlier than 2026-03-19 08:00 | Зорькин В | 3h | 3h |
| 3390 | 20.5 | договор по ремонту стиральных машинок. Переговоры | 1h | 2026-09-01 09:00 | 2026-09-01 10:00 |  |  |  | 144.47d |  | start no earlier than 2026-09-01 09:00 | Шуранов Ю | 1h |  |
| 3391 | 20.6 | Составить список на год ППР (планово-предупредительные работы) на оборудовании Цеха №1, Цеха №2, Цеха навесок. | 2h | 2026-09-01 09:00 | 2026-09-01 11:00 |  |  |  | 144.34d |  | start no earlier than 2026-09-01 09:00 | Шуранов Ю | 2h |  |

| ID | WBS | Task | Type | Duration | Start | Finish | Predecessors | Complete | Remaining | Total slack | Free slack | Constraint | Resources | Work | Actual work |
| --- | --- | --- | --- | --- | --- | --- | --- | --- | --- | --- | --- | --- | --- | --- | --- |
| 3392 | 20.7 | **Ключи на шкафы** |  | 111.25d | 2026-04-16 09:00 A | 2026-09-15 11:00 A |  | 100% |  |  |  |  |  | 82.75h | 82.75h |
| 3393 | 20.7.1 | Заказать |  | 30min | 2026-04-16 09:00 A | 2026-04-16 09:30 A |  | 100% |  |  |  | start no earlier than 2026-04-16 09:00 | Зорькин В | 0.5h | 0.5h |
| 3394 | 20.7.2 | доставить |  | 10d | 2026-04-16 09:30 A | 2026-04-30 09:30 A | 3393 | 100% |  |  |  | start no earlier than 2026-04-14 09:00 | Карабанов | 80h | 80h |
| 3395 | 20.7.3 | контроль доставка |  | 15min | 2026-05-15 09:00 A | 2026-05-15 09:15 A |  | 100% |  |  |  | start no earlier than 2026-05-15 09:00 | Зорькин В | 0.25h | 0.25h |
| 3396 | 20.7.4 | Повешать на веревочку ключи на все шкафы ВРУ и электрощитки (ключи на складе, веревочки взять на производстве, нитки) |  | 2h | 2026-09-15 09:00 A | 2026-09-15 11:00 A | 3394 | 100% |  |  |  | start no earlier than 2026-09-15 09:00 | Бобренок В | 2h | 2h |
| 3397 | 20.8 | Расписаться в нашем кабинете |  | 10min | 2026-07-28 09:00 A | 2026-07-28 09:10 A |  | 100% |  |  |  | start no earlier than 2026-07-28 09:00 | Макаревич А | 0.17h | 0.17h |
| 3398 | 21 | **ТБ** |  | 928.25d? | 2023-06-06 09:00 A | 2026-12-15 11:00 |  | 39% | 566.31d? | 61.34d |  |  |  | 249.92h | 96.67h |
| 3399 | 21.1 | инструктаж по ТБ оформить |  | 1h | 2026-08-31 09:00 | 2026-08-31 10:00 |  |  |  | 145.47d |  | start no earlier than 2026-08-31 09:00 | Шуранов Ю | 1h |  |
| 3400 | 21.2 | выполнить перелкаду похарных шлангов офис, 1ц |  | 2h | 2026-12-15 09:00 | 2026-12-15 11:00 |  |  |  | 61.34d |  | start no earlier than 2026-12-15 09:00 | Некрасов А; Труфанов А | 4h |  |
| 3401 | 21.3 | маркировка лестниц / оформление журналов |  | 2h | 2026-08-31 09:00 | 2026-08-31 11:00 |  |  |  | 145.34d |  | start no earlier than 2026-08-31 09:00 | Шуранов Ю | 2h |  |
| 3402 | 21.4 | внеплановый инструктаж персонала при аварии на проризводстве |  | 2h | 2025-03-26 09:00 A | 2025-03-26 11:00 A |  | 100% |  |  |  | start no earlier than 2025-03-26 08:00 | Шуранов Ю | 2h | 2h |
| 3403 | 21.5 | заявка на табличики НЕ ВКЛЮЧАТЬ |  | 10min | 2025-03-26 09:00 A | 2025-03-26 09:10 A |  | 100% |  |  |  | start no earlier than 2025-03-26 08:00 | Шуранов Ю | 0.17h | 0.17h |
| 3404 | 21.6 | офорить наряд допуск на монтаж кабеля КПП |  | 30min | 2024-08-05 09:00 A | 2024-08-05 09:30 A |  | 100% |  |  |  | start no earlier than 2024-08-05 09:00 | Шуранов Ю | 0.5h | 0.5h |
| 3405 | 21.7 | составить схемы кабельных линий по производству |  | 5d | 2026-09-01 09:00 | 2026-09-05 18:00 |  |  |  | 139.59d |  | start no earlier than 2026-09-01 09:00 | Шуранов Ю | 40h |  |
| 3406 | 21.8 | организация аттестации электроперсонала |  | 10d | 2024-05-14 09:00 A | 2024-05-27 18:00 A |  | 100% |  |  |  | start no earlier than 2024-05-14 09:00 | Шуранов Ю | 80h | 80h |
| 3407 | 21.9 | расклеить таблички на стремянки |  | 1h | 2023-10-18 09:00 A | 2023-10-18 10:00 A |  | 100% |  |  |  | start no earlier than 2023-10-18 09:00 | Тимофеев В | 1h | 1h |
| 3408 | 21.10 | вести журнал учета такелажных средств, механизмов и приспособлений |  | 1h | 2026-09-01 09:00 | 2026-09-01 10:00 |  |  |  | 144.47d |  | start no earlier than 2026-09-01 09:00 | Шуранов Ю | 1h |  |
| 3409 | 21.11 | комплект сиз для высотных работ |  | 1h | 2023-06-09 09:00 A | 2023-06-09 10:00 A |  | 100% |  |  |  | start no earlier than 2023-06-09 09:00 | Лобанов И | 1h | 1h |
| 3410 | 21.12 | тестер индикторная отвертка |  | 1h | 2024-05-14 09:00 A | 2024-05-14 10:00 A |  | 100% |  |  |  | start no earlier than 2024-05-14 09:00 | Шуранов Ю | 1h | 1h |
| 3411 | 21.13 | заявка на диэл коврик, галоши, перчатки, маска, таблички |  | 1h | 2026-09-01 09:00 | 2026-09-01 10:00 |  |  |  | 144.47d |  | start no earlier than 2026-09-01 09:00 | Шуранов Ю | 1h |  |
| 3412 | 21.14 | заявка спецодежда наладчикам |  | 1d? | 2024-05-14 09:00 A | 2024-05-14 18:00 A |  | 100% |  |  |  | start no earlier than 2024-05-14 09:00 | Шуранов Ю | 8h | 8h |
| 3413 | 21.15 | аттестация охрана труда |  | 10d | 2024-05-14 09:00 | 2024-05-27 18:00 |  |  |  | 734.59d |  | start no earlier than 2024-05-14 09:00 | Шуранов Ю | 80h |  |
| 3414 | 21.16 | **испытание стеллажей** |  | 847d? | 2023-06-06 09:00 A | 2026-09-02 18:00 |  | 11% | 753.75d? | 142.59d |  |  |  | 27.25h | 3h |
| 3415 | 21.16.1 | оплата испытания стеллажей контроль | milestone | 0d | 2023-06-06 09:00 A | 2023-06-06 09:00 A |  | 100% |  |  |  | start no earlier than 2023-06-06 09:00 | Домоводов К |  |  |
| 3416 | 21.16.2 | орг испытание стеллажей |  | 1h | 2023-07-11 09:00 A | 2023-07-11 10:00 A |  | 100% |  |  |  | start no earlier than 2023-07-11 09:00 | Домоводов К | 1h | 1h |
| 3417 | 21.16.3 | график осмотров стеллажей |  | 1d? | 2026-08-31 09:00 | 2026-08-31 18:00 | 3415 |  |  | 142.59d | 0d | start no earlier than 2026-08-31 09:00 | Домоводов К | 8h |  |
| 3418 | 21.16.4 | табличка КП |  | 1d? | 2026-09-01 09:00 | 2026-09-01 18:00 | 3417 |  |  | 142.59d | 0d | start no earlier than 2023-04-27 08:00 | Домоводов К | 8h |  |
| 3419 | 21.16.5 | журнал технического освидетельствования стеллажей |  | 1d? | 2026-09-02 09:00 | 2026-09-02 18:00 | 3418 |  |  | 142.59d |  | start no earlier than 2023-04-27 08:00 | Домоводов К | 8h |  |
| 3420 | 21.16.6 | запрос стоимости ремонта стеллажей в 5ц |  | 2h | 2026-08-18 09:00 A | 2026-08-18 11:00 A |  | 100% |  |  |  | start no earlier than 2026-08-18 09:00 | Шуранов Ю | 2h | 2h |
| 3421 | 21.16.7 | контрольизг |  | 15min | 2026-08-27 09:00 | 2026-08-27 09:15 |  |  |  | 147.56d |  | start no earlier than 2026-08-27 09:00 | Шуранов Ю | 0.25h |  |

| ID | WBS | Task | Type | Duration | Start | Finish | Predecessors | Complete | Remaining | Total slack | Constraint | Resources | Work | Actual work |
| --- | --- | --- | --- | --- | --- | --- | --- | --- | --- | --- | --- | --- | --- | --- |
| 3422 | 22 | **офис** |  | 325.03d | 2025-06-11 09:00 A | 2026-09-08 09:15 |  | 80% | 65.01d | 138.56d |  |  | 2.25h | 2h |
| 3423 | 22.1 | дует подконник офис - передать Олегу задачу |  | 15min | 2026-09-08 09:00 | 2026-09-08 09:15 |  |  |  | 138.56d | start no earlier than 2026-09-08 08:00 | Зорькин В | 0.25h |  |
| 3424 | 22.2 | ремонт светильник моргает , бухгалтерия |  | 1h | 2025-06-11 09:00 A | 2025-06-11 10:00 A |  | 100% |  |  | start no earlier than 2025-06-11 09:00 | Тимофеев В; Дедов В | 2h | 2h |
| 3425 | 23 | **территория** |  | 435d? | 2025-02-20 09:00 A | 2026-10-10 10:00 |  | 72% | 123.61d? | 107.59d |  |  | 370.75h | 262.5h |
| 3426 | 23.1 | Обход по цехам по трассе воды в 5 цех (цех 3, цех 4, 5а, 5) Утром и вечером | manual | 1h | 2026-10-10 09:00 A | 2026-10-10 10:00 A |  | 100% |  |  | start no earlier than 2026-10-10 09:00 | Дедов В | 1h | 1h |
| 3428 | 23.2 | У охраны не работает тепловая пушка, ревизия/ремонт |  | 1h | 2026-10-06 09:00 A | 2026-10-06 10:00 A |  | 100% |  |  | start no earlier than 2026-10-06 09:00 | Бобренок В | 1h | 1h |
| 3429 | 23.3 | Накачать котлы на всех узлах отопления |  | 4h | 2026-09-28 09:00 | 2026-09-28 13:00 |  |  |  | 118.09d | start no earlier than 2026-09-28 08:00 | Бобренок В | 4h |  |
| 3430 | 23.4 | Обход по воде протянутой до 5 цеха, проверка протечек во всех узлах по возможности устранить, если нет возможности, перекрыть в 3-ем цехе |  | 30min | 2026-09-21 09:00 A | 2026-09-21 09:30 A |  | 100% |  |  | start no earlier than 2026-09-21 08:00 | Макаревич А | 0.5h | 0.5h |
| 3431 | 23.5 | отсыпать спуск для парковки между цех 2 и 3 |  | 1d? | 2026-08-26 09:00 A | 2026-08-26 18:00 A |  | 100% |  |  | start no earlier than 2026-08-26 08:00 | Дворник | 8h | 8h |
| 3432 | 23.6 | отсыпать тропинку до КТПН |  | 1d? | 2026-08-27 09:00 | 2026-08-27 18:00 |  |  |  | 146.59d | start no earlier than 2026-08-27 09:00 | Дворник | 8h |  |
| 3433 | 23.7 | **орг водосток КПП - 5ц** |  | 0.03d | 2026-08-31 09:00 A | 2026-08-31 09:15 A |  | 100% |  |  |  |  | 0.25h | 0.25h |
| 3434 | 23.7.1 | получить КП от Вугара |  | 15min | 2026-08-31 09:00 A | 2026-08-31 09:15 A |  | 100% |  |  | start no earlier than 2026-08-31 09:00 | Домоводов К | 0.25h | 0.25h |
| 3435 | 23.8 | **орг водосток между 4 и5А** |  | 0.03d | 2026-08-31 09:00 A | 2026-08-31 09:15 A |  | 100% |  |  |  |  | 0.25h | 0.25h |
| 3436 | 23.8.1 | получить КП от Вугара |  | 15min | 2026-08-31 09:00 A | 2026-08-31 09:15 A |  | 100% |  |  | start no earlier than 2026-08-31 09:00 | Домоводов К | 0.25h | 0.25h |
| 3437 | 23.9 | **Белявский выравнивание стены** |  | 14.16d | 2026-08-13 09:00 A | 2026-09-02 10:15 A |  | 100% |  |  |  |  | 2.58h | 2.58h |
| 3438 | 23.9.1 | оформить план работ, эскиз предложенный ГИП Глуходед |  | 1h | 2026-09-01 09:00 A | 2026-09-01 10:00 A |  | 100% |  |  | start no earlier than 2026-09-01 09:00 | Домоводов К | 1h | 1h |
| 3439 | 23.9.2 | поиск подрядчика на перекладку панели |  | 1h | 2026-09-01 09:00 A | 2026-09-01 10:00 A |  | 100% |  |  | start no earlier than 2026-09-01 09:00 | Домоводов К | 1h | 1h |
| 3440 | 23.9.3 | звонок по решению от варианта ремонта Белявского |  | 20min | 2026-08-13 09:00 A | 2026-08-13 09:20 A |  | 100% |  |  | start no earlier than 2026-08-13 09:00 | Домоводов К | 0.33h | 0.33h |
| 3441 | 23.9.4 | ожидание КП от бригады Белявского | milestone | 0d | 2026-08-20 09:00 A | 2026-08-20 09:00 A | 3440FS+1d | 100% |  |  | start no earlier than 2026-08-20 09:00 | Домоводов К |  |  |
| 3442 | 23.9.5 | согл работы с ГД | milestone | 0d | 2026-09-01 10:00 A | 2026-09-01 10:00 A | 3438, 3441FS+1d | 100% |  |  | start no earlier than 2026-08-31 09:00 | Домоводов К |  |  |
| 3443 | 23.9.6 | заказ кран |  | 15min | 2026-09-02 10:00 A | 2026-09-02 10:15 A | 3442FS+1d | 100% |  |  | start no earlier than 2026-08-13 09:00 | Зорькин В | 0.25h | 0.25h |
| 3444 | 23.10 | замена тусклых или не рабочих ламп на мухоловках 1,2,5 цех.Схемы расположения предоставлю (количество ламп, которые поменял указать в отчете) |  | 4h | 2026-08-06 09:00 A | 2026-08-06 13:00 A |  | 100% |  |  | start no earlier than 2026-08-06 08:00 | Труфанов А | 4h | 4h |
| 3445 | 23.11 | **КПП ревизия прожектор, не горит** |  | 1.12d | 2026-07-08 09:00 A | 2026-07-09 10:00 A |  | 100% |  |  |  |  | 1.33h | 1.33h |
| 3446 | 23.11.1 | Сфотать шильдик от прожектора кпп |  | 20min | 2026-07-08 09:00 A | 2026-07-08 09:20 A |  | 100% |  |  | start no earlier than 2026-07-08 08:00 | Бундин В | 0.33h | 0.33h |
| 3447 | 23.11.2 | монтаж прожетора |  | 1h | 2026-07-09 09:00 A | 2026-07-09 10:00 A |  | 100% |  |  | start no earlier than 2026-07-09 09:00 | Бобренок В | 1h | 1h |

| ID | WBS | Task | Type | Duration | Start | Finish | Predecessors | Complete | Remaining | Total slack | Free slack | Constraint | Resources | Work | Actual work |
| --- | --- | --- | --- | --- | --- | --- | --- | --- | --- | --- | --- | --- | --- | --- | --- |
| 3448 | 23.12 | **установить люки колодцев возле на территории** |  | 1d? | 2026-09-25 09:00 A | 2026-09-25 18:00 |  | 50% | 0.5d? |  |  |  |  | 12h | 4h |
| 3449 | 23.12.1 | разложить по местам |  | 4h | 2026-09-25 09:00 A | 2026-09-25 13:00 A |  | 100% |  |  |  | start no earlier than 2026-09-25 08:00 | Бобренок В | 4h | 4h |
| 3450 | 23.12.2 | врезать в асфальт |  | 4h | 2026-10-06 09:00 | 2026-10-06 13:00 |  |  |  | 111.09d |  | start no earlier than 2026-10-06 09:00 | Тимофеев В; Олег | 8h |  |
| 3451 | 23.13 | **установить пост для зарядки эл мобиль директору** |  | 1d? | 2026-06-03 09:00 | 2026-06-03 18:00 |  |  |  | 207.59d |  |  |  |  |  |
| 3452 | 23.13.1 | заявка на щиток / кабель |  | 1d? | 2026-06-03 09:00 | 2026-06-03 18:00 |  |  |  | 207.59d |  | start no earlier than 2026-06-03 08:00 |  |  |  |
| 3453 | 23.14 | уборка строительный мусор задний двор 5А склад |  | 2h | 2026-05-27 09:00 | 2026-05-27 11:00 |  |  |  | 213.34d |  | start no earlier than 2026-05-27 09:00 | оператор2 | 2h |  |
| 3454 | 23.15 | поправить бетонную крышку колодца. Дренаж вдоль забора колодец №2 |  | 2h | 2026-05-27 09:00 | 2026-05-27 11:00 |  |  |  | 213.34d |  | start no earlier than 2026-05-27 09:00 | оператор2 | 2h |  |
| 3455 | 23.16 | расчистить камни, для доступа к люку. Дренаж вдоль забора колодец №2 |  | 2h | 2026-05-27 09:00 | 2026-05-27 11:00 |  |  |  | 213.34d |  | start no earlier than 2026-05-27 09:00 | оператор2 | 2h |  |
| 3456 | 23.17 | проверка всех стемянок по цехам, приклеить бумажки о проверке |  | 1d? | 2026-06-26 09:00 A | 2026-06-26 18:00 A |  | 100% |  |  |  | start no earlier than 2026-06-26 09:00 | Шуранов Ю | 8h | 8h |
| 3457 | 23.18 | в 1,2,3 цехе ближе к утру выключить все оборудование, кроме камер охраны КПП- подготовка к фогации |  | 2h | 2026-04-30 08:00 A | 2026-04-30 11:00 A |  | 100% |  |  |  | start no earlier than 2026-04-30 08:00 | Дедов В | 2h | 2h |
| 3458 | 23.19 | заизолировать гофру в местах разрыва (гофра с кабелем для рефрежераторов возле нашего склада) | manual | 1h | 2026-04-26 09:00 A | 2026-04-26 10:00 A |  | 100% |  |  |  | start no earlier than 2026-04-26 09:00 | Макаревич А | 1h | 1h |
| 3459 | 23.20 | ремонт стен сосед Белявский |  | 5d | 2026-04-16 09:00 | 2026-04-22 18:00 |  |  |  | 237.59d |  | start no earlier than 2026-04-16 08:00 | Олег; Некрасов А | 80h |  |
| 3460 | 23.21 | **выезд ул.Писемского** |  | 15.03d | 2026-08-11 09:00 A | 2026-09-01 09:15 |  | 89% | 1.67d | 144.56d |  |  |  | 2.25h | 2h |
| 3461 | 23.21.1 | **топосъемка** |  | 15.03d | 2026-08-11 09:00 A | 2026-09-01 09:15 |  | 67% | 5.01d | 144.56d |  |  |  | 0.75h | 0.5h |
| 3462 | 23.21.1.1 | получить старт от ГД | milestone | 0d | 2026-08-31 09:00 | 2026-08-31 09:00 |  |  |  | 144.56d | 0d | start no earlier than 2026-08-31 09:00 | Домоводов К |  |  |
| 3463 | 23.21.1.2 | поск исполнителя / запрос счет |  | 30min | 2026-08-11 09:00 A | 2026-08-11 09:30 A |  | 100% |  |  |  | start no earlier than 2026-08-11 09:00 | Домоводов К | 0.5h | 0.5h |
| 3464 | 23.21.1.3 | контроль оплата |  | 15min | 2026-09-01 09:00 | 2026-09-01 09:15 | 3462FS+1d, 3463FS+5d |  |  | 144.56d | 0d | start no earlier than 2026-08-24 09:00 | Домоводов К | 0.25h |  |
| 3465 | 23.21.2 | **геология** |  | 15.03d | 2026-08-11 09:00 A | 2026-09-01 09:15 |  | 99% | 0d | 144.56d |  |  |  | 0.5h | 0.5h |
| 3466 | 23.21.2.1 | поск исполнителя / запрос счет |  | 30min | 2026-08-11 09:00 A | 2026-08-11 09:30 A |  | 100% |  |  |  | start no earlier than 2026-08-11 09:00 | Домоводов К | 0.5h | 0.5h |
| 3467 | 23.21.2.2 | контроль оплата | milestone | 0min | 2026-09-01 09:15 | 2026-09-01 09:15 | 3464, 3466FS+5d |  |  | 144.56d | 0d | start no earlier than 2026-08-10 08:00 | Домоводов К |  |  |
| 3468 | 23.21.3 | **проект дорога** |  | 15.03d | 2026-08-11 09:00 A | 2026-09-01 09:15 |  | 99% | 0d | 144.56d |  |  |  | 0.5h | 0.5h |
| 3469 | 23.21.3.1 | поск исполнителя / запрос счет |  | 30min | 2026-08-11 09:00 A | 2026-08-11 09:30 A |  | 100% |  |  |  | start no earlier than 2026-08-11 09:00 | Домоводов К | 0.5h | 0.5h |
| 3470 | 23.21.3.2 | получить счет / договор | milestone | 0d | 2026-08-13 09:00 A | 2026-08-13 09:00 A |  | 100% |  |  |  | start no earlier than 2026-08-13 09:00 | Домоводов К |  |  |
| 3471 | 23.21.3.3 | контроль оплата | milestone | 0min | 2026-09-01 09:15 | 2026-09-01 09:15 | 3467, 3469FS+5d |  |  | 144.56d | 0d | start no earlier than 2026-08-10 08:00 | Домоводов К |  |  |

| ID | WBS | Task | Type | Duration | Start | Finish | Predecessors | Complete | Remaining | Total slack | Constraint | Resources | Work | Actual work |
| --- | --- | --- | --- | --- | --- | --- | --- | --- | --- | --- | --- | --- | --- | --- |
| 3472 | 23.21.4 | **проект бетонная подушка** |  | 15.03d | 2026-08-11 09:00 A | 2026-09-01 09:15 |  | 99% | 0d | 144.56d |  |  | 0.5h | 0.5h |
| 3473 | 23.21.4.1 | поск исполнителя / запрос счет |  | 30min | 2026-08-11 09:00 A | 2026-08-11 09:30 A |  | 100% |  |  | start no earlier than 2026-08-11 09:00 | Домоводов К | 0.5h | 0.5h |
| 3474 | 23.21.4.2 | получить счет / договор | milestone | 0d | 2026-08-13 09:00 A | 2026-08-13 09:00 A |  | 100% |  |  | start no earlier than 2026-08-13 09:00 | Домоводов К |  |  |
| 3475 | 23.21.4.3 | контроль оплата | milestone | 0min | 2026-09-01 09:15 | 2026-09-01 09:15 | 3471, 3473FS+5d |  |  | 144.56d | start no earlier than 2026-08-10 08:00 | Домоводов К |  |  |
| 3476 | 23.22 | Сборка рамы и навеса для мусорки 2 ц возле 1 КПП |  | 4h | 2026-09-04 09:00 A | 2026-09-04 13:00 A |  | 100% |  |  | start no earlier than 2026-09-04 09:00 | Некрасов А; Макаревич А | 8h | 8h |
| 3477 | 23.23 | Покраска рамы новой мусорки, стоит у ворот навесок 2 цех |  | 1h | 2026-09-04 09:00 A | 2026-09-04 10:00 A |  | 100% |  |  | start no earlier than 2026-09-04 09:00 | Некрасов А; Макаревич А | 2h | 2h |
| 3478 | 23.24 | Монтаж дверей на мусорку собираем раму (петли привезем после обеда) |  | 3h | 2026-09-04 09:00 A | 2026-09-04 12:00 A |  | 100% |  |  | start no earlier than 2026-09-04 09:00 | Некрасов А; Макаревич А | 6h | 6h |
| 3479 | 23.25 | **асфальтирование дороги до 5ц** |  | 11.25d? | 2026-08-11 09:00 A | 2026-08-26 11:00 A |  | 100% |  |  |  |  | 36.5h | 36.5h |
| 3480 | 23.25.1 | составить схему площади дороги / 3 корректировки |  | 2h | 2026-08-11 09:00 A | 2026-08-11 11:00 A |  | 100% |  |  | start no earlier than 2026-08-11 09:00 | Зорькин В | 2h | 2h |
| 3481 | 23.25.2 | получить цену исполнителя |  | 1d | 2026-08-11 11:00 A | 2026-08-12 11:00 A | 3480 | 100% |  |  | start no earlier than 2026-08-10 08:00 | Домоводов К | 8h | 8h |
| 3482 | 23.25.3 | согл с ГД |  | 1d | 2026-08-11 09:00 A | 2026-08-11 18:00 A | 3481 | 100% |  |  | start no earlier than 2026-08-10 08:00 | Домоводов К | 8h | 8h |
| 3483 | 23.25.4 | получить счет от Вугара | milestone | 0h | 2026-08-12 09:00 A | 2026-08-12 09:00 A |  | 100% |  |  | start no earlier than 2026-08-12 09:00 | Домоводов К |  |  |
| 3484 | 23.25.5 | будет ли Вугар оформлятся как подрядчик? Соглаосвать с ГД |  | 15min | 2026-08-17 09:00 A | 2026-08-17 09:15 A |  | 100% |  |  | start no earlier than 2026-08-17 09:00 | Домоводов К | 0.25h | 0.25h |
| 3485 | 23.25.6 | корректировка чертеж объем работ |  | 1d? | 2026-08-20 09:00 A | 2026-08-20 18:00 A |  | 100% |  |  | start no earlier than 2026-08-20 09:00 | Домоводов К | 8h | 8h |
| 3486 | 23.25.7 | подготовка смета |  | 2h | 2026-08-26 09:00 A | 2026-08-26 11:00 A |  | 100% |  |  | start no earlier than 2026-08-26 09:00 | Домоводов К | 2h | 2h |
| 3487 | 23.25.8 | контроль сроков завоза техники |  | 15min | 2026-08-14 09:00 A | 2026-08-14 09:15 A |  | 100% |  |  | start no earlier than 2026-08-14 09:00 | Домоводов К | 0.25h | 0.25h |
| 3488 | 23.25.9 | монтаж |  | 1d? | 2026-08-19 09:00 A | 2026-08-19 18:00 A | 3482, 3483 | 100% |  |  | start no earlier than 2026-08-19 09:00 | Подрядчик | 8h | 8h |
| 3489 | 23.26 | взять роутер у нас в кабинете - подключить к UTP кабелю |  | 1d? | 2026-04-13 09:00 A | 2026-04-13 18:00 A |  | 100% |  |  | start no earlier than 2026-04-13 09:00 |  |  |  |
| 3490 | 23.27 | в цехе 2, 3, 4 и 5 убавить температуры на нагревателях и газ. Котлах |  | 4h | 2026-03-31 09:00 A | 2026-03-31 13:00 A |  | 100% |  |  | start no earlier than 2026-03-31 08:00 | Бундин В | 4h | 4h |
| 3491 | 23.28 | перенос камеры на 10см ниже КПП |  | 3h | 2026-03-21 09:00 A | 2026-03-23 12:00 A |  | 100% |  |  | start no earlier than 2026-03-21 09:00 | Бундин В | 3h | 3h |
| 3492 | 23.29 | запуск контейнер рэф |  | 2h | 2026-03-20 09:00 A | 2026-03-20 11:00 A |  | 100% |  |  | start no earlier than 2026-03-20 09:00 | Шуранов Ю | 2h | 2h |
| 3493 | 23.30 | **выровнить контейнеры, перекос двери** |  | 3.25d | 2026-03-19 09:00 A | 2026-03-24 11:00 A |  | 100% |  |  |  |  | 2.5h | 2.5h |
| 3494 | 23.30.1 | заявка кран |  | 30min | 2026-03-19 09:00 A | 2026-03-19 09:30 A |  | 100% |  |  | start no earlier than 2026-03-19 09:00 | Шуранов Ю | 0.5h | 0.5h |
| 3495 | 23.30.2 | работа по выравниванию |  | 2h | 2026-03-24 09:00 A | 2026-03-24 11:00 A | 3494FS+1d | 100% |  |  | start no earlier than 2026-03-24 09:00 | Некрасов А | 2h | 2h |

| ID | WBS | Task | Duration | Start | Finish | Predecessors | Complete | Remaining | Total slack | Free slack | Constraint | Resources | Work | Actual work |
| --- | --- | --- | --- | --- | --- | --- | --- | --- | --- | --- | --- | --- | --- | --- |
| 3496 | 23.31 | **двойной шлагбаум замрзает** | 5.01d | 2025-02-20 09:00 A | 2025-02-27 09:05 A |  | 100% |  |  |  |  |  | 1.08h | 1.08h |
| 3497 | 23.31.1 | вызов сервисного инженера контроль даты | 5min | 2025-02-27 09:00 A | 2025-02-27 09:05 A |  | 100% |  |  |  | start no earlier than 2025-02-27 09:00 | Шуранов Ю | 0.08h | 0.08h |
| 3498 | 23.31.2 | осмотр с сервисн инжзенером | 1h | 2025-02-20 09:00 A | 2025-02-20 10:00 A |  | 100% |  |  |  | start no earlier than 2025-02-20 09:00 | Шуранов Ю | 1h | 1h |
| 3499 | 23.32 | **Люки на колодцы** | 13.31d | 2026-05-26 09:00 A | 2026-06-12 11:30 |  | 98% | 0.32d | 201.28d |  |  |  | 163.5h | 161.5h |
| 3500 | 23.32.1 | Консультация с Олегом | 30min | 2026-05-26 09:00 A | 2026-05-26 09:30 A |  | 100% |  |  |  | start no earlier than 2026-05-26 08:00 | Зорькин В; Олег | 1h | 1h |
| 3501 | 23.32.2 | Заявка на закуп | 30min | 2026-05-29 09:00 A | 2026-05-29 09:30 A | 3500 | 100% |  |  |  | start no earlier than 2026-05-29 09:00 | Зорькин В | 0.5h | 0.5h |
| 3502 | 23.32.3 | Доставка, контроль | 10d | 2026-05-29 09:30 A | 2026-06-12 09:30 A | 3501 | 100% |  |  |  | start no earlier than 2026-05-26 09:00 | Зорькин В; Шуранов Ю | 160h | 160h |
| 3503 | 23.32.4 | установка люков на колодцы | 2h | 2026-06-12 09:30 | 2026-06-12 11:30 | 3502 |  |  | 201.28d |  | start no earlier than 2026-06-04 09:00 | Олег | 2h |  |
| 3504 | 24 | **ежедневные обходы и осмотры** | 473.5d | 2024-05-14 09:00 A | 2026-03-06 13:00 |  | 16% | 398.74d | 271.09d |  |  |  | 25.33h | 4h |
| 3505 | 24.1 | цех 1 | 20min | 2024-05-14 09:00 | 2024-05-14 09:20 |  |  |  | 742.01d | 0d | start no earlier than 2024-05-14 09:00 | Шуранов Ю | 0.33h |  |
| 3506 | 24.2 | цех 2 | 20min | 2024-05-14 09:00 | 2024-05-14 09:20 |  |  |  | 744.55d |  | start no earlier than 2024-05-14 09:00 | Шуранов Ю | 0.33h |  |
| 3507 | 24.3 | цех навесок | 20min | 2024-05-14 09:20 | 2024-05-14 09:40 | 3505 |  |  | 742.01d | 0d | start no earlier than 2024-05-14 09:00 | Шуранов Ю | 0.33h |  |
| 3508 | 24.4 | техника | 20h | 2024-05-14 09:40 | 2024-05-16 14:40 | 3507 |  |  | 742.01d |  | start no earlier than 2024-05-14 09:00 | Шуранов Ю | 20h |  |
| 3509 | 24.5 | вести журнал осмотров стеллажей | 20min | 2024-05-14 09:00 | 2024-05-14 09:20 |  |  |  | 744.55d |  | start no earlier than 2024-05-14 09:00 | Шуранов Ю | 0.33h |  |
| 3510 | 24.6 | оперативная работа | 4h | 2026-03-06 09:00 A | 2026-03-06 13:00 A |  | 100% |  |  |  | start no earlier than 2026-03-06 09:00 | Бобренок В | 4h | 4h |
| 3511 | 25 | **замена шнеков** | 882.5d? | 2023-03-29 09:00 A | 2026-08-14 13:00 |  | 2% | 864.01d? | 156.09d |  |  |  | 53h | 34h |
| 3512 | 25.1 | посчитать количество шнеков и гильз для цех1 и цех 2 | 2h | 2026-04-03 09:00 | 2026-04-03 11:00 |  |  |  | 251.34d |  | start no earlier than 2026-04-03 09:00 | Шуранов Ю | 2h |  |
| 3513 | 25.2 | вести список и учет замены шнеков | 1h | 2024-05-14 09:00 | 2024-05-14 10:00 |  |  |  | 744.47d |  | start no earlier than 2024-05-14 09:00 | Шуранов Ю | 1h |  |
| 3514 | 25.3 | линия 3 - было 3/приход спец12-3/спец14-9 | 1d? | 2024-04-15 09:00 A | 2024-04-15 18:00 A |  | 100% |  |  |  | start no earlier than 2024-04-15 08:00 |  |  |  |
| 3515 | 25.4 | линия3 | 42d | 2023-10-16 09:00 | 2023-12-12 18:00 |  |  |  | 853.59d |  | start no earlier than 2023-10-16 09:00 |  |  |  |
| 3516 | 25.5 | линия3 | 30d | 2023-12-12 09:00 | 2024-01-22 18:00 |  |  |  | 824.59d |  | start no earlier than 2023-12-12 09:00 |  |  |  |
| 3517 | 25.6 | линия3 | 45d | 2024-01-24 09:00 | 2024-03-26 18:00 |  |  |  | 778.59d |  | start no earlier than 2024-01-24 09:00 |  |  |  |
| 3518 | 25.7 | линия3 | 11d | 2023-03-29 09:00 | 2023-04-12 18:00 |  |  |  | 1027.59d |  | start no earlier than 2023-03-29 09:00 |  |  |  |
| 3519 | 25.8 | линия3 | 1d? | 2023-04-12 09:00 | 2023-04-12 18:00 |  |  |  | 1027.59d |  | start no earlier than 2023-04-12 09:00 |  |  |  |
| 3520 | 25.9 | линия 3 | 1.38d? | 2024-05-08 08:00 A | 2024-05-13 11:00 A |  | 100% |  |  |  | start no earlier than 2024-05-08 08:00 | Макаревич А; Некрасов А; Черепанов И | 26h | 26h |
| 3521 | 25.10 | диния 3 | 1d? | 2024-05-20 09:00 | 2024-05-20 18:00 |  |  |  | 739.59d |  | start no earlier than 2024-05-20 09:00 | Некрасов А; Тимофеев В | 16h |  |
| 3652 | 25.11 | замена линия 3, была струшка | 4h | 2026-08-14 09:00 A | 2026-08-14 13:00 A |  | 100% |  |  |  | start no earlier than 2026-08-14 09:00 | Некрасов А; Бундин В | 8h | 8h |
